| baselineDuration | percentDone | endDate | effort | schedulingMode | effortUnit | duration | baselineStartDate | name | id | durationUnit | baselineEndDate | startDate | manuallyScheduled | calendar | rollup | milestone | leaf | constraintType | constraintDate | baselines |
| --- | --- | --- | --- | --- | --- | --- | --- | --- | --- | --- | --- | --- | --- | --- | --- | --- | --- | --- | --- | --- |
| 437.0d | 2 | 2022-06-01T18:00:00 | 0 | Normal | h | 437 | 2020-03-16T08:00:00 | PROGRAMA CONTRACTUAL DEPARTAMENTAL REV 00 | 0 | d | 2022-06-01T18:00:00 | 2020-03-16T08:00:00 | True |  |  |  |  |  |  |  |
| 437.0d | 0 | 2022-06-01T18:00:00 | 0 | Normal | h | 437 | 2020-03-16T08:00:00 | · HITOS | 18544 | d | 2022-06-01T18:00:00 | 2020-03-16T08:00:00 | True | 18 | True |  |  |  |  |  |
| 437.0d | 0 | 2022-06-01T18:00:00 | 0 | Normal | h | 437 | 2020-03-16T08:00:00 | · · HITOS CONTRACTUALES | 18545 | d | 2022-06-01T18:00:00 | 2020-03-16T08:00:00 | True | 18 | True |  |  |  |  |  |
| 0.0d | 100 | 2020-03-16T08:00:00 | 0 | Normal | h | 0 | 2020-03-16T08:00:00 | · · · INICIO CONTRATO | 18546 | d | 2020-03-16T08:00:00 | 2020-03-16T08:00:00 | True | 18 | True | True |  |  |  |  |
| 0.0d | 100 | 2020-03-16T08:00:00 | 0 | FixedDuration | h | 0 | 2020-03-16T08:00:00 | · · · · FIRMA DEL CONTRATO | 20376 | d | 2020-03-16T08:00:00 | 2020-03-16T08:00:00 | True | 18 |  | True | True | startnoearlierthan | 2020-03-16T08:00:00 |  |
| 0.0d | 100 | 2020-03-16T08:00:00 | 0 | FixedDuration | h | 0 | 2020-03-16T08:00:00 | · · · · ENTREGA DEL TERRENO CON OBSERVACIONES DE OBRAS PRELIMINARES RESUELTAS | 20377 | d | 2020-03-16T08:00:00 | 2020-03-16T08:00:00 | True | 18 |  | True | True | startnoearlierthan | 2020-03-16T08:00:00 |  |
| 0.0d | 100 | 2020-03-16T08:00:00 | 0 | FixedDuration | h | 0 | 2020-03-16T08:00:00 | · · · · ENTREGA PLANOS APC | 20378 | d | 2020-03-16T08:00:00 | 2020-03-16T08:00:00 | True | 18 |  | True | True | startnoearlierthan | 2020-03-16T08:00:00 |  |
| 0.0d | 100 | 2020-03-16T08:00:00 | 0 | FixedDuration | h | 0 | 2020-03-16T08:00:00 | · · · · PERMISO EDIFICACION | 20379 | d | 2020-03-16T08:00:00 | 2020-03-16T08:00:00 | True | 18 |  | True | True | startnoearlierthan | 2020-03-16T08:00:00 |  |
| 0.0d | 100 | 2020-03-16T08:00:00 | 0 | FixedDuration | h | 0 | 2020-03-16T08:00:00 | · · · · OBTENCION PERMISO DE GRUA | 20380 | d | 2020-03-16T08:00:00 | 2020-03-16T08:00:00 | True | 18 |  | True | True | startnoearlierthan | 2020-03-16T08:00:00 |  |
| 0.0d | 100 | 2020-03-16T08:00:00 | 0 | FixedDuration | h | 0 | 2020-03-16T08:00:00 | · · · · OBTENCION PERMISOS NECESARIOS PARA INICIO DE CONSTRUCCION | 20381 | d | 2020-03-16T08:00:00 | 2020-03-16T08:00:00 | True | 18 |  | True | True |  |  |  |
| 0.0d | 100 | 2020-03-16T08:00:00 | 0 | FixedDuration | h | 0 | 2020-03-16T08:00:00 | · · · · CERTIFICACI�N DE MECANICO DE SUELOS E ITO DE OBRAS PRELIMINARES CONFORMES | 20382 | d | 2020-03-16T08:00:00 | 2020-03-16T08:00:00 | True | 18 |  | True | True | startnoearlierthan | 2020-03-16T08:00:00 |  |
| 0.0d | 0 | 2021-10-27T18:00:00 | 0 | FixedDuration | h | 0 | 2021-10-27T18:00:00 | · · · HITO 1: TERMINO OG (LOSA CUBIERTA+80% PLACA NIVEL 1) | 20383 | d | 2021-10-27T18:00:00 | 2021-10-27T18:00:00 | True | 18 |  | True | True |  |  |  |
| 0.0d | 0 | 2021-12-03T18:00:00 | 0 | FixedDuration | h | 0 | 2021-12-03T18:00:00 | · · · HITO 2: ENTREGA DEPARTAMENTO PILOTO (PISO 2) | 20389 | d | 2021-12-03T18:00:00 | 2021-12-03T18:00:00 | True | 18 |  | True | True |  |  |  |
| 0.0d | 0 | 2022-02-09T08:00:00 | 0 | FixedDuration | h | 0 | 2022-02-09T08:00:00 | · · · HITO 3: INICIO DE PRE-RECEPCIONES | 20390 | d | 2022-02-09T08:00:00 | 2022-02-09T08:00:00 | True | 18 |  | True | True |  |  |  |
| 0.0d | 0 | 2022-06-01T18:00:00 | 0 | FixedDuration | h | 0 | 2022-06-01T18:00:00 | · · · FIN CONTRATO | 18547 | d | 2022-06-01T18:00:00 | 2022-06-01T18:00:00 | True | 18 |  | True | True |  |  |  |
| 417.0d | 0 | 2022-06-01T18:00:00 | 0 | Normal | h | 417 | 2020-04-13T18:00:00 | · · HITOS MANDANTE | 18548 | d | 2022-06-01T18:00:00 | 2020-04-13T18:00:00 | True | 18 | True |  |  |  |  |  |
| 0.0d | 100 | 2020-04-13T18:00:00 | 0 | FixedDuration | h | 0 | 2020-04-13T18:00:00 | · · · ENTREGA PROYECTO VPF (SE�ALETICA-LUMINARIAS) | 20546 | d | 2020-04-13T18:00:00 | 2020-04-13T18:00:00 | True | 18 |  | True | True |  |  |  |
| 0.0d | 0 | 2020-12-30T18:00:00 | 0 | FixedDuration | h | 0 | 2020-12-30T18:00:00 | · · · CONTRATO FIRMADO ENEL | 18551 | d | 2020-12-30T18:00:00 | 2020-12-30T18:00:00 | True | 18 |  | True | True |  |  |  |
| 0.0d | 0 | 2022-03-08T18:00:00 | 0 | FixedDuration | h | 0 | 2022-03-08T18:00:00 | · · · EMPALME ENEL EJECUTADO | 21277 | d | 2022-03-08T18:00:00 | 2022-03-08T18:00:00 | True | 18 |  | True | True |  |  |  |
| 0.0d | 0 | 2020-12-30T18:00:00 | 0 | FixedDuration | h | 0 | 2020-12-30T18:00:00 | · · · CONTRATO FIRMADO AGUAS ANDINAS | 18552 | d | 2020-12-30T18:00:00 | 2020-12-30T18:00:00 | True | 18 |  | True | True | finishnoearlierthan | 2020-09-14T18:00:00 |  |
| 0.0d | 0 | 2021-01-29T18:00:00 | 0 | FixedDuration | h | 0 | 2021-01-29T18:00:00 | · · · ENTREGA PROYECTO SERVIU APROBADO | 18549 | d | 2021-01-29T18:00:00 | 2021-01-29T18:00:00 | True | 18 |  | True | True |  |  |  |
| 0.0d | 0 | 2021-01-29T18:00:00 | 0 | FixedDuration | h | 0 | 2021-01-29T18:00:00 | · · · ENTREGA PROYECTO PISCINA APROBADO | 18550 | d | 2021-01-29T18:00:00 | 2021-01-29T18:00:00 | True | 18 |  | True | True |  |  |  |
| 0.0d | 0 | 2021-01-29T18:00:00 | 0 | FixedDuration | h | 0 | 2021-01-29T18:00:00 | · · · ENTREGA PROYECTO BASURA APROBADO | 20547 | d | 2021-01-29T18:00:00 | 2021-01-29T18:00:00 | True | 18 |  | True | True |  |  |  |
| 0.0d | 0 | 2022-06-01T18:00:00 | 0 | FixedDuration | h | 0 | 2022-06-01T18:00:00 | · · · CERTIFICADO SERVIU | 20545 | d | 2022-06-01T18:00:00 | 2022-06-01T18:00:00 | True | 18 |  | True | True |  |  |  |
| 317.0d | 0 | 2021-12-10T18:00:00 | 0 | Normal | h | 317 | 2020-03-16T08:00:00 | · · HITOS EIIC | 18553 | d | 2021-12-10T18:00:00 | 2020-03-16T08:00:00 | True | 18 | True |  |  |  |  |  |
| 0.0d | 100 | 2020-03-27T18:00:00 | 0 | FixedDuration | h | 0 | 2020-03-27T18:00:00 | · · · ENTREGA LISTADO DE PROFESIONALES (10 DIAS HAB) | 20548 | d | 2020-03-27T18:00:00 | 2020-03-27T18:00:00 | True | 18 |  | True | True |  |  |  |
| 0.0d | 100 | 2020-03-16T08:00:00 | 0 | FixedDuration | h | 0 | 2020-03-16T08:00:00 | · · · ENTREGA INFORME DE OBSERVACIONES OBRAS PREVIAS | 20388 | d | 2020-03-16T08:00:00 | 2020-03-16T08:00:00 | True | 18 |  | True | True |  |  |  |
| 0.0d | 100 | 2020-04-27T18:00:00 | 0 | FixedDuration | h | 0 | 2020-04-27T18:00:00 | · · · ENTREGA PLAN DE CALIDAD (30 DIAS HAB) | 20550 | d | 2020-04-27T18:00:00 | 2020-04-27T18:00:00 | True | 18 |  | True | True |  |  |  |
| 0.0d | 100 | 2020-04-27T18:00:00 | 0 | FixedDuration | h | 0 | 2020-04-27T18:00:00 | · · · ENTREGA CONTROLES DE CALIDAD OG-INST-TERM (30 DIAS HAB) | 20549 | d | 2020-04-27T18:00:00 | 2020-04-27T18:00:00 | True | 18 |  | True | True |  |  |  |
| 0.0d | 0 | 2021-01-15T18:00:00 | 0 | FixedDuration | h | 0 | 2021-01-15T18:00:00 | · · · ENTREGA INFORME DE REVISI�N DE PROYECTOS (90 DIAS HAB) | 20384 | d | 2021-01-15T18:00:00 | 2021-01-15T18:00:00 | True | 18 |  | True | True |  |  |  |
| 0.0d | 100 | 2020-04-13T18:00:00 | 0 | FixedDuration | h | 0 | 2020-04-13T18:00:00 | · · · ENTREGA PROGRAMA CONTRACTUAL (20 DIAS HABILES) | 20385 | d | 2020-04-13T18:00:00 | 2020-04-13T18:00:00 | True | 18 |  | True | True |  |  |  |
| 0.0d | 100 | 2020-04-27T18:00:00 | 0 | FixedDuration | h | 0 | 2020-04-27T18:00:00 | · · · ENTREGA PROGRAMA DE CONTRATACIONES (45 DIAS CORR) | 20430 | d | 2020-04-27T18:00:00 | 2020-04-27T18:00:00 | True | 18 |  | True | True |  |  |  |
| 0.0d | 0 | 2021-12-10T18:00:00 | 0 | FixedDuration | h | 0 | 2021-12-10T18:00:00 | · · · ENTREGA PROGRAMA DE CERTIFICADOS | 20431 | d | 2021-12-10T18:00:00 | 2021-12-10T18:00:00 | True | 18 |  | True | True |  |  |  |
| 0.0d | 0 | 2021-12-03T18:00:00 | 0 | FixedDuration | h | 0 | 2021-12-03T18:00:00 | · · · PROTOCOLO DE RECEPCION DE TOLERANCIAS DEPTO PISO 2 Y PASILLO | 20538 | d | 2021-12-03T18:00:00 | 2021-12-03T18:00:00 | True | 18 |  | True | True |  |  |  |
| 0.0d | 0 | 2021-12-10T18:00:00 | 0 | FixedDuration | h | 0 | 2021-12-10T18:00:00 | · · · ENTREGA PROGRAMA DE RECEPCIONES | 20539 | d | 2021-12-10T18:00:00 | 2021-12-10T18:00:00 | True | 18 |  | True | True |  |  |  |
| 437.0d | 2 | 2022-06-01T18:00:00 | 0 | Normal | h | 437 | 2020-03-16T08:00:00 | · CONSTRUCCION | 18555 | d | 2022-06-01T18:00:00 | 2020-03-16T08:00:00 | True | 18 | True |  |  |  |  |  |
| 436.0d | 18 | 2022-05-31T18:00:00 | 0 | Normal | h | 436 | 2020-03-16T08:00:00 | · · OBRAS PROVISORIAS | 18556 | d | 2022-05-31T18:00:00 | 2020-03-16T08:00:00 | True | 18 | True |  |  |  |  |  |
| 37.0d | 100 | 2020-05-07T18:00:00 | 0 | Normal | h | 37 | 2020-03-16T08:00:00 | · · · INSTALACI�N DE FAENAS | 18557 | d | 2020-05-07T18:00:00 | 2020-03-16T08:00:00 | True | 18 | True |  |  |  |  |  |
| 21.0d | 100 | 2020-04-14T18:00:00 | 0 | Normal | h | 21 | 2020-03-16T08:00:00 | · · · · MONTAJE CONTENEDORES | 19127 | d | 2020-04-14T18:00:00 | 2020-03-16T08:00:00 | True | 18 | True |  |  |  |  |  |
| 5.0d | 100 | 2020-03-20T18:00:00 | 0 | FixedDuration | h | 5 | 2020-03-16T08:00:00 | · · · · · PREPARACION BASE CONTENEDORES | 19128 | d | 2020-03-20T18:00:00 | 2020-03-16T08:00:00 | True | 18 |  |  | True |  |  | 2020-03-16T08:00:00 2020-03-20T18:00:00 |
| 15.0d | 100 | 2020-04-13T18:00:00 | 0 | FixedDuration | h | 15 | 2020-03-23T08:00:00 | · · · · · MONTAJE CONTENEDORES 1ERA Y 2DA LINEA | 19507 | d | 2020-04-13T18:00:00 | 2020-03-23T08:00:00 | True | 18 |  |  | True |  |  |  |
| 1.0d | 100 | 2020-04-14T18:00:00 | 0 | FixedDuration | h | 1 | 2020-04-14T08:00:00 | · · · · · MONTAJE DE CONTENEDORES 3ERA LINEA | 19508 | d | 2020-04-14T18:00:00 | 2020-04-14T08:00:00 | True | 18 |  |  | True |  |  |  |
| 5.0d | 100 | 2020-04-15T18:00:00 | 0 | Normal | h | 5 | 2020-04-08T08:00:00 | · · · · HABILITACION CONTENEDORES | 19533 | d | 2020-04-15T18:00:00 | 2020-04-08T08:00:00 | True | 18 | True |  |  |  |  |  |
| 5.0d | 100 | 2020-04-15T18:00:00 | 0 | FixedDuration | h | 5 | 2020-04-08T08:00:00 | · · · · · INSTALACIONES SANITARIAS | 19534 | d | 2020-04-15T18:00:00 | 2020-04-08T08:00:00 | True | 18 |  |  | True |  |  |  |
| 5.0d | 100 | 2020-04-15T18:00:00 | 0 | FixedDuration | h | 5 | 2020-04-08T08:00:00 | · · · · · INSTALACIONES ELECTRICAS | 19535 | d | 2020-04-15T18:00:00 | 2020-04-08T08:00:00 | True | 18 |  |  | True |  |  |  |
| 12.0d | 100 | 2020-04-29T18:00:00 | 0 | Normal | h | 12 | 2020-04-14T08:00:00 | · · · · PASARELAS EM | 19509 | d | 2020-04-29T18:00:00 | 2020-04-14T08:00:00 | True | 18 | True |  |  |  |  |  |
| 5.0d | 100 | 2020-04-20T18:00:00 | 0 | FixedDuration | h | 5 | 2020-04-14T08:00:00 | · · · · · SECTOR BA�OS Y PIEZAS | 19511 | d | 2020-04-20T18:00:00 | 2020-04-14T08:00:00 | True | 18 |  |  | True |  |  |  |
| 3.0d | 100 | 2020-04-23T18:00:00 | 0 | FixedDuration | h | 3 | 2020-04-21T08:00:00 | · · · · · SECTOR OFICINAS | 19512 | d | 2020-04-23T18:00:00 | 2020-04-21T08:00:00 | True | 18 |  |  | True |  |  |  |
| 5.0d | 100 | 2020-04-29T18:00:00 | 0 | FixedDuration | h | 5 | 2020-04-23T08:00:00 | · · · · · PLACA PASARELAS Y ESCALAS | 19513 | d | 2020-04-29T18:00:00 | 2020-04-23T08:00:00 | True | 18 |  |  | True |  |  |  |
| 13.0d | 100 | 2020-05-07T18:00:00 | 0 | Normal | h | 13 | 2020-04-20T08:00:00 | · · · · PORTONES | 19135 | d | 2020-05-07T18:00:00 | 2020-04-20T08:00:00 | True | 18 | True |  |  |  |  |  |
| 5.0d | 100 | 2020-04-24T18:00:00 | 0 | Normal | h | 5 | 2020-04-20T08:00:00 | · · · · · PORTON ZORZALES | 19518 | d | 2020-04-24T18:00:00 | 2020-04-20T08:00:00 | True | 18 | True |  |  |  |  |  |
| 1.0d | 100 | 2020-04-20T18:00:00 | 0 | FixedDuration | h | 1 | 2020-04-20T08:00:00 | · · · · · · OBRAS CIVILES | 19519 | d | 2020-04-20T18:00:00 | 2020-04-20T08:00:00 | True | 18 |  |  | True |  |  |  |
| 4.0d | 100 | 2020-04-24T18:00:00 | 0 | FixedDuration | h | 4 | 2020-04-21T08:00:00 | · · · · · · MONTAJE DE PORTON Y CIERRE | 19520 | d | 2020-04-24T18:00:00 | 2020-04-21T08:00:00 | True | 18 |  |  | True |  |  |  |
| 10.0d | 100 | 2020-05-07T18:00:00 | 0 | Normal | h | 10 | 2020-04-23T08:00:00 | · · · · · PORTON DEPARTAMENTAL | 19521 | d | 2020-05-07T18:00:00 | 2020-04-23T08:00:00 | True | 18 | True |  |  |  |  |  |
| 2.0d | 100 | 2020-04-24T18:00:00 | 0 | FixedDuration | h | 2 | 2020-04-23T08:00:00 | · · · · · · OBRAS CIVILES | 19523 | d | 2020-04-24T18:00:00 | 2020-04-23T08:00:00 | True | 18 |  |  | True |  |  |  |
| 8.0d | 100 | 2020-05-07T18:00:00 | 0 | FixedDuration | h | 8 | 2020-04-27T08:00:00 | · · · · · · MONTAJE DE PORTON (2) Y CIERRE | 19522 | d | 2020-05-07T18:00:00 | 2020-04-27T08:00:00 | True | 18 |  |  | True |  |  |  |
| 5.0d | 100 | 2020-04-20T18:00:00 | 0 | Normal | h | 5 | 2020-04-14T08:00:00 | · · · · BARANDAS | 19136 | d | 2020-04-20T18:00:00 | 2020-04-14T08:00:00 | True | 18 | True |  |  |  |  |  |
| 3.0d | 100 | 2020-04-16T18:00:00 | 0 | FixedDuration | h | 3 | 2020-04-14T08:00:00 | · · · · · EJE T | 19525 | d | 2020-04-16T18:00:00 | 2020-04-14T08:00:00 | True | 18 |  |  | True |  |  |  |
| 2.0d | 100 | 2020-04-20T18:00:00 | 0 | FixedDuration | h | 2 | 2020-04-17T08:00:00 | · · · · · EJE B | 19526 | d | 2020-04-20T18:00:00 | 2020-04-17T08:00:00 | True | 18 |  |  | True |  |  |  |
| 10.0d | 100 | 2020-05-07T18:00:00 | 0 | Normal | h | 10 | 2020-04-23T08:00:00 | · · · · COMEDOR | 19132 | d | 2020-05-07T18:00:00 | 2020-04-23T08:00:00 | True | 18 | True |  |  |  |  |  |
| 2.0d | 100 | 2020-04-24T18:00:00 | 0 | FixedDuration | h | 2 | 2020-04-23T08:00:00 | · · · · · RADIER | 19133 | d | 2020-04-24T18:00:00 | 2020-04-23T08:00:00 | True | 18 |  |  | True |  |  |  |
| 8.0d | 100 | 2020-05-07T18:00:00 | 0 | FixedDuration | h | 8 | 2020-04-27T08:00:00 | · · · · · ESTRUCTURA COMEDOR Y SEGUNDO PISO | 19134 | d | 2020-05-07T18:00:00 | 2020-04-27T08:00:00 | True | 18 |  |  | True |  |  |  |
| 21.0d | 100 | 2020-04-14T18:00:00 | 0 | Normal | h | 21 | 2020-03-16T08:00:00 | · · · REFUERZO DE PILAS | 19472 | d | 2020-04-14T18:00:00 | 2020-03-16T08:00:00 | True | 18 | True |  |  |  |  |  |
| 9.0d | 100 | 2020-03-26T18:00:00 | 0 | Normal | h | 9 | 2020-03-16T08:00:00 | · · · · MALLA | 19473 | d | 2020-03-26T18:00:00 | 2020-03-16T08:00:00 | True | 18 | True |  |  |  |  |  |
| 2.0d | 100 | 2020-03-17T18:00:00 | 0 | FixedDuration | h | 2 | 2020-03-16T08:00:00 | · · · · · EJE T | 19475 | d | 2020-03-17T18:00:00 | 2020-03-16T08:00:00 | True | 18 |  |  | True | startnoearlierthan | 2020-01-28T08:00:00 |  |
| 1.0d | 100 | 2020-03-18T18:00:00 | 0 | FixedDuration | h | 1 | 2020-03-18T08:00:00 | · · · · · EJE 4 | 19476 | d | 2020-03-18T18:00:00 | 2020-03-18T08:00:00 | True | 18 |  |  | True |  |  |  |
| 1.0d | 100 | 2020-03-19T18:00:00 | 0 | FixedDuration | h | 1 | 2020-03-19T08:00:00 | · · · · · EJE 26 | 19477 | d | 2020-03-19T18:00:00 | 2020-03-19T08:00:00 | True | 18 |  |  | True |  |  |  |
| 1.0d | 100 | 2020-03-20T18:00:00 | 0 | FixedDuration | h | 1 | 2020-03-20T08:00:00 | · · · · · EJE L | 19478 | d | 2020-03-20T18:00:00 | 2020-03-20T08:00:00 | True | 18 |  |  | True |  |  |  |
| 1.0d | 100 | 2020-03-23T18:00:00 | 0 | FixedDuration | h | 1 | 2020-03-23T08:00:00 | · · · · · EJE 29 | 19479 | d | 2020-03-23T18:00:00 | 2020-03-23T08:00:00 | True | 18 |  |  | True |  |  |  |
| 1.0d | 100 | 2020-03-24T18:00:00 | 0 | FixedDuration | h | 1 | 2020-03-24T08:00:00 | · · · · · EJE B | 19480 | d | 2020-03-24T18:00:00 | 2020-03-24T08:00:00 | True | 18 |  |  | True |  |  |  |

| baselineDuration | percentDone | endDate | effort | schedulingMode | effortUnit | duration | baselineStartDate | name | id | durationUnit | baselineEndDate | startDate | manuallyScheduled | calendar | rollup | leaf | constraintType | constraintDate |
| --- | --- | --- | --- | --- | --- | --- | --- | --- | --- | --- | --- | --- | --- | --- | --- | --- | --- | --- |
| 1.0d | 100 | 2020-03-25T18:00:00 | 0 | FixedDuration | h | 1 | 2020-03-25T08:00:00 | · · · · · EJE 1 | 19481 | d | 2020-03-25T18:00:00 | 2020-03-25T08:00:00 | True | 18 |  | True |  |  |
| 1.0d | 100 | 2020-03-26T18:00:00 | 0 | FixedDuration | h | 1 | 2020-03-26T08:00:00 | · · · · · EJE N | 19482 | d | 2020-03-26T18:00:00 | 2020-03-26T08:00:00 | True | 18 |  | True |  |  |
| 10.0d | 100 | 2020-04-09T18:00:00 | 0 | Normal | h | 10 | 2020-03-27T08:00:00 | · · · · ANCLAJE MALLA | 19485 | d | 2020-04-09T18:00:00 | 2020-03-27T08:00:00 | True | 18 | True |  |  |  |
| 2.0d | 100 | 2020-03-30T18:00:00 | 0 | FixedDuration | h | 2 | 2020-03-27T08:00:00 | · · · · · EJE T | 19486 | d | 2020-03-30T18:00:00 | 2020-03-27T08:00:00 | True | 18 |  | True | startnoearlierthan | 2020-01-28T08:00:00 |
| 1.0d | 100 | 2020-03-31T18:00:00 | 0 | FixedDuration | h | 1 | 2020-03-31T08:00:00 | · · · · · EJE 4 | 19487 | d | 2020-03-31T18:00:00 | 2020-03-31T08:00:00 | True | 18 |  | True |  |  |
| 1.0d | 100 | 2020-04-01T18:00:00 | 0 | FixedDuration | h | 1 | 2020-04-01T08:00:00 | · · · · · EJE 26 | 19488 | d | 2020-04-01T18:00:00 | 2020-04-01T08:00:00 | True | 18 |  | True |  |  |
| 1.0d | 100 | 2020-04-02T18:00:00 | 0 | FixedDuration | h | 1 | 2020-04-02T08:00:00 | · · · · · EJE L | 19489 | d | 2020-04-02T18:00:00 | 2020-04-02T08:00:00 | True | 18 |  | True |  |  |
| 1.0d | 100 | 2020-04-03T18:00:00 | 0 | FixedDuration | h | 1 | 2020-04-03T08:00:00 | · · · · · EJE 29 | 19490 | d | 2020-04-03T18:00:00 | 2020-04-03T08:00:00 | True | 18 |  | True |  |  |
| 2.0d | 100 | 2020-04-07T18:00:00 | 0 | FixedDuration | h | 2 | 2020-04-06T08:00:00 | · · · · · EJE B | 19491 | d | 2020-04-07T18:00:00 | 2020-04-06T08:00:00 | True | 18 |  | True |  |  |
| 1.0d | 100 | 2020-04-08T18:00:00 | 0 | FixedDuration | h | 1 | 2020-04-08T08:00:00 | · · · · · EJE 1 | 19492 | d | 2020-04-08T18:00:00 | 2020-04-08T08:00:00 | True | 18 |  | True |  |  |
| 1.0d | 100 | 2020-04-09T18:00:00 | 0 | FixedDuration | h | 1 | 2020-04-09T08:00:00 | · · · · · EJE N | 19493 | d | 2020-04-09T18:00:00 | 2020-04-09T08:00:00 | True | 18 |  | True |  |  |
| 5.0d | 100 | 2020-04-14T18:00:00 | 0 | Normal | h | 5 | 2020-04-07T08:00:00 | · · · · SHOTCRETE | 19474 | d | 2020-04-14T18:00:00 | 2020-04-07T08:00:00 | True | 18 | True |  |  |  |
| 1.0d | 100 | 2020-04-07T18:00:00 | 0 | FixedDuration | h | 1 | 2020-04-07T08:00:00 | · · · · · EJE T | 19494 | d | 2020-04-07T18:00:00 | 2020-04-07T08:00:00 | True | 18 |  | True |  |  |
| 1.0d | 100 | 2020-04-07T18:00:00 | 0 | FixedDuration | h | 1 | 2020-04-07T08:00:00 | · · · · · EJE 4 | 19498 | d | 2020-04-07T18:00:00 | 2020-04-07T08:00:00 | True | 18 |  | True |  |  |
| 1.0d | 100 | 2020-04-08T18:00:00 | 0 | FixedDuration | h | 1 | 2020-04-08T08:00:00 | · · · · · EJE 26 | 19499 | d | 2020-04-08T18:00:00 | 2020-04-08T08:00:00 | True | 18 |  | True |  |  |
| 1.0d | 100 | 2020-04-08T18:00:00 | 0 | FixedDuration | h | 1 | 2020-04-08T08:00:00 | · · · · · EJE L | 19500 | d | 2020-04-08T18:00:00 | 2020-04-08T08:00:00 | True | 18 |  | True |  |  |
| 1.0d | 100 | 2020-04-09T18:00:00 | 0 | FixedDuration | h | 1 | 2020-04-09T08:00:00 | · · · · · EJE 29 | 19501 | d | 2020-04-09T18:00:00 | 2020-04-09T08:00:00 | True | 18 |  | True |  |  |
| 1.0d | 100 | 2020-04-09T18:00:00 | 0 | FixedDuration | h | 1 | 2020-04-09T08:00:00 | · · · · · EJE B | 19502 | d | 2020-04-09T18:00:00 | 2020-04-09T08:00:00 | True | 18 |  | True |  |  |
| 1.0d | 100 | 2020-04-13T18:00:00 | 0 | FixedDuration | h | 1 | 2020-04-13T08:00:00 | · · · · · EJE 1 | 19503 | d | 2020-04-13T18:00:00 | 2020-04-13T08:00:00 | True | 18 |  | True |  |  |
| 1.0d | 100 | 2020-04-14T18:00:00 | 0 | FixedDuration | h | 1 | 2020-04-14T08:00:00 | · · · · · EJE N | 19504 | d | 2020-04-14T18:00:00 | 2020-04-14T08:00:00 | True | 18 |  | True |  |  |
| 20.0d | 100 | 2020-04-13T18:00:00 | 0 | Normal | h | 20 | 2020-03-16T08:00:00 | · · · GRUA | 19144 | d | 2020-04-13T18:00:00 | 2020-03-16T08:00:00 | True | 18 | True |  |  |  |
| 13.0d | 100 | 2020-04-01T18:00:00 | 0 | Normal | h | 13 | 2020-03-16T08:00:00 | · · · · FUNDACION | 19457 | d | 2020-04-01T18:00:00 | 2020-03-16T08:00:00 | True | 18 | True |  |  |  |
| 1.0d | 100 | 2020-03-16T18:00:00 | 0 | FixedDuration | h | 1 | 2020-03-16T08:00:00 | · · · · · TRAZADO | 19467 | d | 2020-03-16T18:00:00 | 2020-03-16T08:00:00 | True | 18 |  | True | startnoearlierthan | 2020-02-06T08:00:00 |
| 1.0d | 100 | 2020-03-17T18:00:00 | 0 | FixedDuration | h | 1 | 2020-03-17T08:00:00 | · · · · · EXCAVACION | 19147 | d | 2020-03-17T18:00:00 | 2020-03-17T08:00:00 | True | 18 |  | True |  |  |
| 5.0d | 100 | 2020-03-24T18:00:00 | 0 | Normal | h | 5 | 2020-03-18T08:00:00 | · · · · · PILAS | 19148 | d | 2020-03-24T18:00:00 | 2020-03-18T08:00:00 | True | 18 | True |  |  |  |
| 2.0d | 100 | 2020-03-19T18:00:00 | 0 | FixedDuration | h | 2 | 2020-03-18T08:00:00 | · · · · · · EXCAVACION Y MOLDAJE | 19458 | d | 2020-03-19T18:00:00 | 2020-03-18T08:00:00 | True | 18 |  | True |  |  |
| 2.0d | 100 | 2020-03-23T18:00:00 | 0 | FixedDuration | h | 2 | 2020-03-20T08:00:00 | · · · · · · ENFIERRADURA | 19460 | d | 2020-03-23T18:00:00 | 2020-03-20T08:00:00 | True | 18 |  | True |  |  |
| 1.0d | 100 | 2020-03-24T18:00:00 | 0 | FixedDuration | h | 1 | 2020-03-24T08:00:00 | · · · · · · HORMIG�N | 19461 | d | 2020-03-24T18:00:00 | 2020-03-24T08:00:00 | True | 18 |  | True |  |  |
| 2.0d | 100 | 2020-03-26T18:00:00 | 0 | FixedDuration | h | 2 | 2020-03-25T08:00:00 | · · · · · PERFILADO | 19462 | d | 2020-03-26T18:00:00 | 2020-03-25T08:00:00 | True | 18 |  | True |  |  |
| 1.0d | 100 | 2020-03-27T18:00:00 | 0 | FixedDuration | h | 1 | 2020-03-27T08:00:00 | · · · · · EMPLANTILLADO | 19463 | d | 2020-03-27T18:00:00 | 2020-03-27T08:00:00 | True | 18 |  | True |  |  |
| 1.0d | 100 | 2020-03-30T18:00:00 | 0 | FixedDuration | h | 1 | 2020-03-30T08:00:00 | · · · · · CRUCIFORME | 19464 | d | 2020-03-30T18:00:00 | 2020-03-30T08:00:00 | True | 18 |  | True |  |  |
| 2.0d | 100 | 2020-03-31T18:00:00 | 0 | FixedDuration | h | 2 | 2020-03-30T08:00:00 | · · · · · ENFIERRADURA | 19465 | d | 2020-03-31T18:00:00 | 2020-03-30T08:00:00 | True | 18 |  | True |  |  |
| 1.0d | 100 | 2020-04-01T18:00:00 | 0 | FixedDuration | h | 1 | 2020-04-01T08:00:00 | · · · · · HORMIG�N | 19466 | d | 2020-04-01T18:00:00 | 2020-04-01T08:00:00 | True | 18 |  | True |  |  |
| 7.0d | 100 | 2020-04-13T18:00:00 | 0 | Normal | h | 7 | 2020-04-02T08:00:00 | · · · · MONTAJE | 19469 | d | 2020-04-13T18:00:00 | 2020-04-02T08:00:00 | True | 18 | True |  |  |  |
| 1.0d | 100 | 2020-04-02T18:00:00 | 0 | FixedDuration | h | 1 | 2020-04-02T08:00:00 | · · · · · DESPACHO A OBRA | 19470 | d | 2020-04-02T18:00:00 | 2020-04-02T08:00:00 | True | 18 |  | True |  |  |
| 4.0d | 100 | 2020-04-13T18:00:00 | 0 | FixedDuration | h | 4 | 2020-04-07T08:00:00 | · · · · · MONTAJE | 19471 | d | 2020-04-13T18:00:00 | 2020-04-07T08:00:00 | True | 18 |  | True |  |  |
| 436.0d | 10 | 2022-05-31T18:00:00 | 0 | FixedDuration | h | 436 | 2020-03-16T08:00:00 | · · · CONSUMOS PROVISORIOS Y GUARDIAS | 19527 | d | 2022-05-31T18:00:00 | 2020-03-16T08:00:00 | True | 18 |  | True |  |  |
| 5.0d | 100 | 2020-03-20T18:00:00 | 0 | FixedDuration | h | 5 | 2020-03-16T08:00:00 | · · · REPLANTEO | 19528 | d | 2020-03-20T18:00:00 | 2020-03-16T08:00:00 | True | 18 |  | True |  |  |
| 436.0d | 10 | 2022-05-31T18:00:00 | 0 | FixedDuration | h | 436 | 2020-03-16T08:00:00 | · · · TRAZADOS | 19529 | d | 2022-05-31T18:00:00 | 2020-03-16T08:00:00 | True | 18 |  | True |  |  |
| 436.0d | 10 | 2022-05-31T18:00:00 | 0 | FixedDuration | h | 436 | 2020-03-16T08:00:00 | · · · RETIRO ESCOMBRO | 19530 | d | 2022-05-31T18:00:00 | 2020-03-16T08:00:00 | True | 18 |  | True |  |  |
| 265.0d | 5 | 2021-10-27T18:00:00 | 0 | Normal | h | 265 | 2020-04-16T08:00:00 | · · OBRA GRUESA | 18567 | d | 2021-10-27T18:00:00 | 2020-04-16T08:00:00 | True | 18 | True |  |  |  |
| 115.0d | 11 | 2021-03-23T18:00:00 | 0 | Normal | h | 115 | 2020-04-16T08:00:00 | · · · BAJO COTA CERO | 18630 | d | 2021-03-23T18:00:00 | 2020-04-16T08:00:00 | True | 18 | True |  |  |  |
| 61.0d | 24 | 2021-01-06T18:00:00 | 0 | Normal | h | 61 | 2020-04-16T08:00:00 | · · · · SUBTERRANEO 4 | 19236 | d | 2021-01-06T18:00:00 | 2020-04-16T08:00:00 | True | 18 | True |  |  |  |
| 39.0d | 57 | 2020-11-26T12:30:00 | 0 | Normal | h | 39 | 2020-04-16T08:00:00 | · · · · · FUNDACIONES | 18568 | d | 2020-11-26T12:30:00 | 2020-04-16T08:00:00 | True | 18 | True |  |  |  |
| 9.0d | 100 | 2020-04-28T18:00:00 | 0 | Normal | h | 9 | 2020-04-16T08:00:00 | · · · · · · CICLO 1 | 18774 | d | 2020-04-28T18:00:00 | 2020-04-16T08:00:00 | True | 18 | True |  |  |  |
| 6.0d | 100 | 2020-04-23T18:00:00 | 0 | FixedDuration | h | 6 | 2020-04-16T08:00:00 | · · · · · · · PERFILADO | 18780 | d | 2020-04-23T18:00:00 | 2020-04-16T08:00:00 | True | 18 |  | True |  |  |
| 6.0d | 100 | 2020-04-24T18:00:00 | 0 | FixedDuration | h | 6 | 2020-04-17T08:00:00 | · · · · · · · EMPLANTILLADO | 18781 | d | 2020-04-24T18:00:00 | 2020-04-17T08:00:00 | True | 18 |  | True |  |  |
| 6.0d | 100 | 2020-04-27T18:00:00 | 0 | FixedDuration | h | 6 | 2020-04-20T08:00:00 | · · · · · · · ENFIERRADURA | 18782 | d | 2020-04-27T18:00:00 | 2020-04-20T08:00:00 | True | 18 |  | True |  |  |
| 6.0d | 100 | 2020-04-28T18:00:00 | 0 | FixedDuration | h | 6 | 2020-04-21T08:00:00 | · · · · · · · HORMIG�N | 18783 | d | 2020-04-28T18:00:00 | 2020-04-21T08:00:00 | True | 18 |  | True |  |  |
| 9.0d | 100 | 2020-05-07T18:00:00 | 0 | Normal | h | 9 | 2020-04-24T08:00:00 | · · · · · · CICLO 2 | 18798 | d | 2020-05-07T18:00:00 | 2020-04-24T08:00:00 | True | 18 | True |  |  |  |
| 6.0d | 100 | 2020-05-04T18:00:00 | 0 | FixedDuration | h | 6 | 2020-04-24T08:00:00 | · · · · · · · PERFILADO | 18799 | d | 2020-05-04T18:00:00 | 2020-04-24T08:00:00 | True | 18 |  | True |  |  |
| 6.0d | 100 | 2020-05-05T18:00:00 | 0 | FixedDuration | h | 6 | 2020-04-27T08:00:00 | · · · · · · · EMPLANTILLADO | 18800 | d | 2020-05-05T18:00:00 | 2020-04-27T08:00:00 | True | 18 |  | True |  |  |
| 6.0d | 100 | 2020-05-06T18:00:00 | 0 | FixedDuration | h | 6 | 2020-04-28T08:00:00 | · · · · · · · ENFIERRADURA | 18801 | d | 2020-05-06T18:00:00 | 2020-04-28T08:00:00 | True | 18 |  | True |  |  |
| 6.0d | 100 | 2020-05-07T18:00:00 | 0 | FixedDuration | h | 6 | 2020-04-29T08:00:00 | · · · · · · · HORMIG�N | 18802 | d | 2020-05-07T18:00:00 | 2020-04-29T08:00:00 | True | 18 |  | True |  |  |
| 9.0d | 100 | 2020-10-06T12:30:00 | 0 | Normal | h | 9 | 2020-05-05T08:00:00 | · · · · · · CICLO 3 | 18803 | d | 2020-10-06T12:30:00 | 2020-05-05T08:00:00 | True | 18 | True |  |  |  |
| 6.0d | 100 | 2020-09-28T12:30:00 | 0 | FixedDuration | h | 6 | 2020-05-05T08:00:00 | · · · · · · · PERFILADO | 18804 | d | 2020-09-28T12:30:00 | 2020-05-05T08:00:00 | True | 18 |  | True |  |  |
| 6.0d | 100 | 2020-09-30T12:30:00 | 0 | FixedDuration | h | 6 | 2020-05-06T08:00:00 | · · · · · · · EMPLANTILLADO | 18805 | d | 2020-09-30T12:30:00 | 2020-05-06T08:00:00 | True | 18 |  | True |  |  |
| 6.0d | 100 | 2020-10-02T12:30:00 | 0 | FixedDuration | h | 6 | 2020-05-07T08:00:00 | · · · · · · · ENFIERRADURA | 18806 | d | 2020-10-02T12:30:00 | 2020-05-07T08:00:00 | True | 18 |  | True |  |  |
| 6.0d | 100 | 2020-10-06T12:30:00 | 0 | FixedDuration | h | 6 | 2020-05-08T08:00:00 | · · · · · · · HORMIG�N | 18807 | d | 2020-10-06T12:30:00 | 2020-05-08T08:00:00 | True | 18 |  | True |  |  |
| 9.0d | 42 | 2020-10-23T12:30:00 | 0 | Normal | h | 9 | 2020-09-29T08:00:00 | · · · · · · CICLO 4 | 18808 | d | 2020-10-23T12:30:00 | 2020-09-29T08:00:00 | True | 18 | True |  |  |  |
| 6.0d | 67 | 2020-10-15T12:30:00 | 0 | FixedDuration | h | 6 | 2020-09-29T08:00:00 | · · · · · · · PERFILADO | 18809 | d | 2020-10-15T12:30:00 | 2020-09-29T08:00:00 | True | 18 |  | True |  |  |
| 6.0d | 50 | 2020-10-19T12:30:00 | 0 | FixedDuration | h | 6 | 2020-10-01T08:00:00 | · · · · · · · EMPLANTILLADO | 18810 | d | 2020-10-19T12:30:00 | 2020-10-01T08:00:00 | True | 18 |  | True |  |  |
| 6.0d | 33 | 2020-10-21T12:30:00 | 0 | FixedDuration | h | 6 | 2020-10-05T08:00:00 | · · · · · · · ENFIERRADURA | 18811 | d | 2020-10-21T12:30:00 | 2020-10-05T08:00:00 | True | 18 |  | True |  |  |
| 6.0d | 17 | 2020-10-23T12:30:00 | 0 | FixedDuration | h | 6 | 2020-10-07T08:00:00 | · · · · · · · HORMIG�N | 18812 | d | 2020-10-23T12:30:00 | 2020-10-07T08:00:00 | True | 18 |  | True |  |  |
| 9.0d | 0 | 2020-11-10T12:30:00 | 0 | Normal | h | 9 | 2020-10-16T08:00:00 | · · · · · · CICLO 5 | 18813 | d | 2020-11-10T12:30:00 | 2020-10-16T08:00:00 | True | 18 | True |  |  |  |
| 6.0d | 0 | 2020-11-02T12:30:00 | 0 | FixedDuration | h | 6 | 2020-10-16T08:00:00 | · · · · · · · PERFILADO | 18814 | d | 2020-11-02T12:30:00 | 2020-10-16T08:00:00 | True | 18 |  | True |  |  |
| 6.0d | 0 | 2020-11-04T12:30:00 | 0 | FixedDuration | h | 6 | 2020-10-20T08:00:00 | · · · · · · · EMPLANTILLADO | 18815 | d | 2020-11-04T12:30:00 | 2020-10-20T08:00:00 | True | 18 |  | True |  |  |
| 6.0d | 0 | 2020-11-06T12:30:00 | 0 | FixedDuration | h | 6 | 2020-10-22T08:00:00 | · · · · · · · ENFIERRADURA | 18816 | d | 2020-11-06T12:30:00 | 2020-10-22T08:00:00 | True | 18 |  | True |  |  |
| 6.0d | 0 | 2020-11-10T12:30:00 | 0 | FixedDuration | h | 6 | 2020-10-26T08:00:00 | · · · · · · · HORMIG�N | 18817 | d | 2020-11-10T12:30:00 | 2020-10-26T08:00:00 | True | 18 |  | True |  |  |
| 9.0d | 0 | 2020-11-26T12:30:00 | 0 | Normal | h | 9 | 2020-11-03T08:00:00 | · · · · · · CICLO 6 | 18818 | d | 2020-11-26T12:30:00 | 2020-11-03T08:00:00 | True | 18 | True |  |  |  |

| baselineDuration | percentDone | endDate | effort | schedulingMode | effortUnit | duration | baselineStartDate | name | id | durationUnit | baselineEndDate | startDate | manuallyScheduled | calendar | rollup | leaf |
| --- | --- | --- | --- | --- | --- | --- | --- | --- | --- | --- | --- | --- | --- | --- | --- | --- |
| 6.0d | 0 | 2020-11-18T12:30:00 | 0 | FixedDuration | h | 6 | 2020-11-03T08:00:00 | · · · · · · · PERFILADO | 18819 | d | 2020-11-18T12:30:00 | 2020-11-03T08:00:00 | True | 18 |  | True |
| 6.0d | 0 | 2020-11-20T12:30:00 | 0 | FixedDuration | h | 6 | 2020-11-05T08:00:00 | · · · · · · · EMPLANTILLADO | 18820 | d | 2020-11-20T12:30:00 | 2020-11-05T08:00:00 | True | 18 |  | True |
| 6.0d | 0 | 2020-11-24T12:30:00 | 0 | FixedDuration | h | 6 | 2020-11-09T08:00:00 | · · · · · · · ENFIERRADURA | 18821 | d | 2020-11-24T12:30:00 | 2020-11-09T08:00:00 | True | 18 |  | True |
| 6.0d | 0 | 2020-11-26T12:30:00 | 0 | FixedDuration | h | 6 | 2020-11-11T08:00:00 | · · · · · · · HORMIG�N | 18822 | d | 2020-11-26T12:30:00 | 2020-11-11T08:00:00 | True | 18 |  | True |
| 25.0d | 0 | 2020-12-22T18:00:00 | 0 | Normal | h | 25 | 2020-10-30T08:00:00 | · · · · · RADIER | 18773 | d | 2020-12-22T18:00:00 | 2020-10-30T08:00:00 | True | 18 | True |  |
| 10.0d | 0 | 2020-11-26T12:30:00 | 0 | Normal | h | 10 | 2020-10-30T08:00:00 | · · · · · · CICLO 1 | 18901 | d | 2020-11-26T12:30:00 | 2020-10-30T08:00:00 | True | 18 | True |  |
| 2.0d | 0 | 2020-11-04T12:30:00 | 0 | FixedDuration | h | 2 | 2020-10-30T08:00:00 | · · · · · · · RELLENO | 18902 | d | 2020-11-04T12:30:00 | 2020-10-30T08:00:00 | True | 18 |  | True |
| 2.0d | 0 | 2020-11-10T12:30:00 | 0 | FixedDuration | h | 2 | 2020-11-05T08:00:00 | · · · · · · · COMPACTACI�N | 18903 | d | 2020-11-10T12:30:00 | 2020-11-05T08:00:00 | True | 18 |  | True |
| 2.0d | 0 | 2020-11-16T12:30:00 | 0 | FixedDuration | h | 2 | 2020-11-11T08:00:00 | · · · · · · · RIPIO + MALLA | 18904 | d | 2020-11-16T12:30:00 | 2020-11-11T08:00:00 | True | 18 |  | True |
| 2.0d | 0 | 2020-11-20T12:30:00 | 0 | FixedDuration | h | 2 | 2020-11-17T08:00:00 | · · · · · · · HORMIG�N | 19153 | d | 2020-11-20T12:30:00 | 2020-11-17T08:00:00 | True | 18 |  | True |
| 2.0d | 0 | 2020-11-26T12:30:00 | 0 | FixedDuration | h | 2 | 2020-11-23T08:00:00 | · · · · · · · PULIDO | 19154 | d | 2020-11-26T12:30:00 | 2020-11-23T08:00:00 | True | 18 |  | True |
| 10.0d | 0 | 2020-12-03T18:00:00 | 0 | Normal | h | 10 | 2020-11-09T08:00:00 | · · · · · · CICLO 2 | 19166 | d | 2020-12-03T18:00:00 | 2020-11-09T08:00:00 | True | 18 | True |  |
| 2.0d | 0 | 2020-11-12T12:30:00 | 0 | FixedDuration | h | 2 | 2020-11-09T08:00:00 | · · · · · · · RELLENO | 19167 | d | 2020-11-12T12:30:00 | 2020-11-09T08:00:00 | True | 18 |  | True |
| 2.0d | 0 | 2020-11-18T12:30:00 | 0 | FixedDuration | h | 2 | 2020-11-13T08:00:00 | · · · · · · · COMPACTACI�N | 19168 | d | 2020-11-18T12:30:00 | 2020-11-13T08:00:00 | True | 18 |  | True |
| 2.0d | 0 | 2020-11-24T12:30:00 | 0 | FixedDuration | h | 2 | 2020-11-19T08:00:00 | · · · · · · · RIPIO + MALLA | 19169 | d | 2020-11-24T12:30:00 | 2020-11-19T08:00:00 | True | 18 |  | True |
| 2.0d | 0 | 2020-11-30T12:30:00 | 0 | FixedDuration | h | 2 | 2020-11-25T08:00:00 | · · · · · · · HORMIG�N | 19170 | d | 2020-11-30T12:30:00 | 2020-11-25T08:00:00 | True | 18 |  | True |
| 2.0d | 0 | 2020-12-03T18:00:00 | 0 | FixedDuration | h | 2 | 2020-12-01T08:00:00 | · · · · · · · PULIDO | 19171 | d | 2020-12-03T18:00:00 | 2020-12-01T08:00:00 | True | 18 |  | True |
| 10.0d | 0 | 2020-12-09T18:00:00 | 0 | Normal | h | 10 | 2020-11-17T08:00:00 | · · · · · · CICLO 3 | 19172 | d | 2020-12-09T18:00:00 | 2020-11-17T08:00:00 | True | 18 | True |  |
| 2.0d | 0 | 2020-11-20T12:30:00 | 0 | FixedDuration | h | 2 | 2020-11-17T08:00:00 | · · · · · · · RELLENO | 19173 | d | 2020-11-20T12:30:00 | 2020-11-17T08:00:00 | True | 18 |  | True |
| 2.0d | 0 | 2020-11-26T12:30:00 | 0 | FixedDuration | h | 2 | 2020-11-23T08:00:00 | · · · · · · · COMPACTACI�N | 19174 | d | 2020-11-26T12:30:00 | 2020-11-23T08:00:00 | True | 18 |  | True |
| 2.0d | 0 | 2020-12-02T12:30:00 | 0 | FixedDuration | h | 2 | 2020-11-27T08:00:00 | · · · · · · · RIPIO + MALLA | 19175 | d | 2020-12-02T12:30:00 | 2020-11-27T08:00:00 | True | 18 |  | True |
| 2.0d | 0 | 2020-12-04T18:00:00 | 0 | FixedDuration | h | 2 | 2020-12-03T08:00:00 | · · · · · · · HORMIG�N | 19176 | d | 2020-12-04T18:00:00 | 2020-12-03T08:00:00 | True | 18 |  | True |
| 2.0d | 0 | 2020-12-09T18:00:00 | 0 | FixedDuration | h | 2 | 2020-12-07T08:00:00 | · · · · · · · PULIDO | 19177 | d | 2020-12-09T18:00:00 | 2020-12-07T08:00:00 | True | 18 |  | True |
| 10.0d | 0 | 2020-12-14T18:00:00 | 0 | Normal | h | 10 | 2020-11-25T08:00:00 | · · · · · · CICLO 4 | 19178 | d | 2020-12-14T18:00:00 | 2020-11-25T08:00:00 | True | 18 | True |  |
| 2.0d | 0 | 2020-11-30T12:30:00 | 0 | FixedDuration | h | 2 | 2020-11-25T08:00:00 | · · · · · · · RELLENO | 19179 | d | 2020-11-30T12:30:00 | 2020-11-25T08:00:00 | True | 18 |  | True |
| 2.0d | 0 | 2020-12-03T18:00:00 | 0 | FixedDuration | h | 2 | 2020-12-01T08:00:00 | · · · · · · · COMPACTACI�N | 19180 | d | 2020-12-03T18:00:00 | 2020-12-01T08:00:00 | True | 18 |  | True |
| 2.0d | 0 | 2020-12-07T18:00:00 | 0 | FixedDuration | h | 2 | 2020-12-04T08:00:00 | · · · · · · · RIPIO + MALLA | 19181 | d | 2020-12-07T18:00:00 | 2020-12-04T08:00:00 | True | 18 |  | True |
| 2.0d | 0 | 2020-12-10T18:00:00 | 0 | FixedDuration | h | 2 | 2020-12-09T08:00:00 | · · · · · · · HORMIG�N | 19182 | d | 2020-12-10T18:00:00 | 2020-12-09T08:00:00 | True | 18 |  | True |
| 2.0d | 0 | 2020-12-14T18:00:00 | 0 | FixedDuration | h | 2 | 2020-12-11T08:00:00 | · · · · · · · PULIDO | 19183 | d | 2020-12-14T18:00:00 | 2020-12-11T08:00:00 | True | 18 |  | True |
| 10.0d | 0 | 2020-12-17T18:00:00 | 0 | Normal | h | 10 | 2020-12-03T08:00:00 | · · · · · · CICLO 5 | 19184 | d | 2020-12-17T18:00:00 | 2020-12-03T08:00:00 | True | 18 | True |  |
| 2.0d | 0 | 2020-12-04T18:00:00 | 0 | FixedDuration | h | 2 | 2020-12-03T08:00:00 | · · · · · · · RELLENO | 19185 | d | 2020-12-04T18:00:00 | 2020-12-03T08:00:00 | True | 18 |  | True |
| 2.0d | 0 | 2020-12-09T18:00:00 | 0 | FixedDuration | h | 2 | 2020-12-07T08:00:00 | · · · · · · · COMPACTACI�N | 19186 | d | 2020-12-09T18:00:00 | 2020-12-07T08:00:00 | True | 18 |  | True |
| 2.0d | 0 | 2020-12-11T18:00:00 | 0 | FixedDuration | h | 2 | 2020-12-10T08:00:00 | · · · · · · · RIPIO + MALLA | 19187 | d | 2020-12-11T18:00:00 | 2020-12-10T08:00:00 | True | 18 |  | True |
| 2.0d | 0 | 2020-12-15T18:00:00 | 0 | FixedDuration | h | 2 | 2020-12-14T08:00:00 | · · · · · · · HORMIG�N | 19188 | d | 2020-12-15T18:00:00 | 2020-12-14T08:00:00 | True | 18 |  | True |
| 2.0d | 0 | 2020-12-17T18:00:00 | 0 | FixedDuration | h | 2 | 2020-12-16T08:00:00 | · · · · · · · PULIDO | 19189 | d | 2020-12-17T18:00:00 | 2020-12-16T08:00:00 | True | 18 |  | True |
| 10.0d | 0 | 2020-12-22T18:00:00 | 0 | Normal | h | 10 | 2020-12-09T08:00:00 | · · · · · · CICLO 6 | 19190 | d | 2020-12-22T18:00:00 | 2020-12-09T08:00:00 | True | 18 | True |  |
| 2.0d | 0 | 2020-12-10T18:00:00 | 0 | FixedDuration | h | 2 | 2020-12-09T08:00:00 | · · · · · · · RELLENO | 19191 | d | 2020-12-10T18:00:00 | 2020-12-09T08:00:00 | True | 18 |  | True |
| 2.0d | 0 | 2020-12-14T18:00:00 | 0 | FixedDuration | h | 2 | 2020-12-11T08:00:00 | · · · · · · · COMPACTACI�N | 19192 | d | 2020-12-14T18:00:00 | 2020-12-11T08:00:00 | True | 18 |  | True |
| 2.0d | 0 | 2020-12-16T18:00:00 | 0 | FixedDuration | h | 2 | 2020-12-15T08:00:00 | · · · · · · · RIPIO + MALLA | 19193 | d | 2020-12-16T18:00:00 | 2020-12-15T08:00:00 | True | 18 |  | True |
| 2.0d | 0 | 2020-12-18T18:00:00 | 0 | FixedDuration | h | 2 | 2020-12-17T08:00:00 | · · · · · · · HORMIG�N | 19194 | d | 2020-12-18T18:00:00 | 2020-12-17T08:00:00 | True | 18 |  | True |
| 2.0d | 0 | 2020-12-22T18:00:00 | 0 | FixedDuration | h | 2 | 2020-12-21T08:00:00 | · · · · · · · PULIDO | 19195 | d | 2020-12-22T18:00:00 | 2020-12-21T08:00:00 | True | 18 |  | True |
| 37.0d | 0 | 2021-01-06T18:00:00 | 0 | Normal | h | 37 | 2020-10-16T08:00:00 | · · · · · SUBTERR�NEO 4 | 18614 | d | 2021-01-06T18:00:00 | 2020-10-16T08:00:00 | True | 18 | True |  |
| 22.0d | 0 | 2020-12-10T18:00:00 | 0 | Normal | h | 22 | 2020-10-16T08:00:00 | · · · · · · CICLO 1 | 18823 | d | 2020-12-10T18:00:00 | 2020-10-16T08:00:00 | True | 18 | True |  |
| 5.0d | 0 | 2020-10-29T12:30:00 | 0 | Normal | h | 5 | 2020-10-16T08:00:00 | · · · · · · · ELEVACION | 18824 | d | 2020-10-29T12:30:00 | 2020-10-16T08:00:00 | True | 18 | True |  |
| 3.0d | 0 | 2020-10-23T12:30:00 | 0 | FixedDuration | h | 3 | 2020-10-16T08:00:00 | · · · · · · · · FIERRO | 18825 | d | 2020-10-23T12:30:00 | 2020-10-16T08:00:00 | True | 18 |  | True |
| 3.0d | 0 | 2020-10-27T12:30:00 | 0 | FixedDuration | h | 3 | 2020-10-20T08:00:00 | · · · · · · · · MOLDAJE | 18826 | d | 2020-10-27T12:30:00 | 2020-10-20T08:00:00 | True | 18 |  | True |
| 3.0d | 0 | 2020-10-29T12:30:00 | 0 | FixedDuration | h | 3 | 2020-10-22T08:00:00 | · · · · · · · · HORMIGON | 18827 | d | 2020-10-29T12:30:00 | 2020-10-22T08:00:00 | True | 18 |  | True |
| 7.0d | 0 | 2020-12-10T18:00:00 | 0 | Normal | h | 7 | 2020-11-27T08:00:00 | · · · · · · · LOSA | 18828 | d | 2020-12-10T18:00:00 | 2020-11-27T08:00:00 | True | 18 | True |  |
| 3.0d | 0 | 2020-12-03T18:00:00 | 0 | FixedDuration | h | 3 | 2020-11-27T08:00:00 | · · · · · · · · MOLDAJE VIGAS | 19196 | d | 2020-12-03T18:00:00 | 2020-11-27T08:00:00 | True | 18 |  | True |
| 3.0d | 0 | 2020-12-04T18:00:00 | 0 | FixedDuration | h | 3 | 2020-12-01T08:00:00 | · · · · · · · · ENFIERRADURA VIGA | 19197 | d | 2020-12-04T18:00:00 | 2020-12-01T08:00:00 | True | 18 |  | True |
| 3.0d | 0 | 2020-12-07T18:00:00 | 0 | FixedDuration | h | 3 | 2020-12-03T08:00:00 | · · · · · · · · MOLDAJE LOSA | 19198 | d | 2020-12-07T18:00:00 | 2020-12-03T08:00:00 | True | 18 |  | True |
| 3.0d | 0 | 2020-12-09T18:00:00 | 0 | FixedDuration | h | 3 | 2020-12-04T08:00:00 | · · · · · · · · ENFIERRADURA LOSA | 18829 | d | 2020-12-09T18:00:00 | 2020-12-04T08:00:00 | True | 18 |  | True |
| 3.0d | 0 | 2020-12-10T18:00:00 | 0 | FixedDuration | h | 3 | 2020-12-07T08:00:00 | · · · · · · · · HORMIG�N LOSA | 18830 | d | 2020-12-10T18:00:00 | 2020-12-07T08:00:00 | True | 18 |  | True |
| 22.0d | 0 | 2020-12-15T18:00:00 | 0 | Normal | h | 22 | 2020-10-26T08:00:00 | · · · · · · CICLO 2 | 18855 | d | 2020-12-15T18:00:00 | 2020-10-26T08:00:00 | True | 18 | True |  |
| 5.0d | 0 | 2020-11-06T12:30:00 | 0 | Normal | h | 5 | 2020-10-26T08:00:00 | · · · · · · · ELEVACION | 18856 | d | 2020-11-06T12:30:00 | 2020-10-26T08:00:00 | True | 18 | True |  |
| 3.0d | 0 | 2020-11-02T12:30:00 | 0 | FixedDuration | h | 3 | 2020-10-26T08:00:00 | · · · · · · · · FIERRO | 18857 | d | 2020-11-02T12:30:00 | 2020-10-26T08:00:00 | True | 18 |  | True |
| 3.0d | 0 | 2020-11-04T12:30:00 | 0 | FixedDuration | h | 3 | 2020-10-28T08:00:00 | · · · · · · · · MOLDAJE | 18858 | d | 2020-11-04T12:30:00 | 2020-10-28T08:00:00 | True | 18 |  | True |
| 3.0d | 0 | 2020-11-06T12:30:00 | 0 | FixedDuration | h | 3 | 2020-10-30T08:00:00 | · · · · · · · · HORMIGON | 18859 | d | 2020-11-06T12:30:00 | 2020-10-30T08:00:00 | True | 18 |  | True |
| 7.0d | 0 | 2020-12-15T18:00:00 | 0 | Normal | h | 7 | 2020-12-04T08:00:00 | · · · · · · · LOSA | 19199 | d | 2020-12-15T18:00:00 | 2020-12-04T08:00:00 | True | 18 | True |  |
| 3.0d | 0 | 2020-12-09T18:00:00 | 0 | FixedDuration | h | 3 | 2020-12-04T08:00:00 | · · · · · · · · MOLDAJE VIGAS | 19200 | d | 2020-12-09T18:00:00 | 2020-12-04T08:00:00 | True | 18 |  | True |
| 3.0d | 0 | 2020-12-10T18:00:00 | 0 | FixedDuration | h | 3 | 2020-12-07T08:00:00 | · · · · · · · · ENFIERRADURA VIGA | 19201 | d | 2020-12-10T18:00:00 | 2020-12-07T08:00:00 | True | 18 |  | True |
| 3.0d | 0 | 2020-12-11T18:00:00 | 0 | FixedDuration | h | 3 | 2020-12-09T08:00:00 | · · · · · · · · MOLDAJE LOSA | 19202 | d | 2020-12-11T18:00:00 | 2020-12-09T08:00:00 | True | 18 |  | True |
| 3.0d | 0 | 2020-12-14T18:00:00 | 0 | FixedDuration | h | 3 | 2020-12-10T08:00:00 | · · · · · · · · ENFIERRADURA LOSA | 19203 | d | 2020-12-14T18:00:00 | 2020-12-10T08:00:00 | True | 18 |  | True |
| 3.0d | 0 | 2020-12-15T18:00:00 | 0 | FixedDuration | h | 3 | 2020-12-11T08:00:00 | · · · · · · · · HORMIG�N LOSA | 19204 | d | 2020-12-15T18:00:00 | 2020-12-11T08:00:00 | True | 18 |  | True |
| 22.0d | 0 | 2020-12-18T18:00:00 | 0 | Normal | h | 22 | 2020-11-03T08:00:00 | · · · · · · CICLO 3 | 18865 | d | 2020-12-18T18:00:00 | 2020-11-03T08:00:00 | True | 18 | True |  |
| 5.0d | 0 | 2020-11-16T12:30:00 | 0 | Normal | h | 5 | 2020-11-03T08:00:00 | · · · · · · · ELEVACION | 18866 | d | 2020-11-16T12:30:00 | 2020-11-03T08:00:00 | True | 18 | True |  |
| 3.0d | 0 | 2020-11-10T12:30:00 | 0 | FixedDuration | h | 3 | 2020-11-03T08:00:00 | · · · · · · · · FIERRO | 18867 | d | 2020-11-10T12:30:00 | 2020-11-03T08:00:00 | True | 18 |  | True |
| 3.0d | 0 | 2020-11-12T12:30:00 | 0 | FixedDuration | h | 3 | 2020-11-05T08:00:00 | · · · · · · · · MOLDAJE | 18868 | d | 2020-11-12T12:30:00 | 2020-11-05T08:00:00 | True | 18 |  | True |
| 3.0d | 0 | 2020-11-16T12:30:00 | 0 | FixedDuration | h | 3 | 2020-11-09T08:00:00 | · · · · · · · · HORMIGON | 18869 | d | 2020-11-16T12:30:00 | 2020-11-09T08:00:00 | True | 18 |  | True |
| 7.0d | 0 | 2020-12-18T18:00:00 | 0 | Normal | h | 7 | 2020-12-10T08:00:00 | · · · · · · · LOSA | 19206 | d | 2020-12-18T18:00:00 | 2020-12-10T08:00:00 | True | 18 | True |  |

| baselineDuration | percentDone | endDate | effort | schedulingMode | effortUnit | duration | baselineStartDate | name | id | durationUnit | baselineEndDate | startDate | manuallyScheduled | calendar | rollup | leaf |
| --- | --- | --- | --- | --- | --- | --- | --- | --- | --- | --- | --- | --- | --- | --- | --- | --- |
| 3.0d | 0 | 2020-12-14T18:00:00 | 0 | FixedDuration | h | 3 | 2020-12-10T08:00:00 | · · · · · · · · MOLDAJE VIGAS | 19207 | d | 2020-12-14T18:00:00 | 2020-12-10T08:00:00 | True | 18 |  | True |
| 3.0d | 0 | 2020-12-15T18:00:00 | 0 | FixedDuration | h | 3 | 2020-12-11T08:00:00 | · · · · · · · · ENFIERRADURA VIGA | 19208 | d | 2020-12-15T18:00:00 | 2020-12-11T08:00:00 | True | 18 |  | True |
| 3.0d | 0 | 2020-12-16T18:00:00 | 0 | FixedDuration | h | 3 | 2020-12-14T08:00:00 | · · · · · · · · MOLDAJE LOSA | 19209 | d | 2020-12-16T18:00:00 | 2020-12-14T08:00:00 | True | 18 |  | True |
| 3.0d | 0 | 2020-12-17T18:00:00 | 0 | FixedDuration | h | 3 | 2020-12-15T08:00:00 | · · · · · · · · ENFIERRADURA LOSA | 19210 | d | 2020-12-17T18:00:00 | 2020-12-15T08:00:00 | True | 18 |  | True |
| 3.0d | 0 | 2020-12-18T18:00:00 | 0 | FixedDuration | h | 3 | 2020-12-16T08:00:00 | · · · · · · · · HORMIG�N LOSA | 19211 | d | 2020-12-18T18:00:00 | 2020-12-16T08:00:00 | True | 18 |  | True |
| 22.0d | 0 | 2020-12-23T18:00:00 | 0 | Normal | h | 22 | 2020-11-11T08:00:00 | · · · · · · CICLO 4 | 18874 | d | 2020-12-23T18:00:00 | 2020-11-11T08:00:00 | True | 18 | True |  |
| 5.0d | 0 | 2020-11-24T12:30:00 | 0 | Normal | h | 5 | 2020-11-11T08:00:00 | · · · · · · · ELEVACION | 18875 | d | 2020-11-24T12:30:00 | 2020-11-11T08:00:00 | True | 18 | True |  |
| 3.0d | 0 | 2020-11-18T12:30:00 | 0 | FixedDuration | h | 3 | 2020-11-11T08:00:00 | · · · · · · · · FIERRO | 18876 | d | 2020-11-18T12:30:00 | 2020-11-11T08:00:00 | True | 18 |  | True |
| 3.0d | 0 | 2020-11-20T12:30:00 | 0 | FixedDuration | h | 3 | 2020-11-13T08:00:00 | · · · · · · · · MOLDAJE | 18877 | d | 2020-11-20T12:30:00 | 2020-11-13T08:00:00 | True | 18 |  | True |
| 3.0d | 0 | 2020-11-24T12:30:00 | 0 | FixedDuration | h | 3 | 2020-11-17T08:00:00 | · · · · · · · · HORMIGON | 18878 | d | 2020-11-24T12:30:00 | 2020-11-17T08:00:00 | True | 18 |  | True |
| 7.0d | 0 | 2020-12-23T18:00:00 | 0 | Normal | h | 7 | 2020-12-15T08:00:00 | · · · · · · · LOSA | 19213 | d | 2020-12-23T18:00:00 | 2020-12-15T08:00:00 | True | 18 | True |  |
| 3.0d | 0 | 2020-12-17T18:00:00 | 0 | FixedDuration | h | 3 | 2020-12-15T08:00:00 | · · · · · · · · MOLDAJE VIGAS | 19214 | d | 2020-12-17T18:00:00 | 2020-12-15T08:00:00 | True | 18 |  | True |
| 3.0d | 0 | 2020-12-18T18:00:00 | 0 | FixedDuration | h | 3 | 2020-12-16T08:00:00 | · · · · · · · · ENFIERRADURA VIGA | 19215 | d | 2020-12-18T18:00:00 | 2020-12-16T08:00:00 | True | 18 |  | True |
| 3.0d | 0 | 2020-12-21T18:00:00 | 0 | FixedDuration | h | 3 | 2020-12-17T08:00:00 | · · · · · · · · MOLDAJE LOSA | 19216 | d | 2020-12-21T18:00:00 | 2020-12-17T08:00:00 | True | 18 |  | True |
| 3.0d | 0 | 2020-12-22T18:00:00 | 0 | FixedDuration | h | 3 | 2020-12-18T08:00:00 | · · · · · · · · ENFIERRADURA LOSA | 19217 | d | 2020-12-22T18:00:00 | 2020-12-18T08:00:00 | True | 18 |  | True |
| 3.0d | 0 | 2020-12-23T18:00:00 | 0 | FixedDuration | h | 3 | 2020-12-21T08:00:00 | · · · · · · · · HORMIG�N LOSA | 19218 | d | 2020-12-23T18:00:00 | 2020-12-21T08:00:00 | True | 18 |  | True |
| 22.0d | 0 | 2020-12-30T18:00:00 | 0 | Normal | h | 22 | 2020-11-19T08:00:00 | · · · · · · CICLO 5 | 18883 | d | 2020-12-30T18:00:00 | 2020-11-19T08:00:00 | True | 18 | True |  |
| 5.0d | 0 | 2020-12-02T12:30:00 | 0 | Normal | h | 5 | 2020-11-19T08:00:00 | · · · · · · · ELEVACION | 18884 | d | 2020-12-02T12:30:00 | 2020-11-19T08:00:00 | True | 18 | True |  |
| 3.0d | 0 | 2020-11-26T12:30:00 | 0 | FixedDuration | h | 3 | 2020-11-19T08:00:00 | · · · · · · · · FIERRO | 18885 | d | 2020-11-26T12:30:00 | 2020-11-19T08:00:00 | True | 18 |  | True |
| 3.0d | 0 | 2020-11-30T12:30:00 | 0 | FixedDuration | h | 3 | 2020-11-23T08:00:00 | · · · · · · · · MOLDAJE | 18886 | d | 2020-11-30T12:30:00 | 2020-11-23T08:00:00 | True | 18 |  | True |
| 3.0d | 0 | 2020-12-02T12:30:00 | 0 | FixedDuration | h | 3 | 2020-11-25T08:00:00 | · · · · · · · · HORMIGON | 18887 | d | 2020-12-02T12:30:00 | 2020-11-25T08:00:00 | True | 18 |  | True |
| 7.0d | 0 | 2020-12-30T18:00:00 | 0 | Normal | h | 7 | 2020-12-18T08:00:00 | · · · · · · · LOSA | 19220 | d | 2020-12-30T18:00:00 | 2020-12-18T08:00:00 | True | 18 | True |  |
| 3.0d | 0 | 2020-12-22T18:00:00 | 0 | FixedDuration | h | 3 | 2020-12-18T08:00:00 | · · · · · · · · MOLDAJE VIGAS | 19221 | d | 2020-12-22T18:00:00 | 2020-12-18T08:00:00 | True | 18 |  | True |
| 3.0d | 0 | 2020-12-23T18:00:00 | 0 | FixedDuration | h | 3 | 2020-12-21T08:00:00 | · · · · · · · · ENFIERRADURA VIGA | 19222 | d | 2020-12-23T18:00:00 | 2020-12-21T08:00:00 | True | 18 |  | True |
| 3.0d | 0 | 2020-12-28T18:00:00 | 0 | FixedDuration | h | 3 | 2020-12-22T08:00:00 | · · · · · · · · MOLDAJE LOSA | 19223 | d | 2020-12-28T18:00:00 | 2020-12-22T08:00:00 | True | 18 |  | True |
| 3.0d | 0 | 2020-12-29T18:00:00 | 0 | FixedDuration | h | 3 | 2020-12-23T08:00:00 | · · · · · · · · ENFIERRADURA LOSA | 19224 | d | 2020-12-29T18:00:00 | 2020-12-23T08:00:00 | True | 18 |  | True |
| 3.0d | 0 | 2020-12-30T18:00:00 | 0 | FixedDuration | h | 3 | 2020-12-28T08:00:00 | · · · · · · · · HORMIG�N LOSA | 19225 | d | 2020-12-30T18:00:00 | 2020-12-28T08:00:00 | True | 18 |  | True |
| 22.0d | 0 | 2021-01-06T18:00:00 | 0 | Normal | h | 22 | 2020-11-27T08:00:00 | · · · · · · CICLO 6 | 18892 | d | 2021-01-06T18:00:00 | 2020-11-27T08:00:00 | True | 18 | True |  |
| 5.0d | 0 | 2020-12-07T18:00:00 | 0 | Normal | h | 5 | 2020-11-27T08:00:00 | · · · · · · · ELEVACION | 18893 | d | 2020-12-07T18:00:00 | 2020-11-27T08:00:00 | True | 18 | True |  |
| 3.0d | 0 | 2020-12-03T18:00:00 | 0 | FixedDuration | h | 3 | 2020-11-27T08:00:00 | · · · · · · · · FIERRO | 18894 | d | 2020-12-03T18:00:00 | 2020-11-27T08:00:00 | True | 18 |  | True |
| 3.0d | 0 | 2020-12-04T18:00:00 | 0 | FixedDuration | h | 3 | 2020-12-01T08:00:00 | · · · · · · · · MOLDAJE | 18895 | d | 2020-12-04T18:00:00 | 2020-12-01T08:00:00 | True | 18 |  | True |
| 3.0d | 0 | 2020-12-07T18:00:00 | 0 | FixedDuration | h | 3 | 2020-12-03T08:00:00 | · · · · · · · · HORMIGON | 18896 | d | 2020-12-07T18:00:00 | 2020-12-03T08:00:00 | True | 18 |  | True |
| 7.0d | 0 | 2021-01-06T18:00:00 | 0 | Normal | h | 7 | 2020-12-23T08:00:00 | · · · · · · · LOSA | 19227 | d | 2021-01-06T18:00:00 | 2020-12-23T08:00:00 | True | 18 | True |  |
| 3.0d | 0 | 2020-12-29T18:00:00 | 0 | FixedDuration | h | 3 | 2020-12-23T08:00:00 | · · · · · · · · MOLDAJE VIGAS | 19228 | d | 2020-12-29T18:00:00 | 2020-12-23T08:00:00 | True | 18 |  | True |
| 3.0d | 0 | 2020-12-30T18:00:00 | 0 | FixedDuration | h | 3 | 2020-12-28T08:00:00 | · · · · · · · · ENFIERRADURA VIGA | 19229 | d | 2020-12-30T18:00:00 | 2020-12-28T08:00:00 | True | 18 |  | True |
| 3.0d | 0 | 2021-01-04T18:00:00 | 0 | FixedDuration | h | 3 | 2020-12-29T08:00:00 | · · · · · · · · MOLDAJE LOSA | 19230 | d | 2021-01-04T18:00:00 | 2020-12-29T08:00:00 | True | 18 |  | True |
| 3.0d | 0 | 2021-01-05T18:00:00 | 0 | FixedDuration | h | 3 | 2020-12-30T08:00:00 | · · · · · · · · ENFIERRADURA LOSA | 19231 | d | 2021-01-05T18:00:00 | 2020-12-30T08:00:00 | True | 18 |  | True |
| 3.0d | 0 | 2021-01-06T18:00:00 | 0 | FixedDuration | h | 3 | 2021-01-04T08:00:00 | · · · · · · · · HORMIG�N LOSA | 19232 | d | 2021-01-06T18:00:00 | 2021-01-04T08:00:00 | True | 18 |  | True |
| 33.0d | 0 | 2021-02-01T18:00:00 | 0 | Normal | h | 33 | 2020-12-11T08:00:00 | · · · · SUBTERR�NEO 3 | 19237 | d | 2021-02-01T18:00:00 | 2020-12-11T08:00:00 | True | 18 | True |  |
| 18.0d | 0 | 2021-01-11T18:00:00 | 0 | Normal | h | 18 | 2020-12-11T08:00:00 | · · · · · CICLO 1 | 19238 | d | 2021-01-11T18:00:00 | 2020-12-11T08:00:00 | True | 18 | True |  |
| 5.0d | 0 | 2020-12-17T18:00:00 | 0 | Normal | h | 5 | 2020-12-11T08:00:00 | · · · · · · ELEVACION | 19239 | d | 2020-12-17T18:00:00 | 2020-12-11T08:00:00 | True | 18 | True |  |
| 3.0d | 0 | 2020-12-15T18:00:00 | 0 | FixedDuration | h | 3 | 2020-12-11T08:00:00 | · · · · · · · FIERRO | 19240 | d | 2020-12-15T18:00:00 | 2020-12-11T08:00:00 | True | 18 |  | True |
| 3.0d | 0 | 2020-12-16T18:00:00 | 0 | FixedDuration | h | 3 | 2020-12-14T08:00:00 | · · · · · · · MOLDAJE | 19241 | d | 2020-12-16T18:00:00 | 2020-12-14T08:00:00 | True | 18 |  | True |
| 3.0d | 0 | 2020-12-17T18:00:00 | 0 | FixedDuration | h | 3 | 2020-12-15T08:00:00 | · · · · · · · HORMIGON | 19242 | d | 2020-12-17T18:00:00 | 2020-12-15T08:00:00 | True | 18 |  | True |
| 7.0d | 0 | 2021-01-11T18:00:00 | 0 | Normal | h | 7 | 2020-12-30T08:00:00 | · · · · · · LOSA | 19243 | d | 2021-01-11T18:00:00 | 2020-12-30T08:00:00 | True | 18 | True |  |
| 3.0d | 0 | 2021-01-05T18:00:00 | 0 | FixedDuration | h | 3 | 2020-12-30T08:00:00 | · · · · · · · MOLDAJE VIGAS | 19244 | d | 2021-01-05T18:00:00 | 2020-12-30T08:00:00 | True | 18 |  | True |
| 3.0d | 0 | 2021-01-06T18:00:00 | 0 | FixedDuration | h | 3 | 2021-01-04T08:00:00 | · · · · · · · ENFIERRADURA VIGA | 19245 | d | 2021-01-06T18:00:00 | 2021-01-04T08:00:00 | True | 18 |  | True |
| 3.0d | 0 | 2021-01-07T18:00:00 | 0 | FixedDuration | h | 3 | 2021-01-05T08:00:00 | · · · · · · · MOLDAJE LOSA | 19246 | d | 2021-01-07T18:00:00 | 2021-01-05T08:00:00 | True | 18 |  | True |
| 3.0d | 0 | 2021-01-08T18:00:00 | 0 | FixedDuration | h | 3 | 2021-01-06T08:00:00 | · · · · · · · ENFIERRADURA LOSA | 19247 | d | 2021-01-08T18:00:00 | 2021-01-06T08:00:00 | True | 18 |  | True |
| 3.0d | 0 | 2021-01-11T18:00:00 | 0 | FixedDuration | h | 3 | 2021-01-07T08:00:00 | · · · · · · · HORMIG�N LOSA | 19248 | d | 2021-01-11T18:00:00 | 2021-01-07T08:00:00 | True | 18 |  | True |
| 18.0d | 0 | 2021-01-14T18:00:00 | 0 | Normal | h | 18 | 2020-12-16T08:00:00 | · · · · · CICLO 2 | 19250 | d | 2021-01-14T18:00:00 | 2020-12-16T08:00:00 | True | 18 | True |  |
| 5.0d | 0 | 2020-12-22T18:00:00 | 0 | Normal | h | 5 | 2020-12-16T08:00:00 | · · · · · · ELEVACION | 19251 | d | 2020-12-22T18:00:00 | 2020-12-16T08:00:00 | True | 18 | True |  |
| 3.0d | 0 | 2020-12-18T18:00:00 | 0 | FixedDuration | h | 3 | 2020-12-16T08:00:00 | · · · · · · · FIERRO | 19252 | d | 2020-12-18T18:00:00 | 2020-12-16T08:00:00 | True | 18 |  | True |
| 3.0d | 0 | 2020-12-21T18:00:00 | 0 | FixedDuration | h | 3 | 2020-12-17T08:00:00 | · · · · · · · MOLDAJE | 19253 | d | 2020-12-21T18:00:00 | 2020-12-17T08:00:00 | True | 18 |  | True |
| 3.0d | 0 | 2020-12-22T18:00:00 | 0 | FixedDuration | h | 3 | 2020-12-18T08:00:00 | · · · · · · · HORMIGON | 19254 | d | 2020-12-22T18:00:00 | 2020-12-18T08:00:00 | True | 18 |  | True |
| 7.0d | 0 | 2021-01-14T18:00:00 | 0 | Normal | h | 7 | 2021-01-06T08:00:00 | · · · · · · LOSA | 19255 | d | 2021-01-14T18:00:00 | 2021-01-06T08:00:00 | True | 18 | True |  |
| 3.0d | 0 | 2021-01-08T18:00:00 | 0 | FixedDuration | h | 3 | 2021-01-06T08:00:00 | · · · · · · · MOLDAJE VIGAS | 19256 | d | 2021-01-08T18:00:00 | 2021-01-06T08:00:00 | True | 18 |  | True |
| 3.0d | 0 | 2021-01-11T18:00:00 | 0 | FixedDuration | h | 3 | 2021-01-07T08:00:00 | · · · · · · · ENFIERRADURA VIGA | 19257 | d | 2021-01-11T18:00:00 | 2021-01-07T08:00:00 | True | 18 |  | True |
| 3.0d | 0 | 2021-01-12T18:00:00 | 0 | FixedDuration | h | 3 | 2021-01-08T08:00:00 | · · · · · · · MOLDAJE LOSA | 19258 | d | 2021-01-12T18:00:00 | 2021-01-08T08:00:00 | True | 18 |  | True |
| 3.0d | 0 | 2021-01-13T18:00:00 | 0 | FixedDuration | h | 3 | 2021-01-11T08:00:00 | · · · · · · · ENFIERRADURA LOSA | 19259 | d | 2021-01-13T18:00:00 | 2021-01-11T08:00:00 | True | 18 |  | True |
| 3.0d | 0 | 2021-01-14T18:00:00 | 0 | FixedDuration | h | 3 | 2021-01-12T08:00:00 | · · · · · · · HORMIG�N LOSA | 19260 | d | 2021-01-14T18:00:00 | 2021-01-12T08:00:00 | True | 18 |  | True |
| 18.0d | 0 | 2021-01-19T18:00:00 | 0 | Normal | h | 18 | 2020-12-21T08:00:00 | · · · · · CICLO 3 | 19262 | d | 2021-01-19T18:00:00 | 2020-12-21T08:00:00 | True | 18 | True |  |
| 5.0d | 0 | 2020-12-29T18:00:00 | 0 | Normal | h | 5 | 2020-12-21T08:00:00 | · · · · · · ELEVACION | 19263 | d | 2020-12-29T18:00:00 | 2020-12-21T08:00:00 | True | 18 | True |  |
| 3.0d | 0 | 2020-12-23T18:00:00 | 0 | FixedDuration | h | 3 | 2020-12-21T08:00:00 | · · · · · · · FIERRO | 19264 | d | 2020-12-23T18:00:00 | 2020-12-21T08:00:00 | True | 18 |  | True |
| 3.0d | 0 | 2020-12-28T18:00:00 | 0 | FixedDuration | h | 3 | 2020-12-22T08:00:00 | · · · · · · · MOLDAJE | 19265 | d | 2020-12-28T18:00:00 | 2020-12-22T08:00:00 | True | 18 |  | True |
| 3.0d | 0 | 2020-12-29T18:00:00 | 0 | FixedDuration | h | 3 | 2020-12-23T08:00:00 | · · · · · · · HORMIGON | 19266 | d | 2020-12-29T18:00:00 | 2020-12-23T08:00:00 | True | 18 |  | True |
| 7.0d | 0 | 2021-01-19T18:00:00 | 0 | Normal | h | 7 | 2021-01-11T08:00:00 | · · · · · · LOSA | 19267 | d | 2021-01-19T18:00:00 | 2021-01-11T08:00:00 | True | 18 | True |  |
| 3.0d | 0 | 2021-01-13T18:00:00 | 0 | FixedDuration | h | 3 | 2021-01-11T08:00:00 | · · · · · · · MOLDAJE VIGAS | 19268 | d | 2021-01-13T18:00:00 | 2021-01-11T08:00:00 | True | 18 |  | True |
| 3.0d | 0 | 2021-01-14T18:00:00 | 0 | FixedDuration | h | 3 | 2021-01-12T08:00:00 | · · · · · · · ENFIERRADURA VIGA | 19269 | d | 2021-01-14T18:00:00 | 2021-01-12T08:00:00 | True | 18 |  | True |
| 3.0d | 0 | 2021-01-15T18:00:00 | 0 | FixedDuration | h | 3 | 2021-01-13T08:00:00 | · · · · · · · MOLDAJE LOSA | 19270 | d | 2021-01-15T18:00:00 | 2021-01-13T08:00:00 | True | 18 |  | True |

| baselineDuration | percentDone | endDate | effort | schedulingMode | effortUnit | duration | baselineStartDate | name | id | durationUnit | baselineEndDate | startDate | manuallyScheduled | calendar | rollup | leaf |
| --- | --- | --- | --- | --- | --- | --- | --- | --- | --- | --- | --- | --- | --- | --- | --- | --- |
| 3.0d | 0 | 2021-01-18T18:00:00 | 0 | FixedDuration | h | 3 | 2021-01-14T08:00:00 | · · · · · · · ENFIERRADURA LOSA | 19271 | d | 2021-01-18T18:00:00 | 2021-01-14T08:00:00 | True | 18 |  | True |
| 3.0d | 0 | 2021-01-19T18:00:00 | 0 | FixedDuration | h | 3 | 2021-01-15T08:00:00 | · · · · · · · HORMIG�N LOSA | 19272 | d | 2021-01-19T18:00:00 | 2021-01-15T08:00:00 | True | 18 |  | True |
| 18.0d | 0 | 2021-01-22T18:00:00 | 0 | Normal | h | 18 | 2020-12-28T08:00:00 | · · · · · CICLO 4 | 19274 | d | 2021-01-22T18:00:00 | 2020-12-28T08:00:00 | True | 18 | True |  |
| 5.0d | 0 | 2021-01-05T18:00:00 | 0 | Normal | h | 5 | 2020-12-28T08:00:00 | · · · · · · ELEVACION | 19275 | d | 2021-01-05T18:00:00 | 2020-12-28T08:00:00 | True | 18 | True |  |
| 3.0d | 0 | 2020-12-30T18:00:00 | 0 | FixedDuration | h | 3 | 2020-12-28T08:00:00 | · · · · · · · FIERRO | 19276 | d | 2020-12-30T18:00:00 | 2020-12-28T08:00:00 | True | 18 |  | True |
| 3.0d | 0 | 2021-01-04T18:00:00 | 0 | FixedDuration | h | 3 | 2020-12-29T08:00:00 | · · · · · · · MOLDAJE | 19277 | d | 2021-01-04T18:00:00 | 2020-12-29T08:00:00 | True | 18 |  | True |
| 3.0d | 0 | 2021-01-05T18:00:00 | 0 | FixedDuration | h | 3 | 2020-12-30T08:00:00 | · · · · · · · HORMIGON | 19278 | d | 2021-01-05T18:00:00 | 2020-12-30T08:00:00 | True | 18 |  | True |
| 7.0d | 0 | 2021-01-22T18:00:00 | 0 | Normal | h | 7 | 2021-01-14T08:00:00 | · · · · · · LOSA | 19279 | d | 2021-01-22T18:00:00 | 2021-01-14T08:00:00 | True | 18 | True |  |
| 3.0d | 0 | 2021-01-18T18:00:00 | 0 | FixedDuration | h | 3 | 2021-01-14T08:00:00 | · · · · · · · MOLDAJE VIGAS | 19280 | d | 2021-01-18T18:00:00 | 2021-01-14T08:00:00 | True | 18 |  | True |
| 3.0d | 0 | 2021-01-19T18:00:00 | 0 | FixedDuration | h | 3 | 2021-01-15T08:00:00 | · · · · · · · ENFIERRADURA VIGA | 19281 | d | 2021-01-19T18:00:00 | 2021-01-15T08:00:00 | True | 18 |  | True |
| 3.0d | 0 | 2021-01-20T18:00:00 | 0 | FixedDuration | h | 3 | 2021-01-18T08:00:00 | · · · · · · · MOLDAJE LOSA | 19282 | d | 2021-01-20T18:00:00 | 2021-01-18T08:00:00 | True | 18 |  | True |
| 3.0d | 0 | 2021-01-21T18:00:00 | 0 | FixedDuration | h | 3 | 2021-01-19T08:00:00 | · · · · · · · ENFIERRADURA LOSA | 19283 | d | 2021-01-21T18:00:00 | 2021-01-19T08:00:00 | True | 18 |  | True |
| 3.0d | 0 | 2021-01-22T18:00:00 | 0 | FixedDuration | h | 3 | 2021-01-20T08:00:00 | · · · · · · · HORMIG�N LOSA | 19284 | d | 2021-01-22T18:00:00 | 2021-01-20T08:00:00 | True | 18 |  | True |
| 18.0d | 0 | 2021-01-27T18:00:00 | 0 | Normal | h | 18 | 2021-01-04T08:00:00 | · · · · · CICLO 5 | 19286 | d | 2021-01-27T18:00:00 | 2021-01-04T08:00:00 | True | 18 | True |  |
| 5.0d | 0 | 2021-01-08T18:00:00 | 0 | Normal | h | 5 | 2021-01-04T08:00:00 | · · · · · · ELEVACION | 19287 | d | 2021-01-08T18:00:00 | 2021-01-04T08:00:00 | True | 18 | True |  |
| 3.0d | 0 | 2021-01-06T18:00:00 | 0 | FixedDuration | h | 3 | 2021-01-04T08:00:00 | · · · · · · · FIERRO | 19288 | d | 2021-01-06T18:00:00 | 2021-01-04T08:00:00 | True | 18 |  | True |
| 3.0d | 0 | 2021-01-07T18:00:00 | 0 | FixedDuration | h | 3 | 2021-01-05T08:00:00 | · · · · · · · MOLDAJE | 19289 | d | 2021-01-07T18:00:00 | 2021-01-05T08:00:00 | True | 18 |  | True |
| 3.0d | 0 | 2021-01-08T18:00:00 | 0 | FixedDuration | h | 3 | 2021-01-06T08:00:00 | · · · · · · · HORMIGON | 19290 | d | 2021-01-08T18:00:00 | 2021-01-06T08:00:00 | True | 18 |  | True |
| 7.0d | 0 | 2021-01-27T18:00:00 | 0 | Normal | h | 7 | 2021-01-19T08:00:00 | · · · · · · LOSA | 19291 | d | 2021-01-27T18:00:00 | 2021-01-19T08:00:00 | True | 18 | True |  |
| 3.0d | 0 | 2021-01-21T18:00:00 | 0 | FixedDuration | h | 3 | 2021-01-19T08:00:00 | · · · · · · · MOLDAJE VIGAS | 19292 | d | 2021-01-21T18:00:00 | 2021-01-19T08:00:00 | True | 18 |  | True |
| 3.0d | 0 | 2021-01-22T18:00:00 | 0 | FixedDuration | h | 3 | 2021-01-20T08:00:00 | · · · · · · · ENFIERRADURA VIGA | 19293 | d | 2021-01-22T18:00:00 | 2021-01-20T08:00:00 | True | 18 |  | True |
| 3.0d | 0 | 2021-01-25T18:00:00 | 0 | FixedDuration | h | 3 | 2021-01-21T08:00:00 | · · · · · · · MOLDAJE LOSA | 19294 | d | 2021-01-25T18:00:00 | 2021-01-21T08:00:00 | True | 18 |  | True |
| 3.0d | 0 | 2021-01-26T18:00:00 | 0 | FixedDuration | h | 3 | 2021-01-22T08:00:00 | · · · · · · · ENFIERRADURA LOSA | 19295 | d | 2021-01-26T18:00:00 | 2021-01-22T08:00:00 | True | 18 |  | True |
| 3.0d | 0 | 2021-01-27T18:00:00 | 0 | FixedDuration | h | 3 | 2021-01-25T08:00:00 | · · · · · · · HORMIG�N LOSA | 19296 | d | 2021-01-27T18:00:00 | 2021-01-25T08:00:00 | True | 18 |  | True |
| 18.0d | 0 | 2021-02-01T18:00:00 | 0 | Normal | h | 18 | 2021-01-07T08:00:00 | · · · · · CICLO 6 | 19298 | d | 2021-02-01T18:00:00 | 2021-01-07T08:00:00 | True | 18 | True |  |
| 5.0d | 0 | 2021-01-13T18:00:00 | 0 | Normal | h | 5 | 2021-01-07T08:00:00 | · · · · · · ELEVACION | 19299 | d | 2021-01-13T18:00:00 | 2021-01-07T08:00:00 | True | 18 | True |  |
| 3.0d | 0 | 2021-01-11T18:00:00 | 0 | FixedDuration | h | 3 | 2021-01-07T08:00:00 | · · · · · · · FIERRO | 19300 | d | 2021-01-11T18:00:00 | 2021-01-07T08:00:00 | True | 18 |  | True |
| 3.0d | 0 | 2021-01-12T18:00:00 | 0 | FixedDuration | h | 3 | 2021-01-08T08:00:00 | · · · · · · · MOLDAJE | 19301 | d | 2021-01-12T18:00:00 | 2021-01-08T08:00:00 | True | 18 |  | True |
| 3.0d | 0 | 2021-01-13T18:00:00 | 0 | FixedDuration | h | 3 | 2021-01-11T08:00:00 | · · · · · · · HORMIGON | 19302 | d | 2021-01-13T18:00:00 | 2021-01-11T08:00:00 | True | 18 |  | True |
| 7.0d | 0 | 2021-02-01T18:00:00 | 0 | Normal | h | 7 | 2021-01-22T08:00:00 | · · · · · · LOSA | 19303 | d | 2021-02-01T18:00:00 | 2021-01-22T08:00:00 | True | 18 | True |  |
| 3.0d | 0 | 2021-01-26T18:00:00 | 0 | FixedDuration | h | 3 | 2021-01-22T08:00:00 | · · · · · · · MOLDAJE VIGAS | 19304 | d | 2021-01-26T18:00:00 | 2021-01-22T08:00:00 | True | 18 |  | True |
| 3.0d | 0 | 2021-01-27T18:00:00 | 0 | FixedDuration | h | 3 | 2021-01-25T08:00:00 | · · · · · · · ENFIERRADURA VIGA | 19305 | d | 2021-01-27T18:00:00 | 2021-01-25T08:00:00 | True | 18 |  | True |
| 3.0d | 0 | 2021-01-28T18:00:00 | 0 | FixedDuration | h | 3 | 2021-01-26T08:00:00 | · · · · · · · MOLDAJE LOSA | 19306 | d | 2021-01-28T18:00:00 | 2021-01-26T08:00:00 | True | 18 |  | True |
| 3.0d | 0 | 2021-01-29T18:00:00 | 0 | FixedDuration | h | 3 | 2021-01-27T08:00:00 | · · · · · · · ENFIERRADURA LOSA | 19307 | d | 2021-01-29T18:00:00 | 2021-01-27T08:00:00 | True | 18 |  | True |
| 3.0d | 0 | 2021-02-01T18:00:00 | 0 | FixedDuration | h | 3 | 2021-01-28T08:00:00 | · · · · · · · HORMIG�N LOSA | 19308 | d | 2021-02-01T18:00:00 | 2021-01-28T08:00:00 | True | 18 |  | True |
| 33.0d | 0 | 2021-02-25T18:00:00 | 0 | Normal | h | 33 | 2021-01-12T08:00:00 | · · · · SUBTERR�NEO 2 | 20618 | d | 2021-02-25T18:00:00 | 2021-01-12T08:00:00 | True | 18 | True |  |
| 18.0d | 0 | 2021-02-04T18:00:00 | 0 | Normal | h | 18 | 2021-01-12T08:00:00 | · · · · · CICLO 1 | 20619 | d | 2021-02-04T18:00:00 | 2021-01-12T08:00:00 | True | 18 | True |  |
| 5.0d | 0 | 2021-01-18T18:00:00 | 0 | Normal | h | 5 | 2021-01-12T08:00:00 | · · · · · · ELEVACION | 20620 | d | 2021-01-18T18:00:00 | 2021-01-12T08:00:00 | True | 18 | True |  |
| 3.0d | 0 | 2021-01-14T18:00:00 | 0 | FixedDuration | h | 3 | 2021-01-12T08:00:00 | · · · · · · · FIERRO | 20621 | d | 2021-01-14T18:00:00 | 2021-01-12T08:00:00 | True | 18 |  | True |
| 3.0d | 0 | 2021-01-15T18:00:00 | 0 | FixedDuration | h | 3 | 2021-01-13T08:00:00 | · · · · · · · MOLDAJE | 20622 | d | 2021-01-15T18:00:00 | 2021-01-13T08:00:00 | True | 18 |  | True |
| 3.0d | 0 | 2021-01-18T18:00:00 | 0 | FixedDuration | h | 3 | 2021-01-14T08:00:00 | · · · · · · · HORMIGON | 20623 | d | 2021-01-18T18:00:00 | 2021-01-14T08:00:00 | True | 18 |  | True |
| 7.0d | 0 | 2021-02-04T18:00:00 | 0 | Normal | h | 7 | 2021-01-27T08:00:00 | · · · · · · LOSA | 20624 | d | 2021-02-04T18:00:00 | 2021-01-27T08:00:00 | True | 18 | True |  |
| 3.0d | 0 | 2021-01-29T18:00:00 | 0 | FixedDuration | h | 3 | 2021-01-27T08:00:00 | · · · · · · · MOLDAJE VIGAS | 20625 | d | 2021-01-29T18:00:00 | 2021-01-27T08:00:00 | True | 18 |  | True |
| 3.0d | 0 | 2021-02-01T18:00:00 | 0 | FixedDuration | h | 3 | 2021-01-28T08:00:00 | · · · · · · · ENFIERRADURA VIGA | 20626 | d | 2021-02-01T18:00:00 | 2021-01-28T08:00:00 | True | 18 |  | True |
| 3.0d | 0 | 2021-02-02T18:00:00 | 0 | FixedDuration | h | 3 | 2021-01-29T08:00:00 | · · · · · · · MOLDAJE LOSA | 20627 | d | 2021-02-02T18:00:00 | 2021-01-29T08:00:00 | True | 18 |  | True |
| 3.0d | 0 | 2021-02-03T18:00:00 | 0 | FixedDuration | h | 3 | 2021-02-01T08:00:00 | · · · · · · · ENFIERRADURA LOSA | 20628 | d | 2021-02-03T18:00:00 | 2021-02-01T08:00:00 | True | 18 |  | True |
| 3.0d | 0 | 2021-02-04T18:00:00 | 0 | FixedDuration | h | 3 | 2021-02-02T08:00:00 | · · · · · · · HORMIG�N LOSA | 20629 | d | 2021-02-04T18:00:00 | 2021-02-02T08:00:00 | True | 18 |  | True |
| 18.0d | 0 | 2021-02-09T18:00:00 | 0 | Normal | h | 18 | 2021-01-15T08:00:00 | · · · · · CICLO 2 | 20630 | d | 2021-02-09T18:00:00 | 2021-01-15T08:00:00 | True | 18 | True |  |
| 5.0d | 0 | 2021-01-21T18:00:00 | 0 | Normal | h | 5 | 2021-01-15T08:00:00 | · · · · · · ELEVACION | 20631 | d | 2021-01-21T18:00:00 | 2021-01-15T08:00:00 | True | 18 | True |  |
| 3.0d | 0 | 2021-01-19T18:00:00 | 0 | FixedDuration | h | 3 | 2021-01-15T08:00:00 | · · · · · · · FIERRO | 20632 | d | 2021-01-19T18:00:00 | 2021-01-15T08:00:00 | True | 18 |  | True |
| 3.0d | 0 | 2021-01-20T18:00:00 | 0 | FixedDuration | h | 3 | 2021-01-18T08:00:00 | · · · · · · · MOLDAJE | 20633 | d | 2021-01-20T18:00:00 | 2021-01-18T08:00:00 | True | 18 |  | True |
| 3.0d | 0 | 2021-01-21T18:00:00 | 0 | FixedDuration | h | 3 | 2021-01-19T08:00:00 | · · · · · · · HORMIGON | 20634 | d | 2021-01-21T18:00:00 | 2021-01-19T08:00:00 | True | 18 |  | True |
| 7.0d | 0 | 2021-02-09T18:00:00 | 0 | Normal | h | 7 | 2021-02-01T08:00:00 | · · · · · · LOSA | 20635 | d | 2021-02-09T18:00:00 | 2021-02-01T08:00:00 | True | 18 | True |  |
| 3.0d | 0 | 2021-02-03T18:00:00 | 0 | FixedDuration | h | 3 | 2021-02-01T08:00:00 | · · · · · · · MOLDAJE VIGAS | 20636 | d | 2021-02-03T18:00:00 | 2021-02-01T08:00:00 | True | 18 |  | True |
| 3.0d | 0 | 2021-02-04T18:00:00 | 0 | FixedDuration | h | 3 | 2021-02-02T08:00:00 | · · · · · · · ENFIERRADURA VIGA | 20637 | d | 2021-02-04T18:00:00 | 2021-02-02T08:00:00 | True | 18 |  | True |
| 3.0d | 0 | 2021-02-05T18:00:00 | 0 | FixedDuration | h | 3 | 2021-02-03T08:00:00 | · · · · · · · MOLDAJE LOSA | 20638 | d | 2021-02-05T18:00:00 | 2021-02-03T08:00:00 | True | 18 |  | True |
| 3.0d | 0 | 2021-02-08T18:00:00 | 0 | FixedDuration | h | 3 | 2021-02-04T08:00:00 | · · · · · · · ENFIERRADURA LOSA | 20639 | d | 2021-02-08T18:00:00 | 2021-02-04T08:00:00 | True | 18 |  | True |
| 3.0d | 0 | 2021-02-09T18:00:00 | 0 | FixedDuration | h | 3 | 2021-02-05T08:00:00 | · · · · · · · HORMIG�N LOSA | 20640 | d | 2021-02-09T18:00:00 | 2021-02-05T08:00:00 | True | 18 |  | True |
| 18.0d | 0 | 2021-02-12T18:00:00 | 0 | Normal | h | 18 | 2021-01-20T08:00:00 | · · · · · CICLO 3 | 20641 | d | 2021-02-12T18:00:00 | 2021-01-20T08:00:00 | True | 18 | True |  |
| 5.0d | 0 | 2021-01-26T18:00:00 | 0 | Normal | h | 5 | 2021-01-20T08:00:00 | · · · · · · ELEVACION | 20642 | d | 2021-01-26T18:00:00 | 2021-01-20T08:00:00 | True | 18 | True |  |
| 3.0d | 0 | 2021-01-22T18:00:00 | 0 | FixedDuration | h | 3 | 2021-01-20T08:00:00 | · · · · · · · FIERRO | 20643 | d | 2021-01-22T18:00:00 | 2021-01-20T08:00:00 | True | 18 |  | True |
| 3.0d | 0 | 2021-01-25T18:00:00 | 0 | FixedDuration | h | 3 | 2021-01-21T08:00:00 | · · · · · · · MOLDAJE | 20644 | d | 2021-01-25T18:00:00 | 2021-01-21T08:00:00 | True | 18 |  | True |
| 3.0d | 0 | 2021-01-26T18:00:00 | 0 | FixedDuration | h | 3 | 2021-01-22T08:00:00 | · · · · · · · HORMIGON | 20645 | d | 2021-01-26T18:00:00 | 2021-01-22T08:00:00 | True | 18 |  | True |
| 7.0d | 0 | 2021-02-12T18:00:00 | 0 | Normal | h | 7 | 2021-02-04T08:00:00 | · · · · · · LOSA | 20646 | d | 2021-02-12T18:00:00 | 2021-02-04T08:00:00 | True | 18 | True |  |
| 3.0d | 0 | 2021-02-08T18:00:00 | 0 | FixedDuration | h | 3 | 2021-02-04T08:00:00 | · · · · · · · MOLDAJE VIGAS | 20647 | d | 2021-02-08T18:00:00 | 2021-02-04T08:00:00 | True | 18 |  | True |
| 3.0d | 0 | 2021-02-09T18:00:00 | 0 | FixedDuration | h | 3 | 2021-02-05T08:00:00 | · · · · · · · ENFIERRADURA VIGA | 20648 | d | 2021-02-09T18:00:00 | 2021-02-05T08:00:00 | True | 18 |  | True |
| 3.0d | 0 | 2021-02-10T18:00:00 | 0 | FixedDuration | h | 3 | 2021-02-08T08:00:00 | · · · · · · · MOLDAJE LOSA | 20649 | d | 2021-02-10T18:00:00 | 2021-02-08T08:00:00 | True | 18 |  | True |
| 3.0d | 0 | 2021-02-11T18:00:00 | 0 | FixedDuration | h | 3 | 2021-02-09T08:00:00 | · · · · · · · ENFIERRADURA LOSA | 20650 | d | 2021-02-11T18:00:00 | 2021-02-09T08:00:00 | True | 18 |  | True |
| 3.0d | 0 | 2021-02-12T18:00:00 | 0 | FixedDuration | h | 3 | 2021-02-10T08:00:00 | · · · · · · · HORMIG�N LOSA | 20651 | d | 2021-02-12T18:00:00 | 2021-02-10T08:00:00 | True | 18 |  | True |
| 18.0d | 0 | 2021-02-17T18:00:00 | 0 | Normal | h | 18 | 2021-01-25T08:00:00 | · · · · · CICLO 4 | 20652 | d | 2021-02-17T18:00:00 | 2021-01-25T08:00:00 | True | 18 | True |  |

| baselineDuration | percentDone | endDate | effort | schedulingMode | effortUnit | duration | baselineStartDate | name | id | durationUnit | baselineEndDate | startDate | manuallyScheduled | calendar | rollup | leaf |
| --- | --- | --- | --- | --- | --- | --- | --- | --- | --- | --- | --- | --- | --- | --- | --- | --- |
| 5.0d | 0 | 2021-01-29T18:00:00 | 0 | Normal | h | 5 | 2021-01-25T08:00:00 | · · · · · · ELEVACION | 20653 | d | 2021-01-29T18:00:00 | 2021-01-25T08:00:00 | True | 18 | True |  |
| 3.0d | 0 | 2021-01-27T18:00:00 | 0 | FixedDuration | h | 3 | 2021-01-25T08:00:00 | · · · · · · · FIERRO | 20654 | d | 2021-01-27T18:00:00 | 2021-01-25T08:00:00 | True | 18 |  | True |
| 3.0d | 0 | 2021-01-28T18:00:00 | 0 | FixedDuration | h | 3 | 2021-01-26T08:00:00 | · · · · · · · MOLDAJE | 20655 | d | 2021-01-28T18:00:00 | 2021-01-26T08:00:00 | True | 18 |  | True |
| 3.0d | 0 | 2021-01-29T18:00:00 | 0 | FixedDuration | h | 3 | 2021-01-27T08:00:00 | · · · · · · · HORMIGON | 20656 | d | 2021-01-29T18:00:00 | 2021-01-27T08:00:00 | True | 18 |  | True |
| 7.0d | 0 | 2021-02-17T18:00:00 | 0 | Normal | h | 7 | 2021-02-09T08:00:00 | · · · · · · LOSA | 20657 | d | 2021-02-17T18:00:00 | 2021-02-09T08:00:00 | True | 18 | True |  |
| 3.0d | 0 | 2021-02-11T18:00:00 | 0 | FixedDuration | h | 3 | 2021-02-09T08:00:00 | · · · · · · · MOLDAJE VIGAS | 20658 | d | 2021-02-11T18:00:00 | 2021-02-09T08:00:00 | True | 18 |  | True |
| 3.0d | 0 | 2021-02-12T18:00:00 | 0 | FixedDuration | h | 3 | 2021-02-10T08:00:00 | · · · · · · · ENFIERRADURA VIGA | 20659 | d | 2021-02-12T18:00:00 | 2021-02-10T08:00:00 | True | 18 |  | True |
| 3.0d | 0 | 2021-02-15T18:00:00 | 0 | FixedDuration | h | 3 | 2021-02-11T08:00:00 | · · · · · · · MOLDAJE LOSA | 20660 | d | 2021-02-15T18:00:00 | 2021-02-11T08:00:00 | True | 18 |  | True |
| 3.0d | 0 | 2021-02-16T18:00:00 | 0 | FixedDuration | h | 3 | 2021-02-12T08:00:00 | · · · · · · · ENFIERRADURA LOSA | 20661 | d | 2021-02-16T18:00:00 | 2021-02-12T08:00:00 | True | 18 |  | True |
| 3.0d | 0 | 2021-02-17T18:00:00 | 0 | FixedDuration | h | 3 | 2021-02-15T08:00:00 | · · · · · · · HORMIG�N LOSA | 20662 | d | 2021-02-17T18:00:00 | 2021-02-15T08:00:00 | True | 18 |  | True |
| 18.0d | 0 | 2021-02-22T18:00:00 | 0 | Normal | h | 18 | 2021-01-28T08:00:00 | · · · · · CICLO 5 | 20663 | d | 2021-02-22T18:00:00 | 2021-01-28T08:00:00 | True | 18 | True |  |
| 5.0d | 0 | 2021-02-03T18:00:00 | 0 | Normal | h | 5 | 2021-01-28T08:00:00 | · · · · · · ELEVACION | 20664 | d | 2021-02-03T18:00:00 | 2021-01-28T08:00:00 | True | 18 | True |  |
| 3.0d | 0 | 2021-02-01T18:00:00 | 0 | FixedDuration | h | 3 | 2021-01-28T08:00:00 | · · · · · · · FIERRO | 20665 | d | 2021-02-01T18:00:00 | 2021-01-28T08:00:00 | True | 18 |  | True |
| 3.0d | 0 | 2021-02-02T18:00:00 | 0 | FixedDuration | h | 3 | 2021-01-29T08:00:00 | · · · · · · · MOLDAJE | 20666 | d | 2021-02-02T18:00:00 | 2021-01-29T08:00:00 | True | 18 |  | True |
| 3.0d | 0 | 2021-02-03T18:00:00 | 0 | FixedDuration | h | 3 | 2021-02-01T08:00:00 | · · · · · · · HORMIGON | 20667 | d | 2021-02-03T18:00:00 | 2021-02-01T08:00:00 | True | 18 |  | True |
| 7.0d | 0 | 2021-02-22T18:00:00 | 0 | Normal | h | 7 | 2021-02-12T08:00:00 | · · · · · · LOSA | 20668 | d | 2021-02-22T18:00:00 | 2021-02-12T08:00:00 | True | 18 | True |  |
| 3.0d | 0 | 2021-02-16T18:00:00 | 0 | FixedDuration | h | 3 | 2021-02-12T08:00:00 | · · · · · · · MOLDAJE VIGAS | 20669 | d | 2021-02-16T18:00:00 | 2021-02-12T08:00:00 | True | 18 |  | True |
| 3.0d | 0 | 2021-02-17T18:00:00 | 0 | FixedDuration | h | 3 | 2021-02-15T08:00:00 | · · · · · · · ENFIERRADURA VIGA | 20670 | d | 2021-02-17T18:00:00 | 2021-02-15T08:00:00 | True | 18 |  | True |
| 3.0d | 0 | 2021-02-18T18:00:00 | 0 | FixedDuration | h | 3 | 2021-02-16T08:00:00 | · · · · · · · MOLDAJE LOSA | 20671 | d | 2021-02-18T18:00:00 | 2021-02-16T08:00:00 | True | 18 |  | True |
| 3.0d | 0 | 2021-02-19T18:00:00 | 0 | FixedDuration | h | 3 | 2021-02-17T08:00:00 | · · · · · · · ENFIERRADURA LOSA | 20672 | d | 2021-02-19T18:00:00 | 2021-02-17T08:00:00 | True | 18 |  | True |
| 3.0d | 0 | 2021-02-22T18:00:00 | 0 | FixedDuration | h | 3 | 2021-02-18T08:00:00 | · · · · · · · HORMIG�N LOSA | 20673 | d | 2021-02-22T18:00:00 | 2021-02-18T08:00:00 | True | 18 |  | True |
| 18.0d | 0 | 2021-02-25T18:00:00 | 0 | Normal | h | 18 | 2021-02-02T08:00:00 | · · · · · CICLO 6 | 20674 | d | 2021-02-25T18:00:00 | 2021-02-02T08:00:00 | True | 18 | True |  |
| 5.0d | 0 | 2021-02-08T18:00:00 | 0 | Normal | h | 5 | 2021-02-02T08:00:00 | · · · · · · ELEVACION | 20675 | d | 2021-02-08T18:00:00 | 2021-02-02T08:00:00 | True | 18 | True |  |
| 3.0d | 0 | 2021-02-04T18:00:00 | 0 | FixedDuration | h | 3 | 2021-02-02T08:00:00 | · · · · · · · FIERRO | 20676 | d | 2021-02-04T18:00:00 | 2021-02-02T08:00:00 | True | 18 |  | True |
| 3.0d | 0 | 2021-02-05T18:00:00 | 0 | FixedDuration | h | 3 | 2021-02-03T08:00:00 | · · · · · · · MOLDAJE | 20677 | d | 2021-02-05T18:00:00 | 2021-02-03T08:00:00 | True | 18 |  | True |
| 3.0d | 0 | 2021-02-08T18:00:00 | 0 | FixedDuration | h | 3 | 2021-02-04T08:00:00 | · · · · · · · HORMIGON | 20678 | d | 2021-02-08T18:00:00 | 2021-02-04T08:00:00 | True | 18 |  | True |
| 7.0d | 0 | 2021-02-25T18:00:00 | 0 | Normal | h | 7 | 2021-02-17T08:00:00 | · · · · · · LOSA | 20679 | d | 2021-02-25T18:00:00 | 2021-02-17T08:00:00 | True | 18 | True |  |
| 3.0d | 0 | 2021-02-19T18:00:00 | 0 | FixedDuration | h | 3 | 2021-02-17T08:00:00 | · · · · · · · MOLDAJE VIGAS | 20680 | d | 2021-02-19T18:00:00 | 2021-02-17T08:00:00 | True | 18 |  | True |
| 3.0d | 0 | 2021-02-22T18:00:00 | 0 | FixedDuration | h | 3 | 2021-02-18T08:00:00 | · · · · · · · ENFIERRADURA VIGA | 20681 | d | 2021-02-22T18:00:00 | 2021-02-18T08:00:00 | True | 18 |  | True |
| 3.0d | 0 | 2021-02-23T18:00:00 | 0 | FixedDuration | h | 3 | 2021-02-19T08:00:00 | · · · · · · · MOLDAJE LOSA | 20682 | d | 2021-02-23T18:00:00 | 2021-02-19T08:00:00 | True | 18 |  | True |
| 3.0d | 0 | 2021-02-24T18:00:00 | 0 | FixedDuration | h | 3 | 2021-02-22T08:00:00 | · · · · · · · ENFIERRADURA LOSA | 20683 | d | 2021-02-24T18:00:00 | 2021-02-22T08:00:00 | True | 18 |  | True |
| 3.0d | 0 | 2021-02-25T18:00:00 | 0 | FixedDuration | h | 3 | 2021-02-23T08:00:00 | · · · · · · · HORMIG�N LOSA | 20684 | d | 2021-02-25T18:00:00 | 2021-02-23T08:00:00 | True | 18 |  | True |
| 33.0d | 0 | 2021-03-23T18:00:00 | 0 | Normal | h | 33 | 2021-02-05T08:00:00 | · · · · SUBTERR�NEO 1 | 20685 | d | 2021-03-23T18:00:00 | 2021-02-05T08:00:00 | True | 18 | True |  |
| 18.0d | 0 | 2021-03-02T18:00:00 | 0 | Normal | h | 18 | 2021-02-05T08:00:00 | · · · · · CICLO 1 | 20686 | d | 2021-03-02T18:00:00 | 2021-02-05T08:00:00 | True | 18 | True |  |
| 5.0d | 0 | 2021-02-11T18:00:00 | 0 | Normal | h | 5 | 2021-02-05T08:00:00 | · · · · · · ELEVACION | 20687 | d | 2021-02-11T18:00:00 | 2021-02-05T08:00:00 | True | 18 | True |  |
| 3.0d | 0 | 2021-02-09T18:00:00 | 0 | FixedDuration | h | 3 | 2021-02-05T08:00:00 | · · · · · · · FIERRO | 20688 | d | 2021-02-09T18:00:00 | 2021-02-05T08:00:00 | True | 18 |  | True |
| 3.0d | 0 | 2021-02-10T18:00:00 | 0 | FixedDuration | h | 3 | 2021-02-08T08:00:00 | · · · · · · · MOLDAJE | 20689 | d | 2021-02-10T18:00:00 | 2021-02-08T08:00:00 | True | 18 |  | True |
| 3.0d | 0 | 2021-02-11T18:00:00 | 0 | FixedDuration | h | 3 | 2021-02-09T08:00:00 | · · · · · · · HORMIGON | 20690 | d | 2021-02-11T18:00:00 | 2021-02-09T08:00:00 | True | 18 |  | True |
| 7.0d | 0 | 2021-03-02T18:00:00 | 0 | Normal | h | 7 | 2021-02-22T08:00:00 | · · · · · · LOSA | 20691 | d | 2021-03-02T18:00:00 | 2021-02-22T08:00:00 | True | 18 | True |  |
| 3.0d | 0 | 2021-02-24T18:00:00 | 0 | FixedDuration | h | 3 | 2021-02-22T08:00:00 | · · · · · · · MOLDAJE VIGAS | 20692 | d | 2021-02-24T18:00:00 | 2021-02-22T08:00:00 | True | 18 |  | True |
| 3.0d | 0 | 2021-02-25T18:00:00 | 0 | FixedDuration | h | 3 | 2021-02-23T08:00:00 | · · · · · · · ENFIERRADURA VIGA | 20693 | d | 2021-02-25T18:00:00 | 2021-02-23T08:00:00 | True | 18 |  | True |
| 3.0d | 0 | 2021-02-26T18:00:00 | 0 | FixedDuration | h | 3 | 2021-02-24T08:00:00 | · · · · · · · MOLDAJE LOSA | 20694 | d | 2021-02-26T18:00:00 | 2021-02-24T08:00:00 | True | 18 |  | True |
| 3.0d | 0 | 2021-03-01T18:00:00 | 0 | FixedDuration | h | 3 | 2021-02-25T08:00:00 | · · · · · · · ENFIERRADURA LOSA | 20695 | d | 2021-03-01T18:00:00 | 2021-02-25T08:00:00 | True | 18 |  | True |
| 3.0d | 0 | 2021-03-02T18:00:00 | 0 | FixedDuration | h | 3 | 2021-02-26T08:00:00 | · · · · · · · HORMIG�N LOSA | 20696 | d | 2021-03-02T18:00:00 | 2021-02-26T08:00:00 | True | 18 |  | True |
| 18.0d | 0 | 2021-03-05T18:00:00 | 0 | Normal | h | 18 | 2021-02-10T08:00:00 | · · · · · CICLO 2 | 20697 | d | 2021-03-05T18:00:00 | 2021-02-10T08:00:00 | True | 18 | True |  |
| 5.0d | 0 | 2021-02-16T18:00:00 | 0 | Normal | h | 5 | 2021-02-10T08:00:00 | · · · · · · ELEVACION | 20698 | d | 2021-02-16T18:00:00 | 2021-02-10T08:00:00 | True | 18 | True |  |
| 3.0d | 0 | 2021-02-12T18:00:00 | 0 | FixedDuration | h | 3 | 2021-02-10T08:00:00 | · · · · · · · FIERRO | 20699 | d | 2021-02-12T18:00:00 | 2021-02-10T08:00:00 | True | 18 |  | True |
| 3.0d | 0 | 2021-02-15T18:00:00 | 0 | FixedDuration | h | 3 | 2021-02-11T08:00:00 | · · · · · · · MOLDAJE | 20700 | d | 2021-02-15T18:00:00 | 2021-02-11T08:00:00 | True | 18 |  | True |
| 3.0d | 0 | 2021-02-16T18:00:00 | 0 | FixedDuration | h | 3 | 2021-02-12T08:00:00 | · · · · · · · HORMIGON | 20701 | d | 2021-02-16T18:00:00 | 2021-02-12T08:00:00 | True | 18 |  | True |
| 7.0d | 0 | 2021-03-05T18:00:00 | 0 | Normal | h | 7 | 2021-02-25T08:00:00 | · · · · · · LOSA | 20702 | d | 2021-03-05T18:00:00 | 2021-02-25T08:00:00 | True | 18 | True |  |
| 3.0d | 0 | 2021-03-01T18:00:00 | 0 | FixedDuration | h | 3 | 2021-02-25T08:00:00 | · · · · · · · MOLDAJE VIGAS | 20703 | d | 2021-03-01T18:00:00 | 2021-02-25T08:00:00 | True | 18 |  | True |
| 3.0d | 0 | 2021-03-02T18:00:00 | 0 | FixedDuration | h | 3 | 2021-02-26T08:00:00 | · · · · · · · ENFIERRADURA VIGA | 20704 | d | 2021-03-02T18:00:00 | 2021-02-26T08:00:00 | True | 18 |  | True |
| 3.0d | 0 | 2021-03-03T18:00:00 | 0 | FixedDuration | h | 3 | 2021-03-01T08:00:00 | · · · · · · · MOLDAJE LOSA | 20705 | d | 2021-03-03T18:00:00 | 2021-03-01T08:00:00 | True | 18 |  | True |
| 3.0d | 0 | 2021-03-04T18:00:00 | 0 | FixedDuration | h | 3 | 2021-03-02T08:00:00 | · · · · · · · ENFIERRADURA LOSA | 20706 | d | 2021-03-04T18:00:00 | 2021-03-02T08:00:00 | True | 18 |  | True |
| 3.0d | 0 | 2021-03-05T18:00:00 | 0 | FixedDuration | h | 3 | 2021-03-03T08:00:00 | · · · · · · · HORMIG�N LOSA | 20707 | d | 2021-03-05T18:00:00 | 2021-03-03T08:00:00 | True | 18 |  | True |
| 18.0d | 0 | 2021-03-10T18:00:00 | 0 | Normal | h | 18 | 2021-02-15T08:00:00 | · · · · · CICLO 3 | 20708 | d | 2021-03-10T18:00:00 | 2021-02-15T08:00:00 | True | 18 | True |  |
| 5.0d | 0 | 2021-02-19T18:00:00 | 0 | Normal | h | 5 | 2021-02-15T08:00:00 | · · · · · · ELEVACION | 20709 | d | 2021-02-19T18:00:00 | 2021-02-15T08:00:00 | True | 18 | True |  |
| 3.0d | 0 | 2021-02-17T18:00:00 | 0 | FixedDuration | h | 3 | 2021-02-15T08:00:00 | · · · · · · · FIERRO | 20710 | d | 2021-02-17T18:00:00 | 2021-02-15T08:00:00 | True | 18 |  | True |
| 3.0d | 0 | 2021-02-18T18:00:00 | 0 | FixedDuration | h | 3 | 2021-02-16T08:00:00 | · · · · · · · MOLDAJE | 20711 | d | 2021-02-18T18:00:00 | 2021-02-16T08:00:00 | True | 18 |  | True |
| 3.0d | 0 | 2021-02-19T18:00:00 | 0 | FixedDuration | h | 3 | 2021-02-17T08:00:00 | · · · · · · · HORMIGON | 20712 | d | 2021-02-19T18:00:00 | 2021-02-17T08:00:00 | True | 18 |  | True |
| 7.0d | 0 | 2021-03-10T18:00:00 | 0 | Normal | h | 7 | 2021-03-02T08:00:00 | · · · · · · LOSA | 20713 | d | 2021-03-10T18:00:00 | 2021-03-02T08:00:00 | True | 18 | True |  |
| 3.0d | 0 | 2021-03-04T18:00:00 | 0 | FixedDuration | h | 3 | 2021-03-02T08:00:00 | · · · · · · · MOLDAJE VIGAS | 20714 | d | 2021-03-04T18:00:00 | 2021-03-02T08:00:00 | True | 18 |  | True |
| 3.0d | 0 | 2021-03-05T18:00:00 | 0 | FixedDuration | h | 3 | 2021-03-03T08:00:00 | · · · · · · · ENFIERRADURA VIGA | 20715 | d | 2021-03-05T18:00:00 | 2021-03-03T08:00:00 | True | 18 |  | True |
| 3.0d | 0 | 2021-03-08T18:00:00 | 0 | FixedDuration | h | 3 | 2021-03-04T08:00:00 | · · · · · · · MOLDAJE LOSA | 20716 | d | 2021-03-08T18:00:00 | 2021-03-04T08:00:00 | True | 18 |  | True |
| 3.0d | 0 | 2021-03-09T18:00:00 | 0 | FixedDuration | h | 3 | 2021-03-05T08:00:00 | · · · · · · · ENFIERRADURA LOSA | 20717 | d | 2021-03-09T18:00:00 | 2021-03-05T08:00:00 | True | 18 |  | True |
| 3.0d | 0 | 2021-03-10T18:00:00 | 0 | FixedDuration | h | 3 | 2021-03-08T08:00:00 | · · · · · · · HORMIG�N LOSA | 20718 | d | 2021-03-10T18:00:00 | 2021-03-08T08:00:00 | True | 18 |  | True |
| 18.0d | 0 | 2021-03-15T18:00:00 | 0 | Normal | h | 18 | 2021-02-18T08:00:00 | · · · · · CICLO 4 | 20719 | d | 2021-03-15T18:00:00 | 2021-02-18T08:00:00 | True | 18 | True |  |
| 5.0d | 0 | 2021-02-24T18:00:00 | 0 | Normal | h | 5 | 2021-02-18T08:00:00 | · · · · · · ELEVACION | 20720 | d | 2021-02-24T18:00:00 | 2021-02-18T08:00:00 | True | 18 | True |  |
| 3.0d | 0 | 2021-02-22T18:00:00 | 0 | FixedDuration | h | 3 | 2021-02-18T08:00:00 | · · · · · · · FIERRO | 20721 | d | 2021-02-22T18:00:00 | 2021-02-18T08:00:00 | True | 18 |  | True |
| 3.0d | 0 | 2021-02-23T18:00:00 | 0 | FixedDuration | h | 3 | 2021-02-19T08:00:00 | · · · · · · · MOLDAJE | 20722 | d | 2021-02-23T18:00:00 | 2021-02-19T08:00:00 | True | 18 |  | True |

| baselineDuration | percentDone | endDate | effort | schedulingMode | effortUnit | duration | baselineStartDate | name | id | durationUnit | baselineEndDate | startDate | manuallyScheduled | calendar | rollup | leaf |
| --- | --- | --- | --- | --- | --- | --- | --- | --- | --- | --- | --- | --- | --- | --- | --- | --- |
| 3.0d | 0 | 2021-02-24T18:00:00 | 0 | FixedDuration | h | 3 | 2021-02-22T08:00:00 | · · · · · · · HORMIGON | 20723 | d | 2021-02-24T18:00:00 | 2021-02-22T08:00:00 | True | 18 |  | True |
| 7.0d | 0 | 2021-03-15T18:00:00 | 0 | Normal | h | 7 | 2021-03-05T08:00:00 | · · · · · · LOSA | 20724 | d | 2021-03-15T18:00:00 | 2021-03-05T08:00:00 | True | 18 | True |  |
| 3.0d | 0 | 2021-03-09T18:00:00 | 0 | FixedDuration | h | 3 | 2021-03-05T08:00:00 | · · · · · · · MOLDAJE VIGAS | 20725 | d | 2021-03-09T18:00:00 | 2021-03-05T08:00:00 | True | 18 |  | True |
| 3.0d | 0 | 2021-03-10T18:00:00 | 0 | FixedDuration | h | 3 | 2021-03-08T08:00:00 | · · · · · · · ENFIERRADURA VIGA | 20726 | d | 2021-03-10T18:00:00 | 2021-03-08T08:00:00 | True | 18 |  | True |
| 3.0d | 0 | 2021-03-11T18:00:00 | 0 | FixedDuration | h | 3 | 2021-03-09T08:00:00 | · · · · · · · MOLDAJE LOSA | 20727 | d | 2021-03-11T18:00:00 | 2021-03-09T08:00:00 | True | 18 |  | True |
| 3.0d | 0 | 2021-03-12T18:00:00 | 0 | FixedDuration | h | 3 | 2021-03-10T08:00:00 | · · · · · · · ENFIERRADURA LOSA | 20728 | d | 2021-03-12T18:00:00 | 2021-03-10T08:00:00 | True | 18 |  | True |
| 3.0d | 0 | 2021-03-15T18:00:00 | 0 | FixedDuration | h | 3 | 2021-03-11T08:00:00 | · · · · · · · HORMIG�N LOSA | 20729 | d | 2021-03-15T18:00:00 | 2021-03-11T08:00:00 | True | 18 |  | True |
| 18.0d | 0 | 2021-03-18T18:00:00 | 0 | Normal | h | 18 | 2021-02-23T08:00:00 | · · · · · CICLO 5 | 20730 | d | 2021-03-18T18:00:00 | 2021-02-23T08:00:00 | True | 18 | True |  |
| 5.0d | 0 | 2021-03-01T18:00:00 | 0 | Normal | h | 5 | 2021-02-23T08:00:00 | · · · · · · ELEVACION | 20731 | d | 2021-03-01T18:00:00 | 2021-02-23T08:00:00 | True | 18 | True |  |
| 3.0d | 0 | 2021-02-25T18:00:00 | 0 | FixedDuration | h | 3 | 2021-02-23T08:00:00 | · · · · · · · FIERRO | 20732 | d | 2021-02-25T18:00:00 | 2021-02-23T08:00:00 | True | 18 |  | True |
| 3.0d | 0 | 2021-02-26T18:00:00 | 0 | FixedDuration | h | 3 | 2021-02-24T08:00:00 | · · · · · · · MOLDAJE | 20733 | d | 2021-02-26T18:00:00 | 2021-02-24T08:00:00 | True | 18 |  | True |
| 3.0d | 0 | 2021-03-01T18:00:00 | 0 | FixedDuration | h | 3 | 2021-02-25T08:00:00 | · · · · · · · HORMIGON | 20734 | d | 2021-03-01T18:00:00 | 2021-02-25T08:00:00 | True | 18 |  | True |
| 7.0d | 0 | 2021-03-18T18:00:00 | 0 | Normal | h | 7 | 2021-03-10T08:00:00 | · · · · · · LOSA | 20735 | d | 2021-03-18T18:00:00 | 2021-03-10T08:00:00 | True | 18 | True |  |
| 3.0d | 0 | 2021-03-12T18:00:00 | 0 | FixedDuration | h | 3 | 2021-03-10T08:00:00 | · · · · · · · MOLDAJE VIGAS | 20736 | d | 2021-03-12T18:00:00 | 2021-03-10T08:00:00 | True | 18 |  | True |
| 3.0d | 0 | 2021-03-15T18:00:00 | 0 | FixedDuration | h | 3 | 2021-03-11T08:00:00 | · · · · · · · ENFIERRADURA VIGA | 20737 | d | 2021-03-15T18:00:00 | 2021-03-11T08:00:00 | True | 18 |  | True |
| 3.0d | 0 | 2021-03-16T18:00:00 | 0 | FixedDuration | h | 3 | 2021-03-12T08:00:00 | · · · · · · · MOLDAJE LOSA | 20738 | d | 2021-03-16T18:00:00 | 2021-03-12T08:00:00 | True | 18 |  | True |
| 3.0d | 0 | 2021-03-17T18:00:00 | 0 | FixedDuration | h | 3 | 2021-03-15T08:00:00 | · · · · · · · ENFIERRADURA LOSA | 20739 | d | 2021-03-17T18:00:00 | 2021-03-15T08:00:00 | True | 18 |  | True |
| 3.0d | 0 | 2021-03-18T18:00:00 | 0 | FixedDuration | h | 3 | 2021-03-16T08:00:00 | · · · · · · · HORMIG�N LOSA | 20740 | d | 2021-03-18T18:00:00 | 2021-03-16T08:00:00 | True | 18 |  | True |
| 18.0d | 0 | 2021-03-23T18:00:00 | 0 | Normal | h | 18 | 2021-02-26T08:00:00 | · · · · · CICLO 6 | 20741 | d | 2021-03-23T18:00:00 | 2021-02-26T08:00:00 | True | 18 | True |  |
| 5.0d | 0 | 2021-03-04T18:00:00 | 0 | Normal | h | 5 | 2021-02-26T08:00:00 | · · · · · · ELEVACION | 20742 | d | 2021-03-04T18:00:00 | 2021-02-26T08:00:00 | True | 18 | True |  |
| 3.0d | 0 | 2021-03-02T18:00:00 | 0 | FixedDuration | h | 3 | 2021-02-26T08:00:00 | · · · · · · · FIERRO | 20743 | d | 2021-03-02T18:00:00 | 2021-02-26T08:00:00 | True | 18 |  | True |
| 3.0d | 0 | 2021-03-03T18:00:00 | 0 | FixedDuration | h | 3 | 2021-03-01T08:00:00 | · · · · · · · MOLDAJE | 20744 | d | 2021-03-03T18:00:00 | 2021-03-01T08:00:00 | True | 18 |  | True |
| 3.0d | 0 | 2021-03-04T18:00:00 | 0 | FixedDuration | h | 3 | 2021-03-02T08:00:00 | · · · · · · · HORMIGON | 20745 | d | 2021-03-04T18:00:00 | 2021-03-02T08:00:00 | True | 18 |  | True |
| 7.0d | 0 | 2021-03-23T18:00:00 | 0 | Normal | h | 7 | 2021-03-15T08:00:00 | · · · · · · LOSA | 20746 | d | 2021-03-23T18:00:00 | 2021-03-15T08:00:00 | True | 18 | True |  |
| 3.0d | 0 | 2021-03-17T18:00:00 | 0 | FixedDuration | h | 3 | 2021-03-15T08:00:00 | · · · · · · · MOLDAJE VIGAS | 20747 | d | 2021-03-17T18:00:00 | 2021-03-15T08:00:00 | True | 18 |  | True |
| 3.0d | 0 | 2021-03-18T18:00:00 | 0 | FixedDuration | h | 3 | 2021-03-16T08:00:00 | · · · · · · · ENFIERRADURA VIGA | 20748 | d | 2021-03-18T18:00:00 | 2021-03-16T08:00:00 | True | 18 |  | True |
| 3.0d | 0 | 2021-03-19T18:00:00 | 0 | FixedDuration | h | 3 | 2021-03-17T08:00:00 | · · · · · · · MOLDAJE LOSA | 20749 | d | 2021-03-19T18:00:00 | 2021-03-17T08:00:00 | True | 18 |  | True |
| 3.0d | 0 | 2021-03-22T18:00:00 | 0 | FixedDuration | h | 3 | 2021-03-18T08:00:00 | · · · · · · · ENFIERRADURA LOSA | 20750 | d | 2021-03-22T18:00:00 | 2021-03-18T08:00:00 | True | 18 |  | True |
| 3.0d | 0 | 2021-03-23T18:00:00 | 0 | FixedDuration | h | 3 | 2021-03-19T08:00:00 | · · · · · · · HORMIG�N LOSA | 20751 | d | 2021-03-23T18:00:00 | 2021-03-19T08:00:00 | True | 18 |  | True |
| 159.0d | 0 | 2021-10-27T18:00:00 | 0 | Normal | h | 159 | 2021-03-11T08:00:00 | · · · SOBRE COTA CERO | 18631 | d | 2021-10-27T18:00:00 | 2021-03-11T08:00:00 | True | 18 | True |  |
| 17.0d | 0 | 2021-04-05T18:00:00 | 0 | Normal | h | 17 | 2021-03-11T08:00:00 | · · · · PISO 1 | 18571 | d | 2021-04-05T18:00:00 | 2021-03-11T08:00:00 | True | 18 | True |  |
| 8.0d | 0 | 2021-03-22T18:00:00 | 0 | Normal | h | 8 | 2021-03-11T08:00:00 | · · · · · CICLO 1 | 19549 | d | 2021-03-22T18:00:00 | 2021-03-11T08:00:00 | True | 18 | True |  |
| 5.0d | 0 | 2021-03-17T18:00:00 | 0 | Normal | h | 5 | 2021-03-11T08:00:00 | · · · · · · ELEVACION | 19536 | d | 2021-03-17T18:00:00 | 2021-03-11T08:00:00 | True | 18 | True |  |
| 3.0d | 0 | 2021-03-15T18:00:00 | 0 | FixedDuration | h | 3 | 2021-03-11T08:00:00 | · · · · · · · FIERRO | 19537 | d | 2021-03-15T18:00:00 | 2021-03-11T08:00:00 | True | 18 |  | True |
| 3.0d | 0 | 2021-03-16T18:00:00 | 0 | FixedDuration | h | 3 | 2021-03-12T08:00:00 | · · · · · · · MOLDAJE | 19538 | d | 2021-03-16T18:00:00 | 2021-03-12T08:00:00 | True | 18 |  | True |
| 3.0d | 0 | 2021-03-16T18:00:00 | 0 | FixedDuration | h | 3 | 2021-03-12T08:00:00 | · · · · · · · HORMIGON | 19539 | d | 2021-03-16T18:00:00 | 2021-03-12T08:00:00 | True | 18 |  | True |
| 3.0d | 0 | 2021-03-17T18:00:00 | 0 | FixedDuration | h | 3 | 2021-03-15T08:00:00 | · · · · · · · DESCIMBRE | 19548 | d | 2021-03-17T18:00:00 | 2021-03-15T08:00:00 | True | 18 |  | True |
| 5.0d | 0 | 2021-03-22T18:00:00 | 0 | Normal | h | 5 | 2021-03-16T08:00:00 | · · · · · · LOSA | 19542 | d | 2021-03-22T18:00:00 | 2021-03-16T08:00:00 | True | 18 | True |  |
| 3.0d | 0 | 2021-03-18T18:00:00 | 0 | FixedDuration | h | 3 | 2021-03-16T08:00:00 | · · · · · · · MOLDAJE | 19543 | d | 2021-03-18T18:00:00 | 2021-03-16T08:00:00 | True | 18 |  | True |
| 3.0d | 0 | 2021-03-19T18:00:00 | 0 | FixedDuration | h | 3 | 2021-03-17T08:00:00 | · · · · · · · FIERRO | 19544 | d | 2021-03-19T18:00:00 | 2021-03-17T08:00:00 | True | 18 |  | True |
| 1.0d | 0 | 2021-03-22T18:00:00 | 0 | FixedDuration | h | 1 | 2021-03-22T08:00:00 | · · · · · · · HORMIGON | 19545 | d | 2021-03-22T18:00:00 | 2021-03-22T08:00:00 | True | 18 |  | True |
| 8.0d | 0 | 2021-03-25T18:00:00 | 0 | Normal | h | 8 | 2021-03-16T08:00:00 | · · · · · CICLO 2 | 19550 | d | 2021-03-25T18:00:00 | 2021-03-16T08:00:00 | True | 18 | True |  |
| 5.0d | 0 | 2021-03-22T18:00:00 | 0 | Normal | h | 5 | 2021-03-16T08:00:00 | · · · · · · ELEVACION | 19551 | d | 2021-03-22T18:00:00 | 2021-03-16T08:00:00 | True | 18 | True |  |
| 3.0d | 0 | 2021-03-18T18:00:00 | 0 | FixedDuration | h | 3 | 2021-03-16T08:00:00 | · · · · · · · FIERRO | 19552 | d | 2021-03-18T18:00:00 | 2021-03-16T08:00:00 | True | 18 |  | True |
| 3.0d | 0 | 2021-03-19T18:00:00 | 0 | FixedDuration | h | 3 | 2021-03-17T08:00:00 | · · · · · · · MOLDAJE | 19553 | d | 2021-03-19T18:00:00 | 2021-03-17T08:00:00 | True | 18 |  | True |
| 3.0d | 0 | 2021-03-19T18:00:00 | 0 | FixedDuration | h | 3 | 2021-03-17T08:00:00 | · · · · · · · HORMIGON | 19554 | d | 2021-03-19T18:00:00 | 2021-03-17T08:00:00 | True | 18 |  | True |
| 3.0d | 0 | 2021-03-22T18:00:00 | 0 | FixedDuration | h | 3 | 2021-03-18T08:00:00 | · · · · · · · DESCIMBRE | 19555 | d | 2021-03-22T18:00:00 | 2021-03-18T08:00:00 | True | 18 |  | True |
| 5.0d | 0 | 2021-03-25T18:00:00 | 0 | Normal | h | 5 | 2021-03-19T08:00:00 | · · · · · · LOSA | 19556 | d | 2021-03-25T18:00:00 | 2021-03-19T08:00:00 | True | 18 | True |  |
| 3.0d | 0 | 2021-03-23T18:00:00 | 0 | FixedDuration | h | 3 | 2021-03-19T08:00:00 | · · · · · · · MOLDAJE | 19557 | d | 2021-03-23T18:00:00 | 2021-03-19T08:00:00 | True | 18 |  | True |
| 3.0d | 0 | 2021-03-24T18:00:00 | 0 | FixedDuration | h | 3 | 2021-03-22T08:00:00 | · · · · · · · FIERRO | 19558 | d | 2021-03-24T18:00:00 | 2021-03-22T08:00:00 | True | 18 |  | True |
| 1.0d | 0 | 2021-03-25T18:00:00 | 0 | FixedDuration | h | 1 | 2021-03-25T08:00:00 | · · · · · · · HORMIGON | 19559 | d | 2021-03-25T18:00:00 | 2021-03-25T08:00:00 | True | 18 |  | True |
| 8.0d | 0 | 2021-03-30T18:00:00 | 0 | Normal | h | 8 | 2021-03-19T08:00:00 | · · · · · CICLO 3 | 19560 | d | 2021-03-30T18:00:00 | 2021-03-19T08:00:00 | True | 18 | True |  |
| 5.0d | 0 | 2021-03-25T18:00:00 | 0 | Normal | h | 5 | 2021-03-19T08:00:00 | · · · · · · ELEVACION | 19561 | d | 2021-03-25T18:00:00 | 2021-03-19T08:00:00 | True | 18 | True |  |
| 3.0d | 0 | 2021-03-23T18:00:00 | 0 | FixedDuration | h | 3 | 2021-03-19T08:00:00 | · · · · · · · FIERRO | 19562 | d | 2021-03-23T18:00:00 | 2021-03-19T08:00:00 | True | 18 |  | True |
| 3.0d | 0 | 2021-03-24T18:00:00 | 0 | FixedDuration | h | 3 | 2021-03-22T08:00:00 | · · · · · · · MOLDAJE | 19563 | d | 2021-03-24T18:00:00 | 2021-03-22T08:00:00 | True | 18 |  | True |
| 3.0d | 0 | 2021-03-24T18:00:00 | 0 | FixedDuration | h | 3 | 2021-03-22T08:00:00 | · · · · · · · HORMIGON | 19564 | d | 2021-03-24T18:00:00 | 2021-03-22T08:00:00 | True | 18 |  | True |
| 3.0d | 0 | 2021-03-25T18:00:00 | 0 | FixedDuration | h | 3 | 2021-03-23T08:00:00 | · · · · · · · DESCIMBRE | 19565 | d | 2021-03-25T18:00:00 | 2021-03-23T08:00:00 | True | 18 |  | True |
| 5.0d | 0 | 2021-03-30T18:00:00 | 0 | Normal | h | 5 | 2021-03-24T08:00:00 | · · · · · · LOSA | 19566 | d | 2021-03-30T18:00:00 | 2021-03-24T08:00:00 | True | 18 | True |  |
| 3.0d | 0 | 2021-03-26T18:00:00 | 0 | FixedDuration | h | 3 | 2021-03-24T08:00:00 | · · · · · · · MOLDAJE | 19567 | d | 2021-03-26T18:00:00 | 2021-03-24T08:00:00 | True | 18 |  | True |
| 3.0d | 0 | 2021-03-29T18:00:00 | 0 | FixedDuration | h | 3 | 2021-03-25T08:00:00 | · · · · · · · FIERRO | 19568 | d | 2021-03-29T18:00:00 | 2021-03-25T08:00:00 | True | 18 |  | True |
| 1.0d | 0 | 2021-03-30T18:00:00 | 0 | FixedDuration | h | 1 | 2021-03-30T08:00:00 | · · · · · · · HORMIGON | 19569 | d | 2021-03-30T18:00:00 | 2021-03-30T08:00:00 | True | 18 |  | True |
| 8.0d | 0 | 2021-04-05T18:00:00 | 0 | Normal | h | 8 | 2021-03-24T08:00:00 | · · · · · CICLO 4 | 19570 | d | 2021-04-05T18:00:00 | 2021-03-24T08:00:00 | True | 18 | True |  |
| 5.0d | 0 | 2021-03-30T18:00:00 | 0 | Normal | h | 5 | 2021-03-24T08:00:00 | · · · · · · ELEVACION | 19571 | d | 2021-03-30T18:00:00 | 2021-03-24T08:00:00 | True | 18 | True |  |
| 3.0d | 0 | 2021-03-26T18:00:00 | 0 | FixedDuration | h | 3 | 2021-03-24T08:00:00 | · · · · · · · FIERRO | 19572 | d | 2021-03-26T18:00:00 | 2021-03-24T08:00:00 | True | 18 |  | True |
| 3.0d | 0 | 2021-03-29T18:00:00 | 0 | FixedDuration | h | 3 | 2021-03-25T08:00:00 | · · · · · · · MOLDAJE | 19573 | d | 2021-03-29T18:00:00 | 2021-03-25T08:00:00 | True | 18 |  | True |
| 3.0d | 0 | 2021-03-29T18:00:00 | 0 | FixedDuration | h | 3 | 2021-03-25T08:00:00 | · · · · · · · HORMIGON | 19574 | d | 2021-03-29T18:00:00 | 2021-03-25T08:00:00 | True | 18 |  | True |
| 3.0d | 0 | 2021-03-30T18:00:00 | 0 | FixedDuration | h | 3 | 2021-03-26T08:00:00 | · · · · · · · DESCIMBRE | 19575 | d | 2021-03-30T18:00:00 | 2021-03-26T08:00:00 | True | 18 |  | True |
| 5.0d | 0 | 2021-04-05T18:00:00 | 0 | Normal | h | 5 | 2021-03-29T08:00:00 | · · · · · · LOSA | 19576 | d | 2021-04-05T18:00:00 | 2021-03-29T08:00:00 | True | 18 | True |  |
| 3.0d | 0 | 2021-03-31T18:00:00 | 0 | FixedDuration | h | 3 | 2021-03-29T08:00:00 | · · · · · · · MOLDAJE | 19577 | d | 2021-03-31T18:00:00 | 2021-03-29T08:00:00 | True | 18 |  | True |
| 3.0d | 0 | 2021-04-01T18:00:00 | 0 | FixedDuration | h | 3 | 2021-03-30T08:00:00 | · · · · · · · FIERRO | 19578 | d | 2021-04-01T18:00:00 | 2021-03-30T08:00:00 | True | 18 |  | True |

| baselineDuration | percentDone | endDate | effort | schedulingMode | effortUnit | duration | baselineStartDate | name | id | durationUnit | baselineEndDate | startDate | manuallyScheduled | calendar | rollup | leaf |
| --- | --- | --- | --- | --- | --- | --- | --- | --- | --- | --- | --- | --- | --- | --- | --- | --- |
| 1.0d | 0 | 2021-04-05T18:00:00 | 0 | FixedDuration | h | 1 | 2021-04-05T08:00:00 | · · · · · · · HORMIGON | 19579 | d | 2021-04-05T18:00:00 | 2021-04-05T08:00:00 | True | 18 |  | True |
| 17.0d | 0 | 2021-04-21T18:00:00 | 0 | Normal | h | 17 | 2021-03-29T08:00:00 | · · · · PISO 2 | 20752 | d | 2021-04-21T18:00:00 | 2021-03-29T08:00:00 | True | 18 | True |  |
| 8.0d | 0 | 2021-04-08T18:00:00 | 0 | Normal | h | 8 | 2021-03-29T08:00:00 | · · · · · CICLO 1 | 20753 | d | 2021-04-08T18:00:00 | 2021-03-29T08:00:00 | True | 18 | True |  |
| 5.0d | 0 | 2021-04-05T18:00:00 | 0 | Normal | h | 5 | 2021-03-29T08:00:00 | · · · · · · ELEVACION | 20754 | d | 2021-04-05T18:00:00 | 2021-03-29T08:00:00 | True | 18 | True |  |
| 3.0d | 0 | 2021-03-31T18:00:00 | 0 | FixedDuration | h | 3 | 2021-03-29T08:00:00 | · · · · · · · FIERRO | 20755 | d | 2021-03-31T18:00:00 | 2021-03-29T08:00:00 | True | 18 |  | True |
| 3.0d | 0 | 2021-04-01T18:00:00 | 0 | FixedDuration | h | 3 | 2021-03-30T08:00:00 | · · · · · · · MOLDAJE | 20756 | d | 2021-04-01T18:00:00 | 2021-03-30T08:00:00 | True | 18 |  | True |
| 3.0d | 0 | 2021-04-01T18:00:00 | 0 | FixedDuration | h | 3 | 2021-03-30T08:00:00 | · · · · · · · HORMIGON | 20757 | d | 2021-04-01T18:00:00 | 2021-03-30T08:00:00 | True | 18 |  | True |
| 3.0d | 0 | 2021-04-05T18:00:00 | 0 | FixedDuration | h | 3 | 2021-03-31T08:00:00 | · · · · · · · DESCIMBRE | 20758 | d | 2021-04-05T18:00:00 | 2021-03-31T08:00:00 | True | 18 |  | True |
| 5.0d | 0 | 2021-04-08T18:00:00 | 0 | Normal | h | 5 | 2021-04-01T08:00:00 | · · · · · · LOSA | 20759 | d | 2021-04-08T18:00:00 | 2021-04-01T08:00:00 | True | 18 | True |  |
| 3.0d | 0 | 2021-04-06T18:00:00 | 0 | FixedDuration | h | 3 | 2021-04-01T08:00:00 | · · · · · · · MOLDAJE | 20760 | d | 2021-04-06T18:00:00 | 2021-04-01T08:00:00 | True | 18 |  | True |
| 3.0d | 0 | 2021-04-07T18:00:00 | 0 | FixedDuration | h | 3 | 2021-04-05T08:00:00 | · · · · · · · FIERRO | 20761 | d | 2021-04-07T18:00:00 | 2021-04-05T08:00:00 | True | 18 |  | True |
| 1.0d | 0 | 2021-04-08T18:00:00 | 0 | FixedDuration | h | 1 | 2021-04-08T08:00:00 | · · · · · · · HORMIGON | 20762 | d | 2021-04-08T18:00:00 | 2021-04-08T08:00:00 | True | 18 |  | True |
| 8.0d | 0 | 2021-04-13T18:00:00 | 0 | Normal | h | 8 | 2021-04-01T08:00:00 | · · · · · CICLO 2 | 20763 | d | 2021-04-13T18:00:00 | 2021-04-01T08:00:00 | True | 18 | True |  |
| 5.0d | 0 | 2021-04-08T18:00:00 | 0 | Normal | h | 5 | 2021-04-01T08:00:00 | · · · · · · ELEVACION | 20764 | d | 2021-04-08T18:00:00 | 2021-04-01T08:00:00 | True | 18 | True |  |
| 3.0d | 0 | 2021-04-06T18:00:00 | 0 | FixedDuration | h | 3 | 2021-04-01T08:00:00 | · · · · · · · FIERRO | 20765 | d | 2021-04-06T18:00:00 | 2021-04-01T08:00:00 | True | 18 |  | True |
| 3.0d | 0 | 2021-04-07T18:00:00 | 0 | FixedDuration | h | 3 | 2021-04-05T08:00:00 | · · · · · · · MOLDAJE | 20766 | d | 2021-04-07T18:00:00 | 2021-04-05T08:00:00 | True | 18 |  | True |
| 3.0d | 0 | 2021-04-07T18:00:00 | 0 | FixedDuration | h | 3 | 2021-04-05T08:00:00 | · · · · · · · HORMIGON | 20767 | d | 2021-04-07T18:00:00 | 2021-04-05T08:00:00 | True | 18 |  | True |
| 3.0d | 0 | 2021-04-08T18:00:00 | 0 | FixedDuration | h | 3 | 2021-04-06T08:00:00 | · · · · · · · DESCIMBRE | 20768 | d | 2021-04-08T18:00:00 | 2021-04-06T08:00:00 | True | 18 |  | True |
| 5.0d | 0 | 2021-04-13T18:00:00 | 0 | Normal | h | 5 | 2021-04-07T08:00:00 | · · · · · · LOSA | 20769 | d | 2021-04-13T18:00:00 | 2021-04-07T08:00:00 | True | 18 | True |  |
| 3.0d | 0 | 2021-04-09T18:00:00 | 0 | FixedDuration | h | 3 | 2021-04-07T08:00:00 | · · · · · · · MOLDAJE | 20770 | d | 2021-04-09T18:00:00 | 2021-04-07T08:00:00 | True | 18 |  | True |
| 3.0d | 0 | 2021-04-12T18:00:00 | 0 | FixedDuration | h | 3 | 2021-04-08T08:00:00 | · · · · · · · FIERRO | 20771 | d | 2021-04-12T18:00:00 | 2021-04-08T08:00:00 | True | 18 |  | True |
| 1.0d | 0 | 2021-04-13T18:00:00 | 0 | FixedDuration | h | 1 | 2021-04-13T08:00:00 | · · · · · · · HORMIGON | 20772 | d | 2021-04-13T18:00:00 | 2021-04-13T08:00:00 | True | 18 |  | True |
| 8.0d | 0 | 2021-04-16T18:00:00 | 0 | Normal | h | 8 | 2021-04-07T08:00:00 | · · · · · CICLO 3 | 20773 | d | 2021-04-16T18:00:00 | 2021-04-07T08:00:00 | True | 18 | True |  |
| 5.0d | 0 | 2021-04-13T18:00:00 | 0 | Normal | h | 5 | 2021-04-07T08:00:00 | · · · · · · ELEVACION | 20774 | d | 2021-04-13T18:00:00 | 2021-04-07T08:00:00 | True | 18 | True |  |
| 3.0d | 0 | 2021-04-09T18:00:00 | 0 | FixedDuration | h | 3 | 2021-04-07T08:00:00 | · · · · · · · FIERRO | 20775 | d | 2021-04-09T18:00:00 | 2021-04-07T08:00:00 | True | 18 |  | True |
| 3.0d | 0 | 2021-04-12T18:00:00 | 0 | FixedDuration | h | 3 | 2021-04-08T08:00:00 | · · · · · · · MOLDAJE | 20776 | d | 2021-04-12T18:00:00 | 2021-04-08T08:00:00 | True | 18 |  | True |
| 3.0d | 0 | 2021-04-12T18:00:00 | 0 | FixedDuration | h | 3 | 2021-04-08T08:00:00 | · · · · · · · HORMIGON | 20777 | d | 2021-04-12T18:00:00 | 2021-04-08T08:00:00 | True | 18 |  | True |
| 3.0d | 0 | 2021-04-13T18:00:00 | 0 | FixedDuration | h | 3 | 2021-04-09T08:00:00 | · · · · · · · DESCIMBRE | 20778 | d | 2021-04-13T18:00:00 | 2021-04-09T08:00:00 | True | 18 |  | True |
| 5.0d | 0 | 2021-04-16T18:00:00 | 0 | Normal | h | 5 | 2021-04-12T08:00:00 | · · · · · · LOSA | 20779 | d | 2021-04-16T18:00:00 | 2021-04-12T08:00:00 | True | 18 | True |  |
| 3.0d | 0 | 2021-04-14T18:00:00 | 0 | FixedDuration | h | 3 | 2021-04-12T08:00:00 | · · · · · · · MOLDAJE | 20780 | d | 2021-04-14T18:00:00 | 2021-04-12T08:00:00 | True | 18 |  | True |
| 3.0d | 0 | 2021-04-15T18:00:00 | 0 | FixedDuration | h | 3 | 2021-04-13T08:00:00 | · · · · · · · FIERRO | 20781 | d | 2021-04-15T18:00:00 | 2021-04-13T08:00:00 | True | 18 |  | True |
| 1.0d | 0 | 2021-04-16T18:00:00 | 0 | FixedDuration | h | 1 | 2021-04-16T08:00:00 | · · · · · · · HORMIGON | 20782 | d | 2021-04-16T18:00:00 | 2021-04-16T08:00:00 | True | 18 |  | True |
| 8.0d | 0 | 2021-04-21T18:00:00 | 0 | Normal | h | 8 | 2021-04-12T08:00:00 | · · · · · CICLO 4 | 20783 | d | 2021-04-21T18:00:00 | 2021-04-12T08:00:00 | True | 18 | True |  |
| 5.0d | 0 | 2021-04-16T18:00:00 | 0 | Normal | h | 5 | 2021-04-12T08:00:00 | · · · · · · ELEVACION | 20784 | d | 2021-04-16T18:00:00 | 2021-04-12T08:00:00 | True | 18 | True |  |
| 3.0d | 0 | 2021-04-14T18:00:00 | 0 | FixedDuration | h | 3 | 2021-04-12T08:00:00 | · · · · · · · FIERRO | 20785 | d | 2021-04-14T18:00:00 | 2021-04-12T08:00:00 | True | 18 |  | True |
| 3.0d | 0 | 2021-04-15T18:00:00 | 0 | FixedDuration | h | 3 | 2021-04-13T08:00:00 | · · · · · · · MOLDAJE | 20786 | d | 2021-04-15T18:00:00 | 2021-04-13T08:00:00 | True | 18 |  | True |
| 3.0d | 0 | 2021-04-15T18:00:00 | 0 | FixedDuration | h | 3 | 2021-04-13T08:00:00 | · · · · · · · HORMIGON | 20787 | d | 2021-04-15T18:00:00 | 2021-04-13T08:00:00 | True | 18 |  | True |
| 3.0d | 0 | 2021-04-16T18:00:00 | 0 | FixedDuration | h | 3 | 2021-04-14T08:00:00 | · · · · · · · DESCIMBRE | 20788 | d | 2021-04-16T18:00:00 | 2021-04-14T08:00:00 | True | 18 |  | True |
| 5.0d | 0 | 2021-04-21T18:00:00 | 0 | Normal | h | 5 | 2021-04-15T08:00:00 | · · · · · · LOSA | 20789 | d | 2021-04-21T18:00:00 | 2021-04-15T08:00:00 | True | 18 | True |  |
| 3.0d | 0 | 2021-04-19T18:00:00 | 0 | FixedDuration | h | 3 | 2021-04-15T08:00:00 | · · · · · · · MOLDAJE | 20790 | d | 2021-04-19T18:00:00 | 2021-04-15T08:00:00 | True | 18 |  | True |
| 3.0d | 0 | 2021-04-20T18:00:00 | 0 | FixedDuration | h | 3 | 2021-04-16T08:00:00 | · · · · · · · FIERRO | 20791 | d | 2021-04-20T18:00:00 | 2021-04-16T08:00:00 | True | 18 |  | True |
| 1.0d | 0 | 2021-04-21T18:00:00 | 0 | FixedDuration | h | 1 | 2021-04-21T08:00:00 | · · · · · · · HORMIGON | 20792 | d | 2021-04-21T18:00:00 | 2021-04-21T08:00:00 | True | 18 |  | True |
| 17.0d | 0 | 2021-05-07T18:00:00 | 0 | Normal | h | 17 | 2021-04-15T08:00:00 | · · · · PISO 3 | 20793 | d | 2021-05-07T18:00:00 | 2021-04-15T08:00:00 | True | 18 | True |  |
| 8.0d | 0 | 2021-04-26T18:00:00 | 0 | Normal | h | 8 | 2021-04-15T08:00:00 | · · · · · CICLO 1 | 20794 | d | 2021-04-26T18:00:00 | 2021-04-15T08:00:00 | True | 18 | True |  |
| 5.0d | 0 | 2021-04-21T18:00:00 | 0 | Normal | h | 5 | 2021-04-15T08:00:00 | · · · · · · ELEVACION | 20795 | d | 2021-04-21T18:00:00 | 2021-04-15T08:00:00 | True | 18 | True |  |
| 3.0d | 0 | 2021-04-19T18:00:00 | 0 | FixedDuration | h | 3 | 2021-04-15T08:00:00 | · · · · · · · FIERRO | 20796 | d | 2021-04-19T18:00:00 | 2021-04-15T08:00:00 | True | 18 |  | True |
| 3.0d | 0 | 2021-04-20T18:00:00 | 0 | FixedDuration | h | 3 | 2021-04-16T08:00:00 | · · · · · · · MOLDAJE | 20797 | d | 2021-04-20T18:00:00 | 2021-04-16T08:00:00 | True | 18 |  | True |
| 3.0d | 0 | 2021-04-20T18:00:00 | 0 | FixedDuration | h | 3 | 2021-04-16T08:00:00 | · · · · · · · HORMIGON | 20798 | d | 2021-04-20T18:00:00 | 2021-04-16T08:00:00 | True | 18 |  | True |
| 3.0d | 0 | 2021-04-21T18:00:00 | 0 | FixedDuration | h | 3 | 2021-04-19T08:00:00 | · · · · · · · DESCIMBRE | 20799 | d | 2021-04-21T18:00:00 | 2021-04-19T08:00:00 | True | 18 |  | True |
| 5.0d | 0 | 2021-04-26T18:00:00 | 0 | Normal | h | 5 | 2021-04-20T08:00:00 | · · · · · · LOSA | 20800 | d | 2021-04-26T18:00:00 | 2021-04-20T08:00:00 | True | 18 | True |  |
| 3.0d | 0 | 2021-04-22T18:00:00 | 0 | FixedDuration | h | 3 | 2021-04-20T08:00:00 | · · · · · · · MOLDAJE | 20801 | d | 2021-04-22T18:00:00 | 2021-04-20T08:00:00 | True | 18 |  | True |
| 3.0d | 0 | 2021-04-23T18:00:00 | 0 | FixedDuration | h | 3 | 2021-04-21T08:00:00 | · · · · · · · FIERRO | 20802 | d | 2021-04-23T18:00:00 | 2021-04-21T08:00:00 | True | 18 |  | True |
| 1.0d | 0 | 2021-04-26T18:00:00 | 0 | FixedDuration | h | 1 | 2021-04-26T08:00:00 | · · · · · · · HORMIGON | 20803 | d | 2021-04-26T18:00:00 | 2021-04-26T08:00:00 | True | 18 |  | True |
| 8.0d | 0 | 2021-04-29T18:00:00 | 0 | Normal | h | 8 | 2021-04-20T08:00:00 | · · · · · CICLO 2 | 20804 | d | 2021-04-29T18:00:00 | 2021-04-20T08:00:00 | True | 18 | True |  |
| 5.0d | 0 | 2021-04-26T18:00:00 | 0 | Normal | h | 5 | 2021-04-20T08:00:00 | · · · · · · ELEVACION | 20805 | d | 2021-04-26T18:00:00 | 2021-04-20T08:00:00 | True | 18 | True |  |
| 3.0d | 0 | 2021-04-22T18:00:00 | 0 | FixedDuration | h | 3 | 2021-04-20T08:00:00 | · · · · · · · FIERRO | 20806 | d | 2021-04-22T18:00:00 | 2021-04-20T08:00:00 | True | 18 |  | True |
| 3.0d | 0 | 2021-04-23T18:00:00 | 0 | FixedDuration | h | 3 | 2021-04-21T08:00:00 | · · · · · · · MOLDAJE | 20807 | d | 2021-04-23T18:00:00 | 2021-04-21T08:00:00 | True | 18 |  | True |
| 3.0d | 0 | 2021-04-23T18:00:00 | 0 | FixedDuration | h | 3 | 2021-04-21T08:00:00 | · · · · · · · HORMIGON | 20808 | d | 2021-04-23T18:00:00 | 2021-04-21T08:00:00 | True | 18 |  | True |
| 3.0d | 0 | 2021-04-26T18:00:00 | 0 | FixedDuration | h | 3 | 2021-04-22T08:00:00 | · · · · · · · DESCIMBRE | 20809 | d | 2021-04-26T18:00:00 | 2021-04-22T08:00:00 | True | 18 |  | True |
| 5.0d | 0 | 2021-04-29T18:00:00 | 0 | Normal | h | 5 | 2021-04-23T08:00:00 | · · · · · · LOSA | 20810 | d | 2021-04-29T18:00:00 | 2021-04-23T08:00:00 | True | 18 | True |  |
| 3.0d | 0 | 2021-04-27T18:00:00 | 0 | FixedDuration | h | 3 | 2021-04-23T08:00:00 | · · · · · · · MOLDAJE | 20811 | d | 2021-04-27T18:00:00 | 2021-04-23T08:00:00 | True | 18 |  | True |
| 3.0d | 0 | 2021-04-28T18:00:00 | 0 | FixedDuration | h | 3 | 2021-04-26T08:00:00 | · · · · · · · FIERRO | 20812 | d | 2021-04-28T18:00:00 | 2021-04-26T08:00:00 | True | 18 |  | True |
| 1.0d | 0 | 2021-04-29T18:00:00 | 0 | FixedDuration | h | 1 | 2021-04-29T08:00:00 | · · · · · · · HORMIGON | 20813 | d | 2021-04-29T18:00:00 | 2021-04-29T08:00:00 | True | 18 |  | True |
| 8.0d | 0 | 2021-05-04T18:00:00 | 0 | Normal | h | 8 | 2021-04-23T08:00:00 | · · · · · CICLO 3 | 20814 | d | 2021-05-04T18:00:00 | 2021-04-23T08:00:00 | True | 18 | True |  |
| 5.0d | 0 | 2021-04-29T18:00:00 | 0 | Normal | h | 5 | 2021-04-23T08:00:00 | · · · · · · ELEVACION | 20815 | d | 2021-04-29T18:00:00 | 2021-04-23T08:00:00 | True | 18 | True |  |
| 3.0d | 0 | 2021-04-27T18:00:00 | 0 | FixedDuration | h | 3 | 2021-04-23T08:00:00 | · · · · · · · FIERRO | 20816 | d | 2021-04-27T18:00:00 | 2021-04-23T08:00:00 | True | 18 |  | True |
| 3.0d | 0 | 2021-04-28T18:00:00 | 0 | FixedDuration | h | 3 | 2021-04-26T08:00:00 | · · · · · · · MOLDAJE | 20817 | d | 2021-04-28T18:00:00 | 2021-04-26T08:00:00 | True | 18 |  | True |
| 3.0d | 0 | 2021-04-28T18:00:00 | 0 | FixedDuration | h | 3 | 2021-04-26T08:00:00 | · · · · · · · HORMIGON | 20818 | d | 2021-04-28T18:00:00 | 2021-04-26T08:00:00 | True | 18 |  | True |
| 3.0d | 0 | 2021-04-29T18:00:00 | 0 | FixedDuration | h | 3 | 2021-04-27T08:00:00 | · · · · · · · DESCIMBRE | 20819 | d | 2021-04-29T18:00:00 | 2021-04-27T08:00:00 | True | 18 |  | True |
| 5.0d | 0 | 2021-05-04T18:00:00 | 0 | Normal | h | 5 | 2021-04-28T08:00:00 | · · · · · · LOSA | 20820 | d | 2021-05-04T18:00:00 | 2021-04-28T08:00:00 | True | 18 | True |  |

| baselineDuration | percentDone | endDate | effort | schedulingMode | effortUnit | duration | baselineStartDate | name | id | durationUnit | baselineEndDate | startDate | manuallyScheduled | calendar | rollup | leaf |
| --- | --- | --- | --- | --- | --- | --- | --- | --- | --- | --- | --- | --- | --- | --- | --- | --- |
| 3.0d | 0 | 2021-04-30T18:00:00 | 0 | FixedDuration | h | 3 | 2021-04-28T08:00:00 | · · · · · · · MOLDAJE | 20821 | d | 2021-04-30T18:00:00 | 2021-04-28T08:00:00 | True | 18 |  | True |
| 3.0d | 0 | 2021-05-03T18:00:00 | 0 | FixedDuration | h | 3 | 2021-04-29T08:00:00 | · · · · · · · FIERRO | 20822 | d | 2021-05-03T18:00:00 | 2021-04-29T08:00:00 | True | 18 |  | True |
| 1.0d | 0 | 2021-05-04T18:00:00 | 0 | FixedDuration | h | 1 | 2021-05-04T08:00:00 | · · · · · · · HORMIGON | 20823 | d | 2021-05-04T18:00:00 | 2021-05-04T08:00:00 | True | 18 |  | True |
| 8.0d | 0 | 2021-05-07T18:00:00 | 0 | Normal | h | 8 | 2021-04-28T08:00:00 | · · · · · CICLO 4 | 20824 | d | 2021-05-07T18:00:00 | 2021-04-28T08:00:00 | True | 18 | True |  |
| 5.0d | 0 | 2021-05-04T18:00:00 | 0 | Normal | h | 5 | 2021-04-28T08:00:00 | · · · · · · ELEVACION | 20825 | d | 2021-05-04T18:00:00 | 2021-04-28T08:00:00 | True | 18 | True |  |
| 3.0d | 0 | 2021-04-30T18:00:00 | 0 | FixedDuration | h | 3 | 2021-04-28T08:00:00 | · · · · · · · FIERRO | 20826 | d | 2021-04-30T18:00:00 | 2021-04-28T08:00:00 | True | 18 |  | True |
| 3.0d | 0 | 2021-05-03T18:00:00 | 0 | FixedDuration | h | 3 | 2021-04-29T08:00:00 | · · · · · · · MOLDAJE | 20827 | d | 2021-05-03T18:00:00 | 2021-04-29T08:00:00 | True | 18 |  | True |
| 3.0d | 0 | 2021-05-03T18:00:00 | 0 | FixedDuration | h | 3 | 2021-04-29T08:00:00 | · · · · · · · HORMIGON | 20828 | d | 2021-05-03T18:00:00 | 2021-04-29T08:00:00 | True | 18 |  | True |
| 3.0d | 0 | 2021-05-04T18:00:00 | 0 | FixedDuration | h | 3 | 2021-04-30T08:00:00 | · · · · · · · DESCIMBRE | 20829 | d | 2021-05-04T18:00:00 | 2021-04-30T08:00:00 | True | 18 |  | True |
| 5.0d | 0 | 2021-05-07T18:00:00 | 0 | Normal | h | 5 | 2021-05-03T08:00:00 | · · · · · · LOSA | 20830 | d | 2021-05-07T18:00:00 | 2021-05-03T08:00:00 | True | 18 | True |  |
| 3.0d | 0 | 2021-05-05T18:00:00 | 0 | FixedDuration | h | 3 | 2021-05-03T08:00:00 | · · · · · · · MOLDAJE | 20831 | d | 2021-05-05T18:00:00 | 2021-05-03T08:00:00 | True | 18 |  | True |
| 3.0d | 0 | 2021-05-06T18:00:00 | 0 | FixedDuration | h | 3 | 2021-05-04T08:00:00 | · · · · · · · FIERRO | 20832 | d | 2021-05-06T18:00:00 | 2021-05-04T08:00:00 | True | 18 |  | True |
| 1.0d | 0 | 2021-05-07T18:00:00 | 0 | FixedDuration | h | 1 | 2021-05-07T08:00:00 | · · · · · · · HORMIGON | 20833 | d | 2021-05-07T18:00:00 | 2021-05-07T08:00:00 | True | 18 |  | True |
| 17.0d | 0 | 2021-05-26T18:00:00 | 0 | Normal | h | 17 | 2021-05-03T08:00:00 | · · · · PISO 4 | 20834 | d | 2021-05-26T18:00:00 | 2021-05-03T08:00:00 | True | 18 | True |  |
| 8.0d | 0 | 2021-05-12T18:00:00 | 0 | Normal | h | 8 | 2021-05-03T08:00:00 | · · · · · CICLO 1 | 20835 | d | 2021-05-12T18:00:00 | 2021-05-03T08:00:00 | True | 18 | True |  |
| 5.0d | 0 | 2021-05-07T18:00:00 | 0 | Normal | h | 5 | 2021-05-03T08:00:00 | · · · · · · ELEVACION | 20836 | d | 2021-05-07T18:00:00 | 2021-05-03T08:00:00 | True | 18 | True |  |
| 3.0d | 0 | 2021-05-05T18:00:00 | 0 | FixedDuration | h | 3 | 2021-05-03T08:00:00 | · · · · · · · FIERRO | 20837 | d | 2021-05-05T18:00:00 | 2021-05-03T08:00:00 | True | 18 |  | True |
| 3.0d | 0 | 2021-05-06T18:00:00 | 0 | FixedDuration | h | 3 | 2021-05-04T08:00:00 | · · · · · · · MOLDAJE | 20838 | d | 2021-05-06T18:00:00 | 2021-05-04T08:00:00 | True | 18 |  | True |
| 3.0d | 0 | 2021-05-06T18:00:00 | 0 | FixedDuration | h | 3 | 2021-05-04T08:00:00 | · · · · · · · HORMIGON | 20839 | d | 2021-05-06T18:00:00 | 2021-05-04T08:00:00 | True | 18 |  | True |
| 3.0d | 0 | 2021-05-07T18:00:00 | 0 | FixedDuration | h | 3 | 2021-05-05T08:00:00 | · · · · · · · DESCIMBRE | 20840 | d | 2021-05-07T18:00:00 | 2021-05-05T08:00:00 | True | 18 |  | True |
| 5.0d | 0 | 2021-05-12T18:00:00 | 0 | Normal | h | 5 | 2021-05-06T08:00:00 | · · · · · · LOSA | 20841 | d | 2021-05-12T18:00:00 | 2021-05-06T08:00:00 | True | 18 | True |  |
| 3.0d | 0 | 2021-05-10T18:00:00 | 0 | FixedDuration | h | 3 | 2021-05-06T08:00:00 | · · · · · · · MOLDAJE | 20842 | d | 2021-05-10T18:00:00 | 2021-05-06T08:00:00 | True | 18 |  | True |
| 3.0d | 0 | 2021-05-11T18:00:00 | 0 | FixedDuration | h | 3 | 2021-05-07T08:00:00 | · · · · · · · FIERRO | 20843 | d | 2021-05-11T18:00:00 | 2021-05-07T08:00:00 | True | 18 |  | True |
| 1.0d | 0 | 2021-05-12T18:00:00 | 0 | FixedDuration | h | 1 | 2021-05-12T08:00:00 | · · · · · · · HORMIGON | 20844 | d | 2021-05-12T18:00:00 | 2021-05-12T08:00:00 | True | 18 |  | True |
| 8.0d | 0 | 2021-05-17T18:00:00 | 0 | Normal | h | 8 | 2021-05-06T08:00:00 | · · · · · CICLO 2 | 20845 | d | 2021-05-17T18:00:00 | 2021-05-06T08:00:00 | True | 18 | True |  |
| 5.0d | 0 | 2021-05-12T18:00:00 | 0 | Normal | h | 5 | 2021-05-06T08:00:00 | · · · · · · ELEVACION | 20846 | d | 2021-05-12T18:00:00 | 2021-05-06T08:00:00 | True | 18 | True |  |
| 3.0d | 0 | 2021-05-10T18:00:00 | 0 | FixedDuration | h | 3 | 2021-05-06T08:00:00 | · · · · · · · FIERRO | 20847 | d | 2021-05-10T18:00:00 | 2021-05-06T08:00:00 | True | 18 |  | True |
| 3.0d | 0 | 2021-05-11T18:00:00 | 0 | FixedDuration | h | 3 | 2021-05-07T08:00:00 | · · · · · · · MOLDAJE | 20848 | d | 2021-05-11T18:00:00 | 2021-05-07T08:00:00 | True | 18 |  | True |
| 3.0d | 0 | 2021-05-11T18:00:00 | 0 | FixedDuration | h | 3 | 2021-05-07T08:00:00 | · · · · · · · HORMIGON | 20849 | d | 2021-05-11T18:00:00 | 2021-05-07T08:00:00 | True | 18 |  | True |
| 3.0d | 0 | 2021-05-12T18:00:00 | 0 | FixedDuration | h | 3 | 2021-05-10T08:00:00 | · · · · · · · DESCIMBRE | 20850 | d | 2021-05-12T18:00:00 | 2021-05-10T08:00:00 | True | 18 |  | True |
| 5.0d | 0 | 2021-05-17T18:00:00 | 0 | Normal | h | 5 | 2021-05-11T08:00:00 | · · · · · · LOSA | 20851 | d | 2021-05-17T18:00:00 | 2021-05-11T08:00:00 | True | 18 | True |  |
| 3.0d | 0 | 2021-05-13T18:00:00 | 0 | FixedDuration | h | 3 | 2021-05-11T08:00:00 | · · · · · · · MOLDAJE | 20852 | d | 2021-05-13T18:00:00 | 2021-05-11T08:00:00 | True | 18 |  | True |
| 3.0d | 0 | 2021-05-14T18:00:00 | 0 | FixedDuration | h | 3 | 2021-05-12T08:00:00 | · · · · · · · FIERRO | 20853 | d | 2021-05-14T18:00:00 | 2021-05-12T08:00:00 | True | 18 |  | True |
| 1.0d | 0 | 2021-05-17T18:00:00 | 0 | FixedDuration | h | 1 | 2021-05-17T08:00:00 | · · · · · · · HORMIGON | 20854 | d | 2021-05-17T18:00:00 | 2021-05-17T08:00:00 | True | 18 |  | True |
| 8.0d | 0 | 2021-05-20T18:00:00 | 0 | Normal | h | 8 | 2021-05-11T08:00:00 | · · · · · CICLO 3 | 20855 | d | 2021-05-20T18:00:00 | 2021-05-11T08:00:00 | True | 18 | True |  |
| 5.0d | 0 | 2021-05-17T18:00:00 | 0 | Normal | h | 5 | 2021-05-11T08:00:00 | · · · · · · ELEVACION | 20856 | d | 2021-05-17T18:00:00 | 2021-05-11T08:00:00 | True | 18 | True |  |
| 3.0d | 0 | 2021-05-13T18:00:00 | 0 | FixedDuration | h | 3 | 2021-05-11T08:00:00 | · · · · · · · FIERRO | 20857 | d | 2021-05-13T18:00:00 | 2021-05-11T08:00:00 | True | 18 |  | True |
| 3.0d | 0 | 2021-05-14T18:00:00 | 0 | FixedDuration | h | 3 | 2021-05-12T08:00:00 | · · · · · · · MOLDAJE | 20858 | d | 2021-05-14T18:00:00 | 2021-05-12T08:00:00 | True | 18 |  | True |
| 3.0d | 0 | 2021-05-14T18:00:00 | 0 | FixedDuration | h | 3 | 2021-05-12T08:00:00 | · · · · · · · HORMIGON | 20859 | d | 2021-05-14T18:00:00 | 2021-05-12T08:00:00 | True | 18 |  | True |
| 3.0d | 0 | 2021-05-17T18:00:00 | 0 | FixedDuration | h | 3 | 2021-05-13T08:00:00 | · · · · · · · DESCIMBRE | 20860 | d | 2021-05-17T18:00:00 | 2021-05-13T08:00:00 | True | 18 |  | True |
| 5.0d | 0 | 2021-05-20T18:00:00 | 0 | Normal | h | 5 | 2021-05-14T08:00:00 | · · · · · · LOSA | 20861 | d | 2021-05-20T18:00:00 | 2021-05-14T08:00:00 | True | 18 | True |  |
| 3.0d | 0 | 2021-05-18T18:00:00 | 0 | FixedDuration | h | 3 | 2021-05-14T08:00:00 | · · · · · · · MOLDAJE | 20862 | d | 2021-05-18T18:00:00 | 2021-05-14T08:00:00 | True | 18 |  | True |
| 3.0d | 0 | 2021-05-19T18:00:00 | 0 | FixedDuration | h | 3 | 2021-05-17T08:00:00 | · · · · · · · FIERRO | 20863 | d | 2021-05-19T18:00:00 | 2021-05-17T08:00:00 | True | 18 |  | True |
| 1.0d | 0 | 2021-05-20T18:00:00 | 0 | FixedDuration | h | 1 | 2021-05-20T08:00:00 | · · · · · · · HORMIGON | 20864 | d | 2021-05-20T18:00:00 | 2021-05-20T08:00:00 | True | 18 |  | True |
| 8.0d | 0 | 2021-05-26T18:00:00 | 0 | Normal | h | 8 | 2021-05-14T08:00:00 | · · · · · CICLO 4 | 20865 | d | 2021-05-26T18:00:00 | 2021-05-14T08:00:00 | True | 18 | True |  |
| 5.0d | 0 | 2021-05-20T18:00:00 | 0 | Normal | h | 5 | 2021-05-14T08:00:00 | · · · · · · ELEVACION | 20866 | d | 2021-05-20T18:00:00 | 2021-05-14T08:00:00 | True | 18 | True |  |
| 3.0d | 0 | 2021-05-18T18:00:00 | 0 | FixedDuration | h | 3 | 2021-05-14T08:00:00 | · · · · · · · FIERRO | 20867 | d | 2021-05-18T18:00:00 | 2021-05-14T08:00:00 | True | 18 |  | True |
| 3.0d | 0 | 2021-05-19T18:00:00 | 0 | FixedDuration | h | 3 | 2021-05-17T08:00:00 | · · · · · · · MOLDAJE | 20868 | d | 2021-05-19T18:00:00 | 2021-05-17T08:00:00 | True | 18 |  | True |
| 3.0d | 0 | 2021-05-19T18:00:00 | 0 | FixedDuration | h | 3 | 2021-05-17T08:00:00 | · · · · · · · HORMIGON | 20869 | d | 2021-05-19T18:00:00 | 2021-05-17T08:00:00 | True | 18 |  | True |
| 3.0d | 0 | 2021-05-20T18:00:00 | 0 | FixedDuration | h | 3 | 2021-05-18T08:00:00 | · · · · · · · DESCIMBRE | 20870 | d | 2021-05-20T18:00:00 | 2021-05-18T08:00:00 | True | 18 |  | True |
| 5.0d | 0 | 2021-05-26T18:00:00 | 0 | Normal | h | 5 | 2021-05-19T08:00:00 | · · · · · · LOSA | 20871 | d | 2021-05-26T18:00:00 | 2021-05-19T08:00:00 | True | 18 | True |  |
| 3.0d | 0 | 2021-05-24T18:00:00 | 0 | FixedDuration | h | 3 | 2021-05-19T08:00:00 | · · · · · · · MOLDAJE | 20872 | d | 2021-05-24T18:00:00 | 2021-05-19T08:00:00 | True | 18 |  | True |
| 3.0d | 0 | 2021-05-25T18:00:00 | 0 | FixedDuration | h | 3 | 2021-05-20T08:00:00 | · · · · · · · FIERRO | 20873 | d | 2021-05-25T18:00:00 | 2021-05-20T08:00:00 | True | 18 |  | True |
| 1.0d | 0 | 2021-05-26T18:00:00 | 0 | FixedDuration | h | 1 | 2021-05-26T08:00:00 | · · · · · · · HORMIGON | 20874 | d | 2021-05-26T18:00:00 | 2021-05-26T08:00:00 | True | 18 |  | True |
| 17.0d | 0 | 2021-06-11T18:00:00 | 0 | Normal | h | 17 | 2021-05-19T08:00:00 | · · · · PISO 5 | 20875 | d | 2021-06-11T18:00:00 | 2021-05-19T08:00:00 | True | 18 | True |  |
| 8.0d | 0 | 2021-05-31T18:00:00 | 0 | Normal | h | 8 | 2021-05-19T08:00:00 | · · · · · CICLO 1 | 20876 | d | 2021-05-31T18:00:00 | 2021-05-19T08:00:00 | True | 18 | True |  |
| 5.0d | 0 | 2021-05-26T18:00:00 | 0 | Normal | h | 5 | 2021-05-19T08:00:00 | · · · · · · ELEVACION | 20877 | d | 2021-05-26T18:00:00 | 2021-05-19T08:00:00 | True | 18 | True |  |
| 3.0d | 0 | 2021-05-24T18:00:00 | 0 | FixedDuration | h | 3 | 2021-05-19T08:00:00 | · · · · · · · FIERRO | 20878 | d | 2021-05-24T18:00:00 | 2021-05-19T08:00:00 | True | 18 |  | True |
| 3.0d | 0 | 2021-05-25T18:00:00 | 0 | FixedDuration | h | 3 | 2021-05-20T08:00:00 | · · · · · · · MOLDAJE | 20879 | d | 2021-05-25T18:00:00 | 2021-05-20T08:00:00 | True | 18 |  | True |
| 3.0d | 0 | 2021-05-25T18:00:00 | 0 | FixedDuration | h | 3 | 2021-05-20T08:00:00 | · · · · · · · HORMIGON | 20880 | d | 2021-05-25T18:00:00 | 2021-05-20T08:00:00 | True | 18 |  | True |
| 3.0d | 0 | 2021-05-26T18:00:00 | 0 | FixedDuration | h | 3 | 2021-05-24T08:00:00 | · · · · · · · DESCIMBRE | 20881 | d | 2021-05-26T18:00:00 | 2021-05-24T08:00:00 | True | 18 |  | True |
| 5.0d | 0 | 2021-05-31T18:00:00 | 0 | Normal | h | 5 | 2021-05-25T08:00:00 | · · · · · · LOSA | 20882 | d | 2021-05-31T18:00:00 | 2021-05-25T08:00:00 | True | 18 | True |  |
| 3.0d | 0 | 2021-05-27T18:00:00 | 0 | FixedDuration | h | 3 | 2021-05-25T08:00:00 | · · · · · · · MOLDAJE | 20883 | d | 2021-05-27T18:00:00 | 2021-05-25T08:00:00 | True | 18 |  | True |
| 3.0d | 0 | 2021-05-28T18:00:00 | 0 | FixedDuration | h | 3 | 2021-05-26T08:00:00 | · · · · · · · FIERRO | 20884 | d | 2021-05-28T18:00:00 | 2021-05-26T08:00:00 | True | 18 |  | True |
| 1.0d | 0 | 2021-05-31T18:00:00 | 0 | FixedDuration | h | 1 | 2021-05-31T08:00:00 | · · · · · · · HORMIGON | 20885 | d | 2021-05-31T18:00:00 | 2021-05-31T08:00:00 | True | 18 |  | True |
| 8.0d | 0 | 2021-06-03T18:00:00 | 0 | Normal | h | 8 | 2021-05-25T08:00:00 | · · · · · CICLO 2 | 20886 | d | 2021-06-03T18:00:00 | 2021-05-25T08:00:00 | True | 18 | True |  |
| 5.0d | 0 | 2021-05-31T18:00:00 | 0 | Normal | h | 5 | 2021-05-25T08:00:00 | · · · · · · ELEVACION | 20887 | d | 2021-05-31T18:00:00 | 2021-05-25T08:00:00 | True | 18 | True |  |
| 3.0d | 0 | 2021-05-27T18:00:00 | 0 | FixedDuration | h | 3 | 2021-05-25T08:00:00 | · · · · · · · FIERRO | 20888 | d | 2021-05-27T18:00:00 | 2021-05-25T08:00:00 | True | 18 |  | True |
| 3.0d | 0 | 2021-05-28T18:00:00 | 0 | FixedDuration | h | 3 | 2021-05-26T08:00:00 | · · · · · · · MOLDAJE | 20889 | d | 2021-05-28T18:00:00 | 2021-05-26T08:00:00 | True | 18 |  | True |
| 3.0d | 0 | 2021-05-28T18:00:00 | 0 | FixedDuration | h | 3 | 2021-05-26T08:00:00 | · · · · · · · HORMIGON | 20890 | d | 2021-05-28T18:00:00 | 2021-05-26T08:00:00 | True | 18 |  | True |

| baselineDuration | percentDone | endDate | effort | schedulingMode | effortUnit | duration | baselineStartDate | name | id | durationUnit | baselineEndDate | startDate | manuallyScheduled | calendar | rollup | leaf |
| --- | --- | --- | --- | --- | --- | --- | --- | --- | --- | --- | --- | --- | --- | --- | --- | --- |
| 3.0d | 0 | 2021-05-31T18:00:00 | 0 | FixedDuration | h | 3 | 2021-05-27T08:00:00 | · · · · · · · DESCIMBRE | 20891 | d | 2021-05-31T18:00:00 | 2021-05-27T08:00:00 | True | 18 |  | True |
| 5.0d | 0 | 2021-06-03T18:00:00 | 0 | Normal | h | 5 | 2021-05-28T08:00:00 | · · · · · · LOSA | 20892 | d | 2021-06-03T18:00:00 | 2021-05-28T08:00:00 | True | 18 | True |  |
| 3.0d | 0 | 2021-06-01T18:00:00 | 0 | FixedDuration | h | 3 | 2021-05-28T08:00:00 | · · · · · · · MOLDAJE | 20893 | d | 2021-06-01T18:00:00 | 2021-05-28T08:00:00 | True | 18 |  | True |
| 3.0d | 0 | 2021-06-02T18:00:00 | 0 | FixedDuration | h | 3 | 2021-05-31T08:00:00 | · · · · · · · FIERRO | 20894 | d | 2021-06-02T18:00:00 | 2021-05-31T08:00:00 | True | 18 |  | True |
| 1.0d | 0 | 2021-06-03T18:00:00 | 0 | FixedDuration | h | 1 | 2021-06-03T08:00:00 | · · · · · · · HORMIGON | 20895 | d | 2021-06-03T18:00:00 | 2021-06-03T08:00:00 | True | 18 |  | True |
| 8.0d | 0 | 2021-06-08T18:00:00 | 0 | Normal | h | 8 | 2021-05-28T08:00:00 | · · · · · CICLO 3 | 20896 | d | 2021-06-08T18:00:00 | 2021-05-28T08:00:00 | True | 18 | True |  |
| 5.0d | 0 | 2021-06-03T18:00:00 | 0 | Normal | h | 5 | 2021-05-28T08:00:00 | · · · · · · ELEVACION | 20897 | d | 2021-06-03T18:00:00 | 2021-05-28T08:00:00 | True | 18 | True |  |
| 3.0d | 0 | 2021-06-01T18:00:00 | 0 | FixedDuration | h | 3 | 2021-05-28T08:00:00 | · · · · · · · FIERRO | 20898 | d | 2021-06-01T18:00:00 | 2021-05-28T08:00:00 | True | 18 |  | True |
| 3.0d | 0 | 2021-06-02T18:00:00 | 0 | FixedDuration | h | 3 | 2021-05-31T08:00:00 | · · · · · · · MOLDAJE | 20899 | d | 2021-06-02T18:00:00 | 2021-05-31T08:00:00 | True | 18 |  | True |
| 3.0d | 0 | 2021-06-02T18:00:00 | 0 | FixedDuration | h | 3 | 2021-05-31T08:00:00 | · · · · · · · HORMIGON | 20900 | d | 2021-06-02T18:00:00 | 2021-05-31T08:00:00 | True | 18 |  | True |
| 3.0d | 0 | 2021-06-03T18:00:00 | 0 | FixedDuration | h | 3 | 2021-06-01T08:00:00 | · · · · · · · DESCIMBRE | 20901 | d | 2021-06-03T18:00:00 | 2021-06-01T08:00:00 | True | 18 |  | True |
| 5.0d | 0 | 2021-06-08T18:00:00 | 0 | Normal | h | 5 | 2021-06-02T08:00:00 | · · · · · · LOSA | 20902 | d | 2021-06-08T18:00:00 | 2021-06-02T08:00:00 | True | 18 | True |  |
| 3.0d | 0 | 2021-06-04T18:00:00 | 0 | FixedDuration | h | 3 | 2021-06-02T08:00:00 | · · · · · · · MOLDAJE | 20903 | d | 2021-06-04T18:00:00 | 2021-06-02T08:00:00 | True | 18 |  | True |
| 3.0d | 0 | 2021-06-07T18:00:00 | 0 | FixedDuration | h | 3 | 2021-06-03T08:00:00 | · · · · · · · FIERRO | 20904 | d | 2021-06-07T18:00:00 | 2021-06-03T08:00:00 | True | 18 |  | True |
| 1.0d | 0 | 2021-06-08T18:00:00 | 0 | FixedDuration | h | 1 | 2021-06-08T08:00:00 | · · · · · · · HORMIGON | 20905 | d | 2021-06-08T18:00:00 | 2021-06-08T08:00:00 | True | 18 |  | True |
| 8.0d | 0 | 2021-06-11T18:00:00 | 0 | Normal | h | 8 | 2021-06-02T08:00:00 | · · · · · CICLO 4 | 20906 | d | 2021-06-11T18:00:00 | 2021-06-02T08:00:00 | True | 18 | True |  |
| 5.0d | 0 | 2021-06-08T18:00:00 | 0 | Normal | h | 5 | 2021-06-02T08:00:00 | · · · · · · ELEVACION | 20907 | d | 2021-06-08T18:00:00 | 2021-06-02T08:00:00 | True | 18 | True |  |
| 3.0d | 0 | 2021-06-04T18:00:00 | 0 | FixedDuration | h | 3 | 2021-06-02T08:00:00 | · · · · · · · FIERRO | 20908 | d | 2021-06-04T18:00:00 | 2021-06-02T08:00:00 | True | 18 |  | True |
| 3.0d | 0 | 2021-06-07T18:00:00 | 0 | FixedDuration | h | 3 | 2021-06-03T08:00:00 | · · · · · · · MOLDAJE | 20909 | d | 2021-06-07T18:00:00 | 2021-06-03T08:00:00 | True | 18 |  | True |
| 3.0d | 0 | 2021-06-07T18:00:00 | 0 | FixedDuration | h | 3 | 2021-06-03T08:00:00 | · · · · · · · HORMIGON | 20910 | d | 2021-06-07T18:00:00 | 2021-06-03T08:00:00 | True | 18 |  | True |
| 3.0d | 0 | 2021-06-08T18:00:00 | 0 | FixedDuration | h | 3 | 2021-06-04T08:00:00 | · · · · · · · DESCIMBRE | 20911 | d | 2021-06-08T18:00:00 | 2021-06-04T08:00:00 | True | 18 |  | True |
| 5.0d | 0 | 2021-06-11T18:00:00 | 0 | Normal | h | 5 | 2021-06-07T08:00:00 | · · · · · · LOSA | 20912 | d | 2021-06-11T18:00:00 | 2021-06-07T08:00:00 | True | 18 | True |  |
| 3.0d | 0 | 2021-06-09T18:00:00 | 0 | FixedDuration | h | 3 | 2021-06-07T08:00:00 | · · · · · · · MOLDAJE | 20913 | d | 2021-06-09T18:00:00 | 2021-06-07T08:00:00 | True | 18 |  | True |
| 3.0d | 0 | 2021-06-10T18:00:00 | 0 | FixedDuration | h | 3 | 2021-06-08T08:00:00 | · · · · · · · FIERRO | 20914 | d | 2021-06-10T18:00:00 | 2021-06-08T08:00:00 | True | 18 |  | True |
| 1.0d | 0 | 2021-06-11T18:00:00 | 0 | FixedDuration | h | 1 | 2021-06-11T08:00:00 | · · · · · · · HORMIGON | 20915 | d | 2021-06-11T18:00:00 | 2021-06-11T08:00:00 | True | 18 |  | True |
| 13.0d | 0 | 2021-06-23T18:00:00 | 0 | Normal | h | 13 | 2021-06-07T08:00:00 | · · · · PISO 6 | 19745 | d | 2021-06-23T18:00:00 | 2021-06-07T08:00:00 | True | 18 | True |  |
| 7.0d | 0 | 2021-06-15T18:00:00 | 0 | Normal | h | 7 | 2021-06-07T08:00:00 | · · · · · CICLO 1 | 19746 | d | 2021-06-15T18:00:00 | 2021-06-07T08:00:00 | True | 18 | True |  |
| 4.0d | 0 | 2021-06-10T18:00:00 | 0 | Normal | h | 4 | 2021-06-07T08:00:00 | · · · · · · ELEVACION | 19747 | d | 2021-06-10T18:00:00 | 2021-06-07T08:00:00 | True | 18 | True |  |
| 2.0d | 0 | 2021-06-08T18:00:00 | 0 | FixedDuration | h | 2 | 2021-06-07T08:00:00 | · · · · · · · FIERRO | 19748 | d | 2021-06-08T18:00:00 | 2021-06-07T08:00:00 | True | 18 |  | True |
| 2.0d | 0 | 2021-06-09T18:00:00 | 0 | FixedDuration | h | 2 | 2021-06-08T08:00:00 | · · · · · · · MOLDAJE | 19749 | d | 2021-06-09T18:00:00 | 2021-06-08T08:00:00 | True | 18 |  | True |
| 2.0d | 0 | 2021-06-09T18:00:00 | 0 | FixedDuration | h | 2 | 2021-06-08T08:00:00 | · · · · · · · HORMIGON | 19750 | d | 2021-06-09T18:00:00 | 2021-06-08T08:00:00 | True | 18 |  | True |
| 2.0d | 0 | 2021-06-10T18:00:00 | 0 | FixedDuration | h | 2 | 2021-06-09T08:00:00 | · · · · · · · DESCIMBRE | 19751 | d | 2021-06-10T18:00:00 | 2021-06-09T08:00:00 | True | 18 |  | True |
| 4.0d | 0 | 2021-06-15T18:00:00 | 0 | Normal | h | 4 | 2021-06-10T08:00:00 | · · · · · · LOSA | 19752 | d | 2021-06-15T18:00:00 | 2021-06-10T08:00:00 | True | 18 | True |  |
| 2.0d | 0 | 2021-06-11T18:00:00 | 0 | FixedDuration | h | 2 | 2021-06-10T08:00:00 | · · · · · · · MOLDAJE | 19753 | d | 2021-06-11T18:00:00 | 2021-06-10T08:00:00 | True | 18 |  | True |
| 2.0d | 0 | 2021-06-14T18:00:00 | 0 | FixedDuration | h | 2 | 2021-06-11T08:00:00 | · · · · · · · FIERRO | 19754 | d | 2021-06-14T18:00:00 | 2021-06-11T08:00:00 | True | 18 |  | True |
| 1.0d | 0 | 2021-06-15T18:00:00 | 0 | FixedDuration | h | 1 | 2021-06-15T08:00:00 | · · · · · · · HORMIGON | 19755 | d | 2021-06-15T18:00:00 | 2021-06-15T08:00:00 | True | 18 |  | True |
| 7.0d | 0 | 2021-06-17T18:00:00 | 0 | Normal | h | 7 | 2021-06-09T08:00:00 | · · · · · CICLO 2 | 19756 | d | 2021-06-17T18:00:00 | 2021-06-09T08:00:00 | True | 18 | True |  |
| 4.0d | 0 | 2021-06-14T18:00:00 | 0 | Normal | h | 4 | 2021-06-09T08:00:00 | · · · · · · ELEVACION | 19757 | d | 2021-06-14T18:00:00 | 2021-06-09T08:00:00 | True | 18 | True |  |
| 2.0d | 0 | 2021-06-10T18:00:00 | 0 | FixedDuration | h | 2 | 2021-06-09T08:00:00 | · · · · · · · FIERRO | 19758 | d | 2021-06-10T18:00:00 | 2021-06-09T08:00:00 | True | 18 |  | True |
| 2.0d | 0 | 2021-06-11T18:00:00 | 0 | FixedDuration | h | 2 | 2021-06-10T08:00:00 | · · · · · · · MOLDAJE | 19759 | d | 2021-06-11T18:00:00 | 2021-06-10T08:00:00 | True | 18 |  | True |
| 2.0d | 0 | 2021-06-11T18:00:00 | 0 | FixedDuration | h | 2 | 2021-06-10T08:00:00 | · · · · · · · HORMIGON | 19760 | d | 2021-06-11T18:00:00 | 2021-06-10T08:00:00 | True | 18 |  | True |
| 2.0d | 0 | 2021-06-14T18:00:00 | 0 | FixedDuration | h | 2 | 2021-06-11T08:00:00 | · · · · · · · DESCIMBRE | 19761 | d | 2021-06-14T18:00:00 | 2021-06-11T08:00:00 | True | 18 |  | True |
| 4.0d | 0 | 2021-06-17T18:00:00 | 0 | Normal | h | 4 | 2021-06-14T08:00:00 | · · · · · · LOSA | 19762 | d | 2021-06-17T18:00:00 | 2021-06-14T08:00:00 | True | 18 | True |  |
| 2.0d | 0 | 2021-06-15T18:00:00 | 0 | FixedDuration | h | 2 | 2021-06-14T08:00:00 | · · · · · · · MOLDAJE | 19763 | d | 2021-06-15T18:00:00 | 2021-06-14T08:00:00 | True | 18 |  | True |
| 2.0d | 0 | 2021-06-16T18:00:00 | 0 | FixedDuration | h | 2 | 2021-06-15T08:00:00 | · · · · · · · FIERRO | 19764 | d | 2021-06-16T18:00:00 | 2021-06-15T08:00:00 | True | 18 |  | True |
| 1.0d | 0 | 2021-06-17T18:00:00 | 0 | FixedDuration | h | 1 | 2021-06-17T08:00:00 | · · · · · · · HORMIGON | 19765 | d | 2021-06-17T18:00:00 | 2021-06-17T08:00:00 | True | 18 |  | True |
| 7.0d | 0 | 2021-06-21T18:00:00 | 0 | Normal | h | 7 | 2021-06-11T08:00:00 | · · · · · CICLO 3 | 19766 | d | 2021-06-21T18:00:00 | 2021-06-11T08:00:00 | True | 18 | True |  |
| 4.0d | 0 | 2021-06-16T18:00:00 | 0 | Normal | h | 4 | 2021-06-11T08:00:00 | · · · · · · ELEVACION | 19767 | d | 2021-06-16T18:00:00 | 2021-06-11T08:00:00 | True | 18 | True |  |
| 2.0d | 0 | 2021-06-14T18:00:00 | 0 | FixedDuration | h | 2 | 2021-06-11T08:00:00 | · · · · · · · FIERRO | 19768 | d | 2021-06-14T18:00:00 | 2021-06-11T08:00:00 | True | 18 |  | True |
| 2.0d | 0 | 2021-06-15T18:00:00 | 0 | FixedDuration | h | 2 | 2021-06-14T08:00:00 | · · · · · · · MOLDAJE | 19769 | d | 2021-06-15T18:00:00 | 2021-06-14T08:00:00 | True | 18 |  | True |
| 2.0d | 0 | 2021-06-15T18:00:00 | 0 | FixedDuration | h | 2 | 2021-06-14T08:00:00 | · · · · · · · HORMIGON | 19770 | d | 2021-06-15T18:00:00 | 2021-06-14T08:00:00 | True | 18 |  | True |
| 2.0d | 0 | 2021-06-16T18:00:00 | 0 | FixedDuration | h | 2 | 2021-06-15T08:00:00 | · · · · · · · DESCIMBRE | 19771 | d | 2021-06-16T18:00:00 | 2021-06-15T08:00:00 | True | 18 |  | True |
| 4.0d | 0 | 2021-06-21T18:00:00 | 0 | Normal | h | 4 | 2021-06-16T08:00:00 | · · · · · · LOSA | 19772 | d | 2021-06-21T18:00:00 | 2021-06-16T08:00:00 | True | 18 | True |  |
| 2.0d | 0 | 2021-06-17T18:00:00 | 0 | FixedDuration | h | 2 | 2021-06-16T08:00:00 | · · · · · · · MOLDAJE | 19773 | d | 2021-06-17T18:00:00 | 2021-06-16T08:00:00 | True | 18 |  | True |
| 2.0d | 0 | 2021-06-18T18:00:00 | 0 | FixedDuration | h | 2 | 2021-06-17T08:00:00 | · · · · · · · FIERRO | 19774 | d | 2021-06-18T18:00:00 | 2021-06-17T08:00:00 | True | 18 |  | True |
| 1.0d | 0 | 2021-06-21T18:00:00 | 0 | FixedDuration | h | 1 | 2021-06-21T08:00:00 | · · · · · · · HORMIGON | 19775 | d | 2021-06-21T18:00:00 | 2021-06-21T08:00:00 | True | 18 |  | True |
| 7.0d | 0 | 2021-06-23T18:00:00 | 0 | Normal | h | 7 | 2021-06-15T08:00:00 | · · · · · CICLO 4 | 19776 | d | 2021-06-23T18:00:00 | 2021-06-15T08:00:00 | True | 18 | True |  |
| 4.0d | 0 | 2021-06-18T18:00:00 | 0 | Normal | h | 4 | 2021-06-15T08:00:00 | · · · · · · ELEVACION | 19777 | d | 2021-06-18T18:00:00 | 2021-06-15T08:00:00 | True | 18 | True |  |
| 2.0d | 0 | 2021-06-16T18:00:00 | 0 | FixedDuration | h | 2 | 2021-06-15T08:00:00 | · · · · · · · FIERRO | 19778 | d | 2021-06-16T18:00:00 | 2021-06-15T08:00:00 | True | 18 |  | True |
| 2.0d | 0 | 2021-06-17T18:00:00 | 0 | FixedDuration | h | 2 | 2021-06-16T08:00:00 | · · · · · · · MOLDAJE | 19779 | d | 2021-06-17T18:00:00 | 2021-06-16T08:00:00 | True | 18 |  | True |
| 2.0d | 0 | 2021-06-17T18:00:00 | 0 | FixedDuration | h | 2 | 2021-06-16T08:00:00 | · · · · · · · HORMIGON | 19780 | d | 2021-06-17T18:00:00 | 2021-06-16T08:00:00 | True | 18 |  | True |
| 2.0d | 0 | 2021-06-18T18:00:00 | 0 | FixedDuration | h | 2 | 2021-06-17T08:00:00 | · · · · · · · DESCIMBRE | 19781 | d | 2021-06-18T18:00:00 | 2021-06-17T08:00:00 | True | 18 |  | True |
| 4.0d | 0 | 2021-06-23T18:00:00 | 0 | Normal | h | 4 | 2021-06-18T08:00:00 | · · · · · · LOSA | 19782 | d | 2021-06-23T18:00:00 | 2021-06-18T08:00:00 | True | 18 | True |  |
| 2.0d | 0 | 2021-06-21T18:00:00 | 0 | FixedDuration | h | 2 | 2021-06-18T08:00:00 | · · · · · · · MOLDAJE | 19783 | d | 2021-06-21T18:00:00 | 2021-06-18T08:00:00 | True | 18 |  | True |
| 2.0d | 0 | 2021-06-22T18:00:00 | 0 | FixedDuration | h | 2 | 2021-06-21T08:00:00 | · · · · · · · FIERRO | 19784 | d | 2021-06-22T18:00:00 | 2021-06-21T08:00:00 | True | 18 |  | True |
| 1.0d | 0 | 2021-06-23T18:00:00 | 0 | FixedDuration | h | 1 | 2021-06-23T08:00:00 | · · · · · · · HORMIGON | 19785 | d | 2021-06-23T18:00:00 | 2021-06-23T08:00:00 | True | 18 |  | True |
| 13.0d | 0 | 2021-07-06T18:00:00 | 0 | Normal | h | 13 | 2021-06-17T08:00:00 | · · · · PISO 7 | 20916 | d | 2021-07-06T18:00:00 | 2021-06-17T08:00:00 | True | 18 | True |  |
| 7.0d | 0 | 2021-06-25T18:00:00 | 0 | Normal | h | 7 | 2021-06-17T08:00:00 | · · · · · CICLO 1 | 20917 | d | 2021-06-25T18:00:00 | 2021-06-17T08:00:00 | True | 18 | True |  |
| 4.0d | 0 | 2021-06-22T18:00:00 | 0 | Normal | h | 4 | 2021-06-17T08:00:00 | · · · · · · ELEVACION | 20918 | d | 2021-06-22T18:00:00 | 2021-06-17T08:00:00 | True | 18 | True |  |
| 2.0d | 0 | 2021-06-18T18:00:00 | 0 | FixedDuration | h | 2 | 2021-06-17T08:00:00 | · · · · · · · FIERRO | 20919 | d | 2021-06-18T18:00:00 | 2021-06-17T08:00:00 | True | 18 |  | True |

| baselineDuration | percentDone | endDate | effort | schedulingMode | effortUnit | duration | baselineStartDate | name | id | durationUnit | baselineEndDate | startDate | manuallyScheduled | calendar | rollup | leaf |
| --- | --- | --- | --- | --- | --- | --- | --- | --- | --- | --- | --- | --- | --- | --- | --- | --- |
| 2.0d | 0 | 2021-06-21T18:00:00 | 0 | FixedDuration | h | 2 | 2021-06-18T08:00:00 | · · · · · · · MOLDAJE | 20920 | d | 2021-06-21T18:00:00 | 2021-06-18T08:00:00 | True | 18 |  | True |
| 2.0d | 0 | 2021-06-21T18:00:00 | 0 | FixedDuration | h | 2 | 2021-06-18T08:00:00 | · · · · · · · HORMIGON | 20921 | d | 2021-06-21T18:00:00 | 2021-06-18T08:00:00 | True | 18 |  | True |
| 2.0d | 0 | 2021-06-22T18:00:00 | 0 | FixedDuration | h | 2 | 2021-06-21T08:00:00 | · · · · · · · DESCIMBRE | 20922 | d | 2021-06-22T18:00:00 | 2021-06-21T08:00:00 | True | 18 |  | True |
| 4.0d | 0 | 2021-06-25T18:00:00 | 0 | Normal | h | 4 | 2021-06-22T08:00:00 | · · · · · · LOSA | 20923 | d | 2021-06-25T18:00:00 | 2021-06-22T08:00:00 | True | 18 | True |  |
| 2.0d | 0 | 2021-06-23T18:00:00 | 0 | FixedDuration | h | 2 | 2021-06-22T08:00:00 | · · · · · · · MOLDAJE | 20924 | d | 2021-06-23T18:00:00 | 2021-06-22T08:00:00 | True | 18 |  | True |
| 2.0d | 0 | 2021-06-24T18:00:00 | 0 | FixedDuration | h | 2 | 2021-06-23T08:00:00 | · · · · · · · FIERRO | 20925 | d | 2021-06-24T18:00:00 | 2021-06-23T08:00:00 | True | 18 |  | True |
| 1.0d | 0 | 2021-06-25T18:00:00 | 0 | FixedDuration | h | 1 | 2021-06-25T08:00:00 | · · · · · · · HORMIGON | 20926 | d | 2021-06-25T18:00:00 | 2021-06-25T08:00:00 | True | 18 |  | True |
| 7.0d | 0 | 2021-06-30T18:00:00 | 0 | Normal | h | 7 | 2021-06-21T08:00:00 | · · · · · CICLO 2 | 20927 | d | 2021-06-30T18:00:00 | 2021-06-21T08:00:00 | True | 18 | True |  |
| 4.0d | 0 | 2021-06-24T18:00:00 | 0 | Normal | h | 4 | 2021-06-21T08:00:00 | · · · · · · ELEVACION | 20928 | d | 2021-06-24T18:00:00 | 2021-06-21T08:00:00 | True | 18 | True |  |
| 2.0d | 0 | 2021-06-22T18:00:00 | 0 | FixedDuration | h | 2 | 2021-06-21T08:00:00 | · · · · · · · FIERRO | 20929 | d | 2021-06-22T18:00:00 | 2021-06-21T08:00:00 | True | 18 |  | True |
| 2.0d | 0 | 2021-06-23T18:00:00 | 0 | FixedDuration | h | 2 | 2021-06-22T08:00:00 | · · · · · · · MOLDAJE | 20930 | d | 2021-06-23T18:00:00 | 2021-06-22T08:00:00 | True | 18 |  | True |
| 2.0d | 0 | 2021-06-23T18:00:00 | 0 | FixedDuration | h | 2 | 2021-06-22T08:00:00 | · · · · · · · HORMIGON | 20931 | d | 2021-06-23T18:00:00 | 2021-06-22T08:00:00 | True | 18 |  | True |
| 2.0d | 0 | 2021-06-24T18:00:00 | 0 | FixedDuration | h | 2 | 2021-06-23T08:00:00 | · · · · · · · DESCIMBRE | 20932 | d | 2021-06-24T18:00:00 | 2021-06-23T08:00:00 | True | 18 |  | True |
| 4.0d | 0 | 2021-06-30T18:00:00 | 0 | Normal | h | 4 | 2021-06-24T08:00:00 | · · · · · · LOSA | 20933 | d | 2021-06-30T18:00:00 | 2021-06-24T08:00:00 | True | 18 | True |  |
| 2.0d | 0 | 2021-06-25T18:00:00 | 0 | FixedDuration | h | 2 | 2021-06-24T08:00:00 | · · · · · · · MOLDAJE | 20934 | d | 2021-06-25T18:00:00 | 2021-06-24T08:00:00 | True | 18 |  | True |
| 2.0d | 0 | 2021-06-29T18:00:00 | 0 | FixedDuration | h | 2 | 2021-06-25T08:00:00 | · · · · · · · FIERRO | 20935 | d | 2021-06-29T18:00:00 | 2021-06-25T08:00:00 | True | 18 |  | True |
| 1.0d | 0 | 2021-06-30T18:00:00 | 0 | FixedDuration | h | 1 | 2021-06-30T08:00:00 | · · · · · · · HORMIGON | 20936 | d | 2021-06-30T18:00:00 | 2021-06-30T08:00:00 | True | 18 |  | True |
| 7.0d | 0 | 2021-07-02T18:00:00 | 0 | Normal | h | 7 | 2021-06-23T08:00:00 | · · · · · CICLO 3 | 20937 | d | 2021-07-02T18:00:00 | 2021-06-23T08:00:00 | True | 18 | True |  |
| 4.0d | 0 | 2021-06-29T18:00:00 | 0 | Normal | h | 4 | 2021-06-23T08:00:00 | · · · · · · ELEVACION | 20938 | d | 2021-06-29T18:00:00 | 2021-06-23T08:00:00 | True | 18 | True |  |
| 2.0d | 0 | 2021-06-24T18:00:00 | 0 | FixedDuration | h | 2 | 2021-06-23T08:00:00 | · · · · · · · FIERRO | 20939 | d | 2021-06-24T18:00:00 | 2021-06-23T08:00:00 | True | 18 |  | True |
| 2.0d | 0 | 2021-06-25T18:00:00 | 0 | FixedDuration | h | 2 | 2021-06-24T08:00:00 | · · · · · · · MOLDAJE | 20940 | d | 2021-06-25T18:00:00 | 2021-06-24T08:00:00 | True | 18 |  | True |
| 2.0d | 0 | 2021-06-25T18:00:00 | 0 | FixedDuration | h | 2 | 2021-06-24T08:00:00 | · · · · · · · HORMIGON | 20941 | d | 2021-06-25T18:00:00 | 2021-06-24T08:00:00 | True | 18 |  | True |
| 2.0d | 0 | 2021-06-29T18:00:00 | 0 | FixedDuration | h | 2 | 2021-06-25T08:00:00 | · · · · · · · DESCIMBRE | 20942 | d | 2021-06-29T18:00:00 | 2021-06-25T08:00:00 | True | 18 |  | True |
| 4.0d | 0 | 2021-07-02T18:00:00 | 0 | Normal | h | 4 | 2021-06-29T08:00:00 | · · · · · · LOSA | 20943 | d | 2021-07-02T18:00:00 | 2021-06-29T08:00:00 | True | 18 | True |  |
| 2.0d | 0 | 2021-06-30T18:00:00 | 0 | FixedDuration | h | 2 | 2021-06-29T08:00:00 | · · · · · · · MOLDAJE | 20944 | d | 2021-06-30T18:00:00 | 2021-06-29T08:00:00 | True | 18 |  | True |
| 2.0d | 0 | 2021-07-01T18:00:00 | 0 | FixedDuration | h | 2 | 2021-06-30T08:00:00 | · · · · · · · FIERRO | 20945 | d | 2021-07-01T18:00:00 | 2021-06-30T08:00:00 | True | 18 |  | True |
| 1.0d | 0 | 2021-07-02T18:00:00 | 0 | FixedDuration | h | 1 | 2021-07-02T08:00:00 | · · · · · · · HORMIGON | 20946 | d | 2021-07-02T18:00:00 | 2021-07-02T08:00:00 | True | 18 |  | True |
| 7.0d | 0 | 2021-07-06T18:00:00 | 0 | Normal | h | 7 | 2021-06-25T08:00:00 | · · · · · CICLO 4 | 20947 | d | 2021-07-06T18:00:00 | 2021-06-25T08:00:00 | True | 18 | True |  |
| 4.0d | 0 | 2021-07-01T18:00:00 | 0 | Normal | h | 4 | 2021-06-25T08:00:00 | · · · · · · ELEVACION | 20948 | d | 2021-07-01T18:00:00 | 2021-06-25T08:00:00 | True | 18 | True |  |
| 2.0d | 0 | 2021-06-29T18:00:00 | 0 | FixedDuration | h | 2 | 2021-06-25T08:00:00 | · · · · · · · FIERRO | 20949 | d | 2021-06-29T18:00:00 | 2021-06-25T08:00:00 | True | 18 |  | True |
| 2.0d | 0 | 2021-06-30T18:00:00 | 0 | FixedDuration | h | 2 | 2021-06-29T08:00:00 | · · · · · · · MOLDAJE | 20950 | d | 2021-06-30T18:00:00 | 2021-06-29T08:00:00 | True | 18 |  | True |
| 2.0d | 0 | 2021-06-30T18:00:00 | 0 | FixedDuration | h | 2 | 2021-06-29T08:00:00 | · · · · · · · HORMIGON | 20951 | d | 2021-06-30T18:00:00 | 2021-06-29T08:00:00 | True | 18 |  | True |
| 2.0d | 0 | 2021-07-01T18:00:00 | 0 | FixedDuration | h | 2 | 2021-06-30T08:00:00 | · · · · · · · DESCIMBRE | 20952 | d | 2021-07-01T18:00:00 | 2021-06-30T08:00:00 | True | 18 |  | True |
| 4.0d | 0 | 2021-07-06T18:00:00 | 0 | Normal | h | 4 | 2021-07-01T08:00:00 | · · · · · · LOSA | 20953 | d | 2021-07-06T18:00:00 | 2021-07-01T08:00:00 | True | 18 | True |  |
| 2.0d | 0 | 2021-07-02T18:00:00 | 0 | FixedDuration | h | 2 | 2021-07-01T08:00:00 | · · · · · · · MOLDAJE | 20954 | d | 2021-07-02T18:00:00 | 2021-07-01T08:00:00 | True | 18 |  | True |
| 2.0d | 0 | 2021-07-05T18:00:00 | 0 | FixedDuration | h | 2 | 2021-07-02T08:00:00 | · · · · · · · FIERRO | 20955 | d | 2021-07-05T18:00:00 | 2021-07-02T08:00:00 | True | 18 |  | True |
| 1.0d | 0 | 2021-07-06T18:00:00 | 0 | FixedDuration | h | 1 | 2021-07-06T08:00:00 | · · · · · · · HORMIGON | 20956 | d | 2021-07-06T18:00:00 | 2021-07-06T08:00:00 | True | 18 |  | True |
| 13.0d | 0 | 2021-07-19T18:00:00 | 0 | Normal | h | 13 | 2021-06-30T08:00:00 | · · · · PISO 8 | 20957 | d | 2021-07-19T18:00:00 | 2021-06-30T08:00:00 | True | 18 | True |  |
| 7.0d | 0 | 2021-07-08T18:00:00 | 0 | Normal | h | 7 | 2021-06-30T08:00:00 | · · · · · CICLO 1 | 20958 | d | 2021-07-08T18:00:00 | 2021-06-30T08:00:00 | True | 18 | True |  |
| 4.0d | 0 | 2021-07-05T18:00:00 | 0 | Normal | h | 4 | 2021-06-30T08:00:00 | · · · · · · ELEVACION | 20959 | d | 2021-07-05T18:00:00 | 2021-06-30T08:00:00 | True | 18 | True |  |
| 2.0d | 0 | 2021-07-01T18:00:00 | 0 | FixedDuration | h | 2 | 2021-06-30T08:00:00 | · · · · · · · FIERRO | 20960 | d | 2021-07-01T18:00:00 | 2021-06-30T08:00:00 | True | 18 |  | True |
| 2.0d | 0 | 2021-07-02T18:00:00 | 0 | FixedDuration | h | 2 | 2021-07-01T08:00:00 | · · · · · · · MOLDAJE | 20961 | d | 2021-07-02T18:00:00 | 2021-07-01T08:00:00 | True | 18 |  | True |
| 2.0d | 0 | 2021-07-02T18:00:00 | 0 | FixedDuration | h | 2 | 2021-07-01T08:00:00 | · · · · · · · HORMIGON | 20962 | d | 2021-07-02T18:00:00 | 2021-07-01T08:00:00 | True | 18 |  | True |
| 2.0d | 0 | 2021-07-05T18:00:00 | 0 | FixedDuration | h | 2 | 2021-07-02T08:00:00 | · · · · · · · DESCIMBRE | 20963 | d | 2021-07-05T18:00:00 | 2021-07-02T08:00:00 | True | 18 |  | True |
| 4.0d | 0 | 2021-07-08T18:00:00 | 0 | Normal | h | 4 | 2021-07-05T08:00:00 | · · · · · · LOSA | 20964 | d | 2021-07-08T18:00:00 | 2021-07-05T08:00:00 | True | 18 | True |  |
| 2.0d | 0 | 2021-07-06T18:00:00 | 0 | FixedDuration | h | 2 | 2021-07-05T08:00:00 | · · · · · · · MOLDAJE | 20965 | d | 2021-07-06T18:00:00 | 2021-07-05T08:00:00 | True | 18 |  | True |
| 2.0d | 0 | 2021-07-07T18:00:00 | 0 | FixedDuration | h | 2 | 2021-07-06T08:00:00 | · · · · · · · FIERRO | 20966 | d | 2021-07-07T18:00:00 | 2021-07-06T08:00:00 | True | 18 |  | True |
| 1.0d | 0 | 2021-07-08T18:00:00 | 0 | FixedDuration | h | 1 | 2021-07-08T08:00:00 | · · · · · · · HORMIGON | 20967 | d | 2021-07-08T18:00:00 | 2021-07-08T08:00:00 | True | 18 |  | True |
| 7.0d | 0 | 2021-07-12T18:00:00 | 0 | Normal | h | 7 | 2021-07-02T08:00:00 | · · · · · CICLO 2 | 20968 | d | 2021-07-12T18:00:00 | 2021-07-02T08:00:00 | True | 18 | True |  |
| 4.0d | 0 | 2021-07-07T18:00:00 | 0 | Normal | h | 4 | 2021-07-02T08:00:00 | · · · · · · ELEVACION | 20969 | d | 2021-07-07T18:00:00 | 2021-07-02T08:00:00 | True | 18 | True |  |
| 2.0d | 0 | 2021-07-05T18:00:00 | 0 | FixedDuration | h | 2 | 2021-07-02T08:00:00 | · · · · · · · FIERRO | 20970 | d | 2021-07-05T18:00:00 | 2021-07-02T08:00:00 | True | 18 |  | True |
| 2.0d | 0 | 2021-07-06T18:00:00 | 0 | FixedDuration | h | 2 | 2021-07-05T08:00:00 | · · · · · · · MOLDAJE | 20971 | d | 2021-07-06T18:00:00 | 2021-07-05T08:00:00 | True | 18 |  | True |
| 2.0d | 0 | 2021-07-06T18:00:00 | 0 | FixedDuration | h | 2 | 2021-07-05T08:00:00 | · · · · · · · HORMIGON | 20972 | d | 2021-07-06T18:00:00 | 2021-07-05T08:00:00 | True | 18 |  | True |
| 2.0d | 0 | 2021-07-07T18:00:00 | 0 | FixedDuration | h | 2 | 2021-07-06T08:00:00 | · · · · · · · DESCIMBRE | 20973 | d | 2021-07-07T18:00:00 | 2021-07-06T08:00:00 | True | 18 |  | True |
| 4.0d | 0 | 2021-07-12T18:00:00 | 0 | Normal | h | 4 | 2021-07-07T08:00:00 | · · · · · · LOSA | 20974 | d | 2021-07-12T18:00:00 | 2021-07-07T08:00:00 | True | 18 | True |  |
| 2.0d | 0 | 2021-07-08T18:00:00 | 0 | FixedDuration | h | 2 | 2021-07-07T08:00:00 | · · · · · · · MOLDAJE | 20975 | d | 2021-07-08T18:00:00 | 2021-07-07T08:00:00 | True | 18 |  | True |
| 2.0d | 0 | 2021-07-09T18:00:00 | 0 | FixedDuration | h | 2 | 2021-07-08T08:00:00 | · · · · · · · FIERRO | 20976 | d | 2021-07-09T18:00:00 | 2021-07-08T08:00:00 | True | 18 |  | True |
| 1.0d | 0 | 2021-07-12T18:00:00 | 0 | FixedDuration | h | 1 | 2021-07-12T08:00:00 | · · · · · · · HORMIGON | 20977 | d | 2021-07-12T18:00:00 | 2021-07-12T08:00:00 | True | 18 |  | True |
| 7.0d | 0 | 2021-07-14T18:00:00 | 0 | Normal | h | 7 | 2021-07-06T08:00:00 | · · · · · CICLO 3 | 20978 | d | 2021-07-14T18:00:00 | 2021-07-06T08:00:00 | True | 18 | True |  |
| 4.0d | 0 | 2021-07-09T18:00:00 | 0 | Normal | h | 4 | 2021-07-06T08:00:00 | · · · · · · ELEVACION | 20979 | d | 2021-07-09T18:00:00 | 2021-07-06T08:00:00 | True | 18 | True |  |
| 2.0d | 0 | 2021-07-07T18:00:00 | 0 | FixedDuration | h | 2 | 2021-07-06T08:00:00 | · · · · · · · FIERRO | 20980 | d | 2021-07-07T18:00:00 | 2021-07-06T08:00:00 | True | 18 |  | True |
| 2.0d | 0 | 2021-07-08T18:00:00 | 0 | FixedDuration | h | 2 | 2021-07-07T08:00:00 | · · · · · · · MOLDAJE | 20981 | d | 2021-07-08T18:00:00 | 2021-07-07T08:00:00 | True | 18 |  | True |
| 2.0d | 0 | 2021-07-08T18:00:00 | 0 | FixedDuration | h | 2 | 2021-07-07T08:00:00 | · · · · · · · HORMIGON | 20982 | d | 2021-07-08T18:00:00 | 2021-07-07T08:00:00 | True | 18 |  | True |
| 2.0d | 0 | 2021-07-09T18:00:00 | 0 | FixedDuration | h | 2 | 2021-07-08T08:00:00 | · · · · · · · DESCIMBRE | 20983 | d | 2021-07-09T18:00:00 | 2021-07-08T08:00:00 | True | 18 |  | True |
| 4.0d | 0 | 2021-07-14T18:00:00 | 0 | Normal | h | 4 | 2021-07-09T08:00:00 | · · · · · · LOSA | 20984 | d | 2021-07-14T18:00:00 | 2021-07-09T08:00:00 | True | 18 | True |  |
| 2.0d | 0 | 2021-07-12T18:00:00 | 0 | FixedDuration | h | 2 | 2021-07-09T08:00:00 | · · · · · · · MOLDAJE | 20985 | d | 2021-07-12T18:00:00 | 2021-07-09T08:00:00 | True | 18 |  | True |
| 2.0d | 0 | 2021-07-13T18:00:00 | 0 | FixedDuration | h | 2 | 2021-07-12T08:00:00 | · · · · · · · FIERRO | 20986 | d | 2021-07-13T18:00:00 | 2021-07-12T08:00:00 | True | 18 |  | True |
| 1.0d | 0 | 2021-07-14T18:00:00 | 0 | FixedDuration | h | 1 | 2021-07-14T08:00:00 | · · · · · · · HORMIGON | 20987 | d | 2021-07-14T18:00:00 | 2021-07-14T08:00:00 | True | 18 |  | True |
| 7.0d | 0 | 2021-07-19T18:00:00 | 0 | Normal | h | 7 | 2021-07-08T08:00:00 | · · · · · CICLO 4 | 20988 | d | 2021-07-19T18:00:00 | 2021-07-08T08:00:00 | True | 18 | True |  |
| 4.0d | 0 | 2021-07-13T18:00:00 | 0 | Normal | h | 4 | 2021-07-08T08:00:00 | · · · · · · ELEVACION | 20989 | d | 2021-07-13T18:00:00 | 2021-07-08T08:00:00 | True | 18 | True |  |

| baselineDuration | percentDone | endDate | effort | schedulingMode | effortUnit | duration | baselineStartDate | name | id | durationUnit | baselineEndDate | startDate | manuallyScheduled | calendar | rollup | leaf |
| --- | --- | --- | --- | --- | --- | --- | --- | --- | --- | --- | --- | --- | --- | --- | --- | --- |
| 2.0d | 0 | 2021-07-09T18:00:00 | 0 | FixedDuration | h | 2 | 2021-07-08T08:00:00 | · · · · · · · FIERRO | 20990 | d | 2021-07-09T18:00:00 | 2021-07-08T08:00:00 | True | 18 |  | True |
| 2.0d | 0 | 2021-07-12T18:00:00 | 0 | FixedDuration | h | 2 | 2021-07-09T08:00:00 | · · · · · · · MOLDAJE | 20991 | d | 2021-07-12T18:00:00 | 2021-07-09T08:00:00 | True | 18 |  | True |
| 2.0d | 0 | 2021-07-12T18:00:00 | 0 | FixedDuration | h | 2 | 2021-07-09T08:00:00 | · · · · · · · HORMIGON | 20992 | d | 2021-07-12T18:00:00 | 2021-07-09T08:00:00 | True | 18 |  | True |
| 2.0d | 0 | 2021-07-13T18:00:00 | 0 | FixedDuration | h | 2 | 2021-07-12T08:00:00 | · · · · · · · DESCIMBRE | 20993 | d | 2021-07-13T18:00:00 | 2021-07-12T08:00:00 | True | 18 |  | True |
| 4.0d | 0 | 2021-07-19T18:00:00 | 0 | Normal | h | 4 | 2021-07-13T08:00:00 | · · · · · · LOSA | 20994 | d | 2021-07-19T18:00:00 | 2021-07-13T08:00:00 | True | 18 | True |  |
| 2.0d | 0 | 2021-07-14T18:00:00 | 0 | FixedDuration | h | 2 | 2021-07-13T08:00:00 | · · · · · · · MOLDAJE | 20995 | d | 2021-07-14T18:00:00 | 2021-07-13T08:00:00 | True | 18 |  | True |
| 2.0d | 0 | 2021-07-15T18:00:00 | 0 | FixedDuration | h | 2 | 2021-07-14T08:00:00 | · · · · · · · FIERRO | 20996 | d | 2021-07-15T18:00:00 | 2021-07-14T08:00:00 | True | 18 |  | True |
| 1.0d | 0 | 2021-07-19T18:00:00 | 0 | FixedDuration | h | 1 | 2021-07-19T08:00:00 | · · · · · · · HORMIGON | 20997 | d | 2021-07-19T18:00:00 | 2021-07-19T08:00:00 | True | 18 |  | True |
| 11.0d | 0 | 2021-07-27T18:00:00 | 0 | Normal | h | 11 | 2021-07-12T08:00:00 | · · · · PISO 9 | 19868 | d | 2021-07-27T18:00:00 | 2021-07-12T08:00:00 | True | 18 | True |  |
| 7.0d | 0 | 2021-07-21T18:00:00 | 0 | Normal | h | 7 | 2021-07-12T08:00:00 | · · · · · CICLO 1 | 19869 | d | 2021-07-21T18:00:00 | 2021-07-12T08:00:00 | True | 18 | True |  |
| 4.0d | 0 | 2021-07-15T18:00:00 | 0 | Normal | h | 4 | 2021-07-12T08:00:00 | · · · · · · ELEVACION | 19870 | d | 2021-07-15T18:00:00 | 2021-07-12T08:00:00 | True | 18 | True |  |
| 2.0d | 0 | 2021-07-13T18:00:00 | 0 | FixedDuration | h | 2 | 2021-07-12T08:00:00 | · · · · · · · FIERRO | 19871 | d | 2021-07-13T18:00:00 | 2021-07-12T08:00:00 | True | 18 |  | True |
| 2.0d | 0 | 2021-07-14T18:00:00 | 0 | FixedDuration | h | 2 | 2021-07-13T08:00:00 | · · · · · · · MOLDAJE | 19872 | d | 2021-07-14T18:00:00 | 2021-07-13T08:00:00 | True | 18 |  | True |
| 2.0d | 0 | 2021-07-14T18:00:00 | 0 | FixedDuration | h | 2 | 2021-07-13T08:00:00 | · · · · · · · HORMIGON | 19873 | d | 2021-07-14T18:00:00 | 2021-07-13T08:00:00 | True | 18 |  | True |
| 2.0d | 0 | 2021-07-15T18:00:00 | 0 | FixedDuration | h | 2 | 2021-07-14T08:00:00 | · · · · · · · DESCIMBRE | 19874 | d | 2021-07-15T18:00:00 | 2021-07-14T08:00:00 | True | 18 |  | True |
| 4.0d | 0 | 2021-07-21T18:00:00 | 0 | Normal | h | 4 | 2021-07-15T08:00:00 | · · · · · · LOSA | 19875 | d | 2021-07-21T18:00:00 | 2021-07-15T08:00:00 | True | 18 | True |  |
| 2.0d | 0 | 2021-07-19T18:00:00 | 0 | FixedDuration | h | 2 | 2021-07-15T08:00:00 | · · · · · · · MOLDAJE | 19876 | d | 2021-07-19T18:00:00 | 2021-07-15T08:00:00 | True | 18 |  | True |
| 2.0d | 0 | 2021-07-20T18:00:00 | 0 | FixedDuration | h | 2 | 2021-07-19T08:00:00 | · · · · · · · FIERRO | 19877 | d | 2021-07-20T18:00:00 | 2021-07-19T08:00:00 | True | 18 |  | True |
| 1.0d | 0 | 2021-07-21T18:00:00 | 0 | FixedDuration | h | 1 | 2021-07-21T08:00:00 | · · · · · · · HORMIGON | 19878 | d | 2021-07-21T18:00:00 | 2021-07-21T08:00:00 | True | 18 |  | True |
| 9.0d | 0 | 2021-07-27T18:00:00 | 0 | Normal | h | 9 | 2021-07-14T08:00:00 | · · · · · CICLO 2 | 19879 | d | 2021-07-27T18:00:00 | 2021-07-14T08:00:00 | True | 18 | True |  |
| 6.0d | 0 | 2021-07-22T18:00:00 | 0 | Normal | h | 6 | 2021-07-14T08:00:00 | · · · · · · ELEVACION | 19880 | d | 2021-07-22T18:00:00 | 2021-07-14T08:00:00 | True | 18 | True |  |
| 2.0d | 0 | 2021-07-15T18:00:00 | 0 | FixedDuration | h | 2 | 2021-07-14T08:00:00 | · · · · · · · FIERRO | 19881 | d | 2021-07-15T18:00:00 | 2021-07-14T08:00:00 | True | 18 |  | True |
| 2.0d | 0 | 2021-07-19T18:00:00 | 0 | FixedDuration | h | 2 | 2021-07-15T08:00:00 | · · · · · · · MOLDAJE | 19882 | d | 2021-07-19T18:00:00 | 2021-07-15T08:00:00 | True | 18 |  | True |
| 2.0d | 0 | 2021-07-21T18:00:00 | 0 | FixedDuration | h | 2 | 2021-07-20T08:00:00 | · · · · · · · HORMIGON | 19883 | d | 2021-07-21T18:00:00 | 2021-07-20T08:00:00 | True | 18 |  | True |
| 2.0d | 0 | 2021-07-22T18:00:00 | 0 | FixedDuration | h | 2 | 2021-07-21T08:00:00 | · · · · · · · DESCIMBRE | 19884 | d | 2021-07-22T18:00:00 | 2021-07-21T08:00:00 | True | 18 |  | True |
| 4.0d | 0 | 2021-07-27T18:00:00 | 0 | Normal | h | 4 | 2021-07-22T08:00:00 | · · · · · · LOSA | 19885 | d | 2021-07-27T18:00:00 | 2021-07-22T08:00:00 | True | 18 | True |  |
| 2.0d | 0 | 2021-07-23T18:00:00 | 0 | FixedDuration | h | 2 | 2021-07-22T08:00:00 | · · · · · · · MOLDAJE | 19886 | d | 2021-07-23T18:00:00 | 2021-07-22T08:00:00 | True | 18 |  | True |
| 2.0d | 0 | 2021-07-26T18:00:00 | 0 | FixedDuration | h | 2 | 2021-07-23T08:00:00 | · · · · · · · FIERRO | 19887 | d | 2021-07-26T18:00:00 | 2021-07-23T08:00:00 | True | 18 |  | True |
| 1.0d | 0 | 2021-07-27T18:00:00 | 0 | FixedDuration | h | 1 | 2021-07-27T08:00:00 | · · · · · · · HORMIGON | 19888 | d | 2021-07-27T18:00:00 | 2021-07-27T08:00:00 | True | 18 |  | True |
| 7.0d | 0 | 2021-07-27T18:00:00 | 0 | Normal | h | 7 | 2021-07-19T08:00:00 | · · · · · CICLO 3 | 19889 | d | 2021-07-27T18:00:00 | 2021-07-19T08:00:00 | True | 18 | True |  |
| 4.0d | 0 | 2021-07-22T18:00:00 | 0 | Normal | h | 4 | 2021-07-19T08:00:00 | · · · · · · ELEVACION | 19890 | d | 2021-07-22T18:00:00 | 2021-07-19T08:00:00 | True | 18 | True |  |
| 2.0d | 0 | 2021-07-20T18:00:00 | 0 | FixedDuration | h | 2 | 2021-07-19T08:00:00 | · · · · · · · FIERRO | 19891 | d | 2021-07-20T18:00:00 | 2021-07-19T08:00:00 | True | 18 |  | True |
| 2.0d | 0 | 2021-07-21T18:00:00 | 0 | FixedDuration | h | 2 | 2021-07-20T08:00:00 | · · · · · · · MOLDAJE | 19892 | d | 2021-07-21T18:00:00 | 2021-07-20T08:00:00 | True | 18 |  | True |
| 2.0d | 0 | 2021-07-21T18:00:00 | 0 | FixedDuration | h | 2 | 2021-07-20T08:00:00 | · · · · · · · HORMIGON | 19893 | d | 2021-07-21T18:00:00 | 2021-07-20T08:00:00 | True | 18 |  | True |
| 2.0d | 0 | 2021-07-22T18:00:00 | 0 | FixedDuration | h | 2 | 2021-07-21T08:00:00 | · · · · · · · DESCIMBRE | 19894 | d | 2021-07-22T18:00:00 | 2021-07-21T08:00:00 | True | 18 |  | True |
| 4.0d | 0 | 2021-07-27T18:00:00 | 0 | Normal | h | 4 | 2021-07-22T08:00:00 | · · · · · · LOSA | 19895 | d | 2021-07-27T18:00:00 | 2021-07-22T08:00:00 | True | 18 | True |  |
| 2.0d | 0 | 2021-07-23T18:00:00 | 0 | FixedDuration | h | 2 | 2021-07-22T08:00:00 | · · · · · · · MOLDAJE | 19896 | d | 2021-07-23T18:00:00 | 2021-07-22T08:00:00 | True | 18 |  | True |
| 2.0d | 0 | 2021-07-26T18:00:00 | 0 | FixedDuration | h | 2 | 2021-07-23T08:00:00 | · · · · · · · FIERRO | 19897 | d | 2021-07-26T18:00:00 | 2021-07-23T08:00:00 | True | 18 |  | True |
| 1.0d | 0 | 2021-07-27T18:00:00 | 0 | FixedDuration | h | 1 | 2021-07-27T08:00:00 | · · · · · · · HORMIGON | 19898 | d | 2021-07-27T18:00:00 | 2021-07-27T08:00:00 | True | 18 |  | True |
| 11.0d | 0 | 2021-08-04T18:00:00 | 0 | Normal | h | 11 | 2021-07-21T08:00:00 | · · · · PISO 10 | 20998 | d | 2021-08-04T18:00:00 | 2021-07-21T08:00:00 | True | 18 | True |  |
| 7.0d | 0 | 2021-07-29T18:00:00 | 0 | Normal | h | 7 | 2021-07-21T08:00:00 | · · · · · CICLO 1 | 20999 | d | 2021-07-29T18:00:00 | 2021-07-21T08:00:00 | True | 18 | True |  |
| 4.0d | 0 | 2021-07-26T18:00:00 | 0 | Normal | h | 4 | 2021-07-21T08:00:00 | · · · · · · ELEVACION | 21000 | d | 2021-07-26T18:00:00 | 2021-07-21T08:00:00 | True | 18 | True |  |
| 2.0d | 0 | 2021-07-22T18:00:00 | 0 | FixedDuration | h | 2 | 2021-07-21T08:00:00 | · · · · · · · FIERRO | 21001 | d | 2021-07-22T18:00:00 | 2021-07-21T08:00:00 | True | 18 |  | True |
| 2.0d | 0 | 2021-07-23T18:00:00 | 0 | FixedDuration | h | 2 | 2021-07-22T08:00:00 | · · · · · · · MOLDAJE | 21002 | d | 2021-07-23T18:00:00 | 2021-07-22T08:00:00 | True | 18 |  | True |
| 2.0d | 0 | 2021-07-23T18:00:00 | 0 | FixedDuration | h | 2 | 2021-07-22T08:00:00 | · · · · · · · HORMIGON | 21003 | d | 2021-07-23T18:00:00 | 2021-07-22T08:00:00 | True | 18 |  | True |
| 2.0d | 0 | 2021-07-26T18:00:00 | 0 | FixedDuration | h | 2 | 2021-07-23T08:00:00 | · · · · · · · DESCIMBRE | 21004 | d | 2021-07-26T18:00:00 | 2021-07-23T08:00:00 | True | 18 |  | True |
| 4.0d | 0 | 2021-07-29T18:00:00 | 0 | Normal | h | 4 | 2021-07-26T08:00:00 | · · · · · · LOSA | 21005 | d | 2021-07-29T18:00:00 | 2021-07-26T08:00:00 | True | 18 | True |  |
| 2.0d | 0 | 2021-07-27T18:00:00 | 0 | FixedDuration | h | 2 | 2021-07-26T08:00:00 | · · · · · · · MOLDAJE | 21006 | d | 2021-07-27T18:00:00 | 2021-07-26T08:00:00 | True | 18 |  | True |
| 2.0d | 0 | 2021-07-28T18:00:00 | 0 | FixedDuration | h | 2 | 2021-07-27T08:00:00 | · · · · · · · FIERRO | 21007 | d | 2021-07-28T18:00:00 | 2021-07-27T08:00:00 | True | 18 |  | True |
| 1.0d | 0 | 2021-07-29T18:00:00 | 0 | FixedDuration | h | 1 | 2021-07-29T08:00:00 | · · · · · · · HORMIGON | 21008 | d | 2021-07-29T18:00:00 | 2021-07-29T08:00:00 | True | 18 |  | True |
| 9.0d | 0 | 2021-08-04T18:00:00 | 0 | Normal | h | 9 | 2021-07-23T08:00:00 | · · · · · CICLO 2 | 21009 | d | 2021-08-04T18:00:00 | 2021-07-23T08:00:00 | True | 18 | True |  |
| 6.0d | 0 | 2021-07-30T18:00:00 | 0 | Normal | h | 6 | 2021-07-23T08:00:00 | · · · · · · ELEVACION | 21010 | d | 2021-07-30T18:00:00 | 2021-07-23T08:00:00 | True | 18 | True |  |
| 2.0d | 0 | 2021-07-26T18:00:00 | 0 | FixedDuration | h | 2 | 2021-07-23T08:00:00 | · · · · · · · FIERRO | 21011 | d | 2021-07-26T18:00:00 | 2021-07-23T08:00:00 | True | 18 |  | True |
| 2.0d | 0 | 2021-07-27T18:00:00 | 0 | FixedDuration | h | 2 | 2021-07-26T08:00:00 | · · · · · · · MOLDAJE | 21012 | d | 2021-07-27T18:00:00 | 2021-07-26T08:00:00 | True | 18 |  | True |
| 2.0d | 0 | 2021-07-29T18:00:00 | 0 | FixedDuration | h | 2 | 2021-07-28T08:00:00 | · · · · · · · HORMIGON | 21013 | d | 2021-07-29T18:00:00 | 2021-07-28T08:00:00 | True | 18 |  | True |
| 2.0d | 0 | 2021-07-30T18:00:00 | 0 | FixedDuration | h | 2 | 2021-07-29T08:00:00 | · · · · · · · DESCIMBRE | 21014 | d | 2021-07-30T18:00:00 | 2021-07-29T08:00:00 | True | 18 |  | True |
| 4.0d | 0 | 2021-08-04T18:00:00 | 0 | Normal | h | 4 | 2021-07-30T08:00:00 | · · · · · · LOSA | 21015 | d | 2021-08-04T18:00:00 | 2021-07-30T08:00:00 | True | 18 | True |  |
| 2.0d | 0 | 2021-08-02T18:00:00 | 0 | FixedDuration | h | 2 | 2021-07-30T08:00:00 | · · · · · · · MOLDAJE | 21016 | d | 2021-08-02T18:00:00 | 2021-07-30T08:00:00 | True | 18 |  | True |
| 2.0d | 0 | 2021-08-03T18:00:00 | 0 | FixedDuration | h | 2 | 2021-08-02T08:00:00 | · · · · · · · FIERRO | 21017 | d | 2021-08-03T18:00:00 | 2021-08-02T08:00:00 | True | 18 |  | True |
| 1.0d | 0 | 2021-08-04T18:00:00 | 0 | FixedDuration | h | 1 | 2021-08-04T08:00:00 | · · · · · · · HORMIGON | 21018 | d | 2021-08-04T18:00:00 | 2021-08-04T08:00:00 | True | 18 |  | True |
| 7.0d | 0 | 2021-08-04T18:00:00 | 0 | Normal | h | 7 | 2021-07-27T08:00:00 | · · · · · CICLO 3 | 21019 | d | 2021-08-04T18:00:00 | 2021-07-27T08:00:00 | True | 18 | True |  |
| 4.0d | 0 | 2021-07-30T18:00:00 | 0 | Normal | h | 4 | 2021-07-27T08:00:00 | · · · · · · ELEVACION | 21020 | d | 2021-07-30T18:00:00 | 2021-07-27T08:00:00 | True | 18 | True |  |
| 2.0d | 0 | 2021-07-28T18:00:00 | 0 | FixedDuration | h | 2 | 2021-07-27T08:00:00 | · · · · · · · FIERRO | 21021 | d | 2021-07-28T18:00:00 | 2021-07-27T08:00:00 | True | 18 |  | True |
| 2.0d | 0 | 2021-07-29T18:00:00 | 0 | FixedDuration | h | 2 | 2021-07-28T08:00:00 | · · · · · · · MOLDAJE | 21022 | d | 2021-07-29T18:00:00 | 2021-07-28T08:00:00 | True | 18 |  | True |
| 2.0d | 0 | 2021-07-29T18:00:00 | 0 | FixedDuration | h | 2 | 2021-07-28T08:00:00 | · · · · · · · HORMIGON | 21023 | d | 2021-07-29T18:00:00 | 2021-07-28T08:00:00 | True | 18 |  | True |
| 2.0d | 0 | 2021-07-30T18:00:00 | 0 | FixedDuration | h | 2 | 2021-07-29T08:00:00 | · · · · · · · DESCIMBRE | 21024 | d | 2021-07-30T18:00:00 | 2021-07-29T08:00:00 | True | 18 |  | True |
| 4.0d | 0 | 2021-08-04T18:00:00 | 0 | Normal | h | 4 | 2021-07-30T08:00:00 | · · · · · · LOSA | 21025 | d | 2021-08-04T18:00:00 | 2021-07-30T08:00:00 | True | 18 | True |  |
| 2.0d | 0 | 2021-08-02T18:00:00 | 0 | FixedDuration | h | 2 | 2021-07-30T08:00:00 | · · · · · · · MOLDAJE | 21026 | d | 2021-08-02T18:00:00 | 2021-07-30T08:00:00 | True | 18 |  | True |
| 2.0d | 0 | 2021-08-03T18:00:00 | 0 | FixedDuration | h | 2 | 2021-08-02T08:00:00 | · · · · · · · FIERRO | 21027 | d | 2021-08-03T18:00:00 | 2021-08-02T08:00:00 | True | 18 |  | True |
| 1.0d | 0 | 2021-08-04T18:00:00 | 0 | FixedDuration | h | 1 | 2021-08-04T08:00:00 | · · · · · · · HORMIGON | 21028 | d | 2021-08-04T18:00:00 | 2021-08-04T08:00:00 | True | 18 |  | True |

| baselineDuration | percentDone | endDate | effort | schedulingMode | effortUnit | duration | baselineStartDate | name | id | durationUnit | baselineEndDate | startDate | manuallyScheduled | calendar | rollup | leaf |
| --- | --- | --- | --- | --- | --- | --- | --- | --- | --- | --- | --- | --- | --- | --- | --- | --- |
| 11.0d | 0 | 2021-08-12T18:00:00 | 0 | Normal | h | 11 | 2021-07-29T08:00:00 | · · · · PISO 11 | 21029 | d | 2021-08-12T18:00:00 | 2021-07-29T08:00:00 | True | 18 | True |  |
| 7.0d | 0 | 2021-08-06T18:00:00 | 0 | Normal | h | 7 | 2021-07-29T08:00:00 | · · · · · CICLO 1 | 21030 | d | 2021-08-06T18:00:00 | 2021-07-29T08:00:00 | True | 18 | True |  |
| 4.0d | 0 | 2021-08-03T18:00:00 | 0 | Normal | h | 4 | 2021-07-29T08:00:00 | · · · · · · ELEVACION | 21031 | d | 2021-08-03T18:00:00 | 2021-07-29T08:00:00 | True | 18 | True |  |
| 2.0d | 0 | 2021-07-30T18:00:00 | 0 | FixedDuration | h | 2 | 2021-07-29T08:00:00 | · · · · · · · FIERRO | 21032 | d | 2021-07-30T18:00:00 | 2021-07-29T08:00:00 | True | 18 |  | True |
| 2.0d | 0 | 2021-08-02T18:00:00 | 0 | FixedDuration | h | 2 | 2021-07-30T08:00:00 | · · · · · · · MOLDAJE | 21033 | d | 2021-08-02T18:00:00 | 2021-07-30T08:00:00 | True | 18 |  | True |
| 2.0d | 0 | 2021-08-02T18:00:00 | 0 | FixedDuration | h | 2 | 2021-07-30T08:00:00 | · · · · · · · HORMIGON | 21034 | d | 2021-08-02T18:00:00 | 2021-07-30T08:00:00 | True | 18 |  | True |
| 2.0d | 0 | 2021-08-03T18:00:00 | 0 | FixedDuration | h | 2 | 2021-08-02T08:00:00 | · · · · · · · DESCIMBRE | 21035 | d | 2021-08-03T18:00:00 | 2021-08-02T08:00:00 | True | 18 |  | True |
| 4.0d | 0 | 2021-08-06T18:00:00 | 0 | Normal | h | 4 | 2021-08-03T08:00:00 | · · · · · · LOSA | 21036 | d | 2021-08-06T18:00:00 | 2021-08-03T08:00:00 | True | 18 | True |  |
| 2.0d | 0 | 2021-08-04T18:00:00 | 0 | FixedDuration | h | 2 | 2021-08-03T08:00:00 | · · · · · · · MOLDAJE | 21037 | d | 2021-08-04T18:00:00 | 2021-08-03T08:00:00 | True | 18 |  | True |
| 2.0d | 0 | 2021-08-05T18:00:00 | 0 | FixedDuration | h | 2 | 2021-08-04T08:00:00 | · · · · · · · FIERRO | 21038 | d | 2021-08-05T18:00:00 | 2021-08-04T08:00:00 | True | 18 |  | True |
| 1.0d | 0 | 2021-08-06T18:00:00 | 0 | FixedDuration | h | 1 | 2021-08-06T08:00:00 | · · · · · · · HORMIGON | 21039 | d | 2021-08-06T18:00:00 | 2021-08-06T08:00:00 | True | 18 |  | True |
| 9.0d | 0 | 2021-08-12T18:00:00 | 0 | Normal | h | 9 | 2021-08-02T08:00:00 | · · · · · CICLO 2 | 21040 | d | 2021-08-12T18:00:00 | 2021-08-02T08:00:00 | True | 18 | True |  |
| 6.0d | 0 | 2021-08-09T18:00:00 | 0 | Normal | h | 6 | 2021-08-02T08:00:00 | · · · · · · ELEVACION | 21041 | d | 2021-08-09T18:00:00 | 2021-08-02T08:00:00 | True | 18 | True |  |
| 2.0d | 0 | 2021-08-03T18:00:00 | 0 | FixedDuration | h | 2 | 2021-08-02T08:00:00 | · · · · · · · FIERRO | 21042 | d | 2021-08-03T18:00:00 | 2021-08-02T08:00:00 | True | 18 |  | True |
| 2.0d | 0 | 2021-08-04T18:00:00 | 0 | FixedDuration | h | 2 | 2021-08-03T08:00:00 | · · · · · · · MOLDAJE | 21043 | d | 2021-08-04T18:00:00 | 2021-08-03T08:00:00 | True | 18 |  | True |
| 2.0d | 0 | 2021-08-06T18:00:00 | 0 | FixedDuration | h | 2 | 2021-08-05T08:00:00 | · · · · · · · HORMIGON | 21044 | d | 2021-08-06T18:00:00 | 2021-08-05T08:00:00 | True | 18 |  | True |
| 2.0d | 0 | 2021-08-09T18:00:00 | 0 | FixedDuration | h | 2 | 2021-08-06T08:00:00 | · · · · · · · DESCIMBRE | 21045 | d | 2021-08-09T18:00:00 | 2021-08-06T08:00:00 | True | 18 |  | True |
| 4.0d | 0 | 2021-08-12T18:00:00 | 0 | Normal | h | 4 | 2021-08-09T08:00:00 | · · · · · · LOSA | 21046 | d | 2021-08-12T18:00:00 | 2021-08-09T08:00:00 | True | 18 | True |  |
| 2.0d | 0 | 2021-08-10T18:00:00 | 0 | FixedDuration | h | 2 | 2021-08-09T08:00:00 | · · · · · · · MOLDAJE | 21047 | d | 2021-08-10T18:00:00 | 2021-08-09T08:00:00 | True | 18 |  | True |
| 2.0d | 0 | 2021-08-11T18:00:00 | 0 | FixedDuration | h | 2 | 2021-08-10T08:00:00 | · · · · · · · FIERRO | 21048 | d | 2021-08-11T18:00:00 | 2021-08-10T08:00:00 | True | 18 |  | True |
| 1.0d | 0 | 2021-08-12T18:00:00 | 0 | FixedDuration | h | 1 | 2021-08-12T08:00:00 | · · · · · · · HORMIGON | 21049 | d | 2021-08-12T18:00:00 | 2021-08-12T08:00:00 | True | 18 |  | True |
| 7.0d | 0 | 2021-08-12T18:00:00 | 0 | Normal | h | 7 | 2021-08-04T08:00:00 | · · · · · CICLO 3 | 21050 | d | 2021-08-12T18:00:00 | 2021-08-04T08:00:00 | True | 18 | True |  |
| 4.0d | 0 | 2021-08-09T18:00:00 | 0 | Normal | h | 4 | 2021-08-04T08:00:00 | · · · · · · ELEVACION | 21051 | d | 2021-08-09T18:00:00 | 2021-08-04T08:00:00 | True | 18 | True |  |
| 2.0d | 0 | 2021-08-05T18:00:00 | 0 | FixedDuration | h | 2 | 2021-08-04T08:00:00 | · · · · · · · FIERRO | 21052 | d | 2021-08-05T18:00:00 | 2021-08-04T08:00:00 | True | 18 |  | True |
| 2.0d | 0 | 2021-08-06T18:00:00 | 0 | FixedDuration | h | 2 | 2021-08-05T08:00:00 | · · · · · · · MOLDAJE | 21053 | d | 2021-08-06T18:00:00 | 2021-08-05T08:00:00 | True | 18 |  | True |
| 2.0d | 0 | 2021-08-06T18:00:00 | 0 | FixedDuration | h | 2 | 2021-08-05T08:00:00 | · · · · · · · HORMIGON | 21054 | d | 2021-08-06T18:00:00 | 2021-08-05T08:00:00 | True | 18 |  | True |
| 2.0d | 0 | 2021-08-09T18:00:00 | 0 | FixedDuration | h | 2 | 2021-08-06T08:00:00 | · · · · · · · DESCIMBRE | 21055 | d | 2021-08-09T18:00:00 | 2021-08-06T08:00:00 | True | 18 |  | True |
| 4.0d | 0 | 2021-08-12T18:00:00 | 0 | Normal | h | 4 | 2021-08-09T08:00:00 | · · · · · · LOSA | 21056 | d | 2021-08-12T18:00:00 | 2021-08-09T08:00:00 | True | 18 | True |  |
| 2.0d | 0 | 2021-08-10T18:00:00 | 0 | FixedDuration | h | 2 | 2021-08-09T08:00:00 | · · · · · · · MOLDAJE | 21057 | d | 2021-08-10T18:00:00 | 2021-08-09T08:00:00 | True | 18 |  | True |
| 2.0d | 0 | 2021-08-11T18:00:00 | 0 | FixedDuration | h | 2 | 2021-08-10T08:00:00 | · · · · · · · FIERRO | 21058 | d | 2021-08-11T18:00:00 | 2021-08-10T08:00:00 | True | 18 |  | True |
| 1.0d | 0 | 2021-08-12T18:00:00 | 0 | FixedDuration | h | 1 | 2021-08-12T08:00:00 | · · · · · · · HORMIGON | 21059 | d | 2021-08-12T18:00:00 | 2021-08-12T08:00:00 | True | 18 |  | True |
| 11.0d | 0 | 2021-08-20T18:00:00 | 0 | Normal | h | 11 | 2021-08-06T08:00:00 | · · · · PISO 12 | 21060 | d | 2021-08-20T18:00:00 | 2021-08-06T08:00:00 | True | 18 | True |  |
| 7.0d | 0 | 2021-08-16T18:00:00 | 0 | Normal | h | 7 | 2021-08-06T08:00:00 | · · · · · CICLO 1 | 21061 | d | 2021-08-16T18:00:00 | 2021-08-06T08:00:00 | True | 18 | True |  |
| 4.0d | 0 | 2021-08-11T18:00:00 | 0 | Normal | h | 4 | 2021-08-06T08:00:00 | · · · · · · ELEVACION | 21062 | d | 2021-08-11T18:00:00 | 2021-08-06T08:00:00 | True | 18 | True |  |
| 2.0d | 0 | 2021-08-09T18:00:00 | 0 | FixedDuration | h | 2 | 2021-08-06T08:00:00 | · · · · · · · FIERRO | 21063 | d | 2021-08-09T18:00:00 | 2021-08-06T08:00:00 | True | 18 |  | True |
| 2.0d | 0 | 2021-08-10T18:00:00 | 0 | FixedDuration | h | 2 | 2021-08-09T08:00:00 | · · · · · · · MOLDAJE | 21064 | d | 2021-08-10T18:00:00 | 2021-08-09T08:00:00 | True | 18 |  | True |
| 2.0d | 0 | 2021-08-10T18:00:00 | 0 | FixedDuration | h | 2 | 2021-08-09T08:00:00 | · · · · · · · HORMIGON | 21065 | d | 2021-08-10T18:00:00 | 2021-08-09T08:00:00 | True | 18 |  | True |
| 2.0d | 0 | 2021-08-11T18:00:00 | 0 | FixedDuration | h | 2 | 2021-08-10T08:00:00 | · · · · · · · DESCIMBRE | 21066 | d | 2021-08-11T18:00:00 | 2021-08-10T08:00:00 | True | 18 |  | True |
| 4.0d | 0 | 2021-08-16T18:00:00 | 0 | Normal | h | 4 | 2021-08-11T08:00:00 | · · · · · · LOSA | 21067 | d | 2021-08-16T18:00:00 | 2021-08-11T08:00:00 | True | 18 | True |  |
| 2.0d | 0 | 2021-08-12T18:00:00 | 0 | FixedDuration | h | 2 | 2021-08-11T08:00:00 | · · · · · · · MOLDAJE | 21068 | d | 2021-08-12T18:00:00 | 2021-08-11T08:00:00 | True | 18 |  | True |
| 2.0d | 0 | 2021-08-13T18:00:00 | 0 | FixedDuration | h | 2 | 2021-08-12T08:00:00 | · · · · · · · FIERRO | 21069 | d | 2021-08-13T18:00:00 | 2021-08-12T08:00:00 | True | 18 |  | True |
| 1.0d | 0 | 2021-08-16T18:00:00 | 0 | FixedDuration | h | 1 | 2021-08-16T08:00:00 | · · · · · · · HORMIGON | 21070 | d | 2021-08-16T18:00:00 | 2021-08-16T08:00:00 | True | 18 |  | True |
| 9.0d | 0 | 2021-08-20T18:00:00 | 0 | Normal | h | 9 | 2021-08-10T08:00:00 | · · · · · CICLO 2 | 21071 | d | 2021-08-20T18:00:00 | 2021-08-10T08:00:00 | True | 18 | True |  |
| 6.0d | 0 | 2021-08-17T18:00:00 | 0 | Normal | h | 6 | 2021-08-10T08:00:00 | · · · · · · ELEVACION | 21072 | d | 2021-08-17T18:00:00 | 2021-08-10T08:00:00 | True | 18 | True |  |
| 2.0d | 0 | 2021-08-11T18:00:00 | 0 | FixedDuration | h | 2 | 2021-08-10T08:00:00 | · · · · · · · FIERRO | 21073 | d | 2021-08-11T18:00:00 | 2021-08-10T08:00:00 | True | 18 |  | True |
| 2.0d | 0 | 2021-08-12T18:00:00 | 0 | FixedDuration | h | 2 | 2021-08-11T08:00:00 | · · · · · · · MOLDAJE | 21074 | d | 2021-08-12T18:00:00 | 2021-08-11T08:00:00 | True | 18 |  | True |
| 2.0d | 0 | 2021-08-16T18:00:00 | 0 | FixedDuration | h | 2 | 2021-08-13T08:00:00 | · · · · · · · HORMIGON | 21075 | d | 2021-08-16T18:00:00 | 2021-08-13T08:00:00 | True | 18 |  | True |
| 2.0d | 0 | 2021-08-17T18:00:00 | 0 | FixedDuration | h | 2 | 2021-08-16T08:00:00 | · · · · · · · DESCIMBRE | 21076 | d | 2021-08-17T18:00:00 | 2021-08-16T08:00:00 | True | 18 |  | True |
| 4.0d | 0 | 2021-08-20T18:00:00 | 0 | Normal | h | 4 | 2021-08-17T08:00:00 | · · · · · · LOSA | 21077 | d | 2021-08-20T18:00:00 | 2021-08-17T08:00:00 | True | 18 | True |  |
| 2.0d | 0 | 2021-08-18T18:00:00 | 0 | FixedDuration | h | 2 | 2021-08-17T08:00:00 | · · · · · · · MOLDAJE | 21078 | d | 2021-08-18T18:00:00 | 2021-08-17T08:00:00 | True | 18 |  | True |
| 2.0d | 0 | 2021-08-19T18:00:00 | 0 | FixedDuration | h | 2 | 2021-08-18T08:00:00 | · · · · · · · FIERRO | 21079 | d | 2021-08-19T18:00:00 | 2021-08-18T08:00:00 | True | 18 |  | True |
| 1.0d | 0 | 2021-08-20T18:00:00 | 0 | FixedDuration | h | 1 | 2021-08-20T08:00:00 | · · · · · · · HORMIGON | 21080 | d | 2021-08-20T18:00:00 | 2021-08-20T08:00:00 | True | 18 |  | True |
| 7.0d | 0 | 2021-08-20T18:00:00 | 0 | Normal | h | 7 | 2021-08-12T08:00:00 | · · · · · CICLO 3 | 21081 | d | 2021-08-20T18:00:00 | 2021-08-12T08:00:00 | True | 18 | True |  |
| 4.0d | 0 | 2021-08-17T18:00:00 | 0 | Normal | h | 4 | 2021-08-12T08:00:00 | · · · · · · ELEVACION | 21082 | d | 2021-08-17T18:00:00 | 2021-08-12T08:00:00 | True | 18 | True |  |
| 2.0d | 0 | 2021-08-13T18:00:00 | 0 | FixedDuration | h | 2 | 2021-08-12T08:00:00 | · · · · · · · FIERRO | 21083 | d | 2021-08-13T18:00:00 | 2021-08-12T08:00:00 | True | 18 |  | True |
| 2.0d | 0 | 2021-08-16T18:00:00 | 0 | FixedDuration | h | 2 | 2021-08-13T08:00:00 | · · · · · · · MOLDAJE | 21084 | d | 2021-08-16T18:00:00 | 2021-08-13T08:00:00 | True | 18 |  | True |
| 2.0d | 0 | 2021-08-16T18:00:00 | 0 | FixedDuration | h | 2 | 2021-08-13T08:00:00 | · · · · · · · HORMIGON | 21085 | d | 2021-08-16T18:00:00 | 2021-08-13T08:00:00 | True | 18 |  | True |
| 2.0d | 0 | 2021-08-17T18:00:00 | 0 | FixedDuration | h | 2 | 2021-08-16T08:00:00 | · · · · · · · DESCIMBRE | 21086 | d | 2021-08-17T18:00:00 | 2021-08-16T08:00:00 | True | 18 |  | True |
| 4.0d | 0 | 2021-08-20T18:00:00 | 0 | Normal | h | 4 | 2021-08-17T08:00:00 | · · · · · · LOSA | 21087 | d | 2021-08-20T18:00:00 | 2021-08-17T08:00:00 | True | 18 | True |  |
| 2.0d | 0 | 2021-08-18T18:00:00 | 0 | FixedDuration | h | 2 | 2021-08-17T08:00:00 | · · · · · · · MOLDAJE | 21088 | d | 2021-08-18T18:00:00 | 2021-08-17T08:00:00 | True | 18 |  | True |
| 2.0d | 0 | 2021-08-19T18:00:00 | 0 | FixedDuration | h | 2 | 2021-08-18T08:00:00 | · · · · · · · FIERRO | 21089 | d | 2021-08-19T18:00:00 | 2021-08-18T08:00:00 | True | 18 |  | True |
| 1.0d | 0 | 2021-08-20T18:00:00 | 0 | FixedDuration | h | 1 | 2021-08-20T08:00:00 | · · · · · · · HORMIGON | 21090 | d | 2021-08-20T18:00:00 | 2021-08-20T08:00:00 | True | 18 |  | True |
| 11.0d | 0 | 2021-08-30T18:00:00 | 0 | Normal | h | 11 | 2021-08-16T08:00:00 | · · · · PISO 13 | 21091 | d | 2021-08-30T18:00:00 | 2021-08-16T08:00:00 | True | 18 | True |  |
| 7.0d | 0 | 2021-08-24T18:00:00 | 0 | Normal | h | 7 | 2021-08-16T08:00:00 | · · · · · CICLO 1 | 21092 | d | 2021-08-24T18:00:00 | 2021-08-16T08:00:00 | True | 18 | True |  |
| 4.0d | 0 | 2021-08-19T18:00:00 | 0 | Normal | h | 4 | 2021-08-16T08:00:00 | · · · · · · ELEVACION | 21093 | d | 2021-08-19T18:00:00 | 2021-08-16T08:00:00 | True | 18 | True |  |
| 2.0d | 0 | 2021-08-17T18:00:00 | 0 | FixedDuration | h | 2 | 2021-08-16T08:00:00 | · · · · · · · FIERRO | 21094 | d | 2021-08-17T18:00:00 | 2021-08-16T08:00:00 | True | 18 |  | True |
| 2.0d | 0 | 2021-08-18T18:00:00 | 0 | FixedDuration | h | 2 | 2021-08-17T08:00:00 | · · · · · · · MOLDAJE | 21095 | d | 2021-08-18T18:00:00 | 2021-08-17T08:00:00 | True | 18 |  | True |
| 2.0d | 0 | 2021-08-18T18:00:00 | 0 | FixedDuration | h | 2 | 2021-08-17T08:00:00 | · · · · · · · HORMIGON | 21096 | d | 2021-08-18T18:00:00 | 2021-08-17T08:00:00 | True | 18 |  | True |
| 2.0d | 0 | 2021-08-19T18:00:00 | 0 | FixedDuration | h | 2 | 2021-08-18T08:00:00 | · · · · · · · DESCIMBRE | 21097 | d | 2021-08-19T18:00:00 | 2021-08-18T08:00:00 | True | 18 |  | True |
| 4.0d | 0 | 2021-08-24T18:00:00 | 0 | Normal | h | 4 | 2021-08-19T08:00:00 | · · · · · · LOSA | 21098 | d | 2021-08-24T18:00:00 | 2021-08-19T08:00:00 | True | 18 | True |  |

| baselineDuration | percentDone | endDate | effort | schedulingMode | effortUnit | duration | baselineStartDate | name | id | durationUnit | baselineEndDate | startDate | manuallyScheduled | calendar | rollup | leaf |
| --- | --- | --- | --- | --- | --- | --- | --- | --- | --- | --- | --- | --- | --- | --- | --- | --- |
| 2.0d | 0 | 2021-08-20T18:00:00 | 0 | FixedDuration | h | 2 | 2021-08-19T08:00:00 | · · · · · · · MOLDAJE | 21099 | d | 2021-08-20T18:00:00 | 2021-08-19T08:00:00 | True | 18 |  | True |
| 2.0d | 0 | 2021-08-23T18:00:00 | 0 | FixedDuration | h | 2 | 2021-08-20T08:00:00 | · · · · · · · FIERRO | 21100 | d | 2021-08-23T18:00:00 | 2021-08-20T08:00:00 | True | 18 |  | True |
| 1.0d | 0 | 2021-08-24T18:00:00 | 0 | FixedDuration | h | 1 | 2021-08-24T08:00:00 | · · · · · · · HORMIGON | 21101 | d | 2021-08-24T18:00:00 | 2021-08-24T08:00:00 | True | 18 |  | True |
| 9.0d | 0 | 2021-08-30T18:00:00 | 0 | Normal | h | 9 | 2021-08-18T08:00:00 | · · · · · CICLO 2 | 21102 | d | 2021-08-30T18:00:00 | 2021-08-18T08:00:00 | True | 18 | True |  |
| 6.0d | 0 | 2021-08-25T18:00:00 | 0 | Normal | h | 6 | 2021-08-18T08:00:00 | · · · · · · ELEVACION | 21103 | d | 2021-08-25T18:00:00 | 2021-08-18T08:00:00 | True | 18 | True |  |
| 2.0d | 0 | 2021-08-19T18:00:00 | 0 | FixedDuration | h | 2 | 2021-08-18T08:00:00 | · · · · · · · FIERRO | 21104 | d | 2021-08-19T18:00:00 | 2021-08-18T08:00:00 | True | 18 |  | True |
| 2.0d | 0 | 2021-08-20T18:00:00 | 0 | FixedDuration | h | 2 | 2021-08-19T08:00:00 | · · · · · · · MOLDAJE | 21105 | d | 2021-08-20T18:00:00 | 2021-08-19T08:00:00 | True | 18 |  | True |
| 2.0d | 0 | 2021-08-24T18:00:00 | 0 | FixedDuration | h | 2 | 2021-08-23T08:00:00 | · · · · · · · HORMIGON | 21106 | d | 2021-08-24T18:00:00 | 2021-08-23T08:00:00 | True | 18 |  | True |
| 2.0d | 0 | 2021-08-25T18:00:00 | 0 | FixedDuration | h | 2 | 2021-08-24T08:00:00 | · · · · · · · DESCIMBRE | 21107 | d | 2021-08-25T18:00:00 | 2021-08-24T08:00:00 | True | 18 |  | True |
| 4.0d | 0 | 2021-08-30T18:00:00 | 0 | Normal | h | 4 | 2021-08-25T08:00:00 | · · · · · · LOSA | 21108 | d | 2021-08-30T18:00:00 | 2021-08-25T08:00:00 | True | 18 | True |  |
| 2.0d | 0 | 2021-08-26T18:00:00 | 0 | FixedDuration | h | 2 | 2021-08-25T08:00:00 | · · · · · · · MOLDAJE | 21109 | d | 2021-08-26T18:00:00 | 2021-08-25T08:00:00 | True | 18 |  | True |
| 2.0d | 0 | 2021-08-27T18:00:00 | 0 | FixedDuration | h | 2 | 2021-08-26T08:00:00 | · · · · · · · FIERRO | 21110 | d | 2021-08-27T18:00:00 | 2021-08-26T08:00:00 | True | 18 |  | True |
| 1.0d | 0 | 2021-08-30T18:00:00 | 0 | FixedDuration | h | 1 | 2021-08-30T08:00:00 | · · · · · · · HORMIGON | 21111 | d | 2021-08-30T18:00:00 | 2021-08-30T08:00:00 | True | 18 |  | True |
| 7.0d | 0 | 2021-08-30T18:00:00 | 0 | Normal | h | 7 | 2021-08-20T08:00:00 | · · · · · CICLO 3 | 21112 | d | 2021-08-30T18:00:00 | 2021-08-20T08:00:00 | True | 18 | True |  |
| 4.0d | 0 | 2021-08-25T18:00:00 | 0 | Normal | h | 4 | 2021-08-20T08:00:00 | · · · · · · ELEVACION | 21113 | d | 2021-08-25T18:00:00 | 2021-08-20T08:00:00 | True | 18 | True |  |
| 2.0d | 0 | 2021-08-23T18:00:00 | 0 | FixedDuration | h | 2 | 2021-08-20T08:00:00 | · · · · · · · FIERRO | 21114 | d | 2021-08-23T18:00:00 | 2021-08-20T08:00:00 | True | 18 |  | True |
| 2.0d | 0 | 2021-08-24T18:00:00 | 0 | FixedDuration | h | 2 | 2021-08-23T08:00:00 | · · · · · · · MOLDAJE | 21115 | d | 2021-08-24T18:00:00 | 2021-08-23T08:00:00 | True | 18 |  | True |
| 2.0d | 0 | 2021-08-24T18:00:00 | 0 | FixedDuration | h | 2 | 2021-08-23T08:00:00 | · · · · · · · HORMIGON | 21116 | d | 2021-08-24T18:00:00 | 2021-08-23T08:00:00 | True | 18 |  | True |
| 2.0d | 0 | 2021-08-25T18:00:00 | 0 | FixedDuration | h | 2 | 2021-08-24T08:00:00 | · · · · · · · DESCIMBRE | 21117 | d | 2021-08-25T18:00:00 | 2021-08-24T08:00:00 | True | 18 |  | True |
| 4.0d | 0 | 2021-08-30T18:00:00 | 0 | Normal | h | 4 | 2021-08-25T08:00:00 | · · · · · · LOSA | 21118 | d | 2021-08-30T18:00:00 | 2021-08-25T08:00:00 | True | 18 | True |  |
| 2.0d | 0 | 2021-08-26T18:00:00 | 0 | FixedDuration | h | 2 | 2021-08-25T08:00:00 | · · · · · · · MOLDAJE | 21119 | d | 2021-08-26T18:00:00 | 2021-08-25T08:00:00 | True | 18 |  | True |
| 2.0d | 0 | 2021-08-27T18:00:00 | 0 | FixedDuration | h | 2 | 2021-08-26T08:00:00 | · · · · · · · FIERRO | 21120 | d | 2021-08-27T18:00:00 | 2021-08-26T08:00:00 | True | 18 |  | True |
| 1.0d | 0 | 2021-08-30T18:00:00 | 0 | FixedDuration | h | 1 | 2021-08-30T08:00:00 | · · · · · · · HORMIGON | 21121 | d | 2021-08-30T18:00:00 | 2021-08-30T08:00:00 | True | 18 |  | True |
| 11.0d | 0 | 2021-09-07T18:00:00 | 0 | Normal | h | 11 | 2021-08-24T08:00:00 | · · · · PISO 14 | 21122 | d | 2021-09-07T18:00:00 | 2021-08-24T08:00:00 | True | 18 | True |  |
| 7.0d | 0 | 2021-09-01T18:00:00 | 0 | Normal | h | 7 | 2021-08-24T08:00:00 | · · · · · CICLO 1 | 21123 | d | 2021-09-01T18:00:00 | 2021-08-24T08:00:00 | True | 18 | True |  |
| 4.0d | 0 | 2021-08-27T18:00:00 | 0 | Normal | h | 4 | 2021-08-24T08:00:00 | · · · · · · ELEVACION | 21124 | d | 2021-08-27T18:00:00 | 2021-08-24T08:00:00 | True | 18 | True |  |
| 2.0d | 0 | 2021-08-25T18:00:00 | 0 | FixedDuration | h | 2 | 2021-08-24T08:00:00 | · · · · · · · FIERRO | 21125 | d | 2021-08-25T18:00:00 | 2021-08-24T08:00:00 | True | 18 |  | True |
| 2.0d | 0 | 2021-08-26T18:00:00 | 0 | FixedDuration | h | 2 | 2021-08-25T08:00:00 | · · · · · · · MOLDAJE | 21126 | d | 2021-08-26T18:00:00 | 2021-08-25T08:00:00 | True | 18 |  | True |
| 2.0d | 0 | 2021-08-26T18:00:00 | 0 | FixedDuration | h | 2 | 2021-08-25T08:00:00 | · · · · · · · HORMIGON | 21127 | d | 2021-08-26T18:00:00 | 2021-08-25T08:00:00 | True | 18 |  | True |
| 2.0d | 0 | 2021-08-27T18:00:00 | 0 | FixedDuration | h | 2 | 2021-08-26T08:00:00 | · · · · · · · DESCIMBRE | 21128 | d | 2021-08-27T18:00:00 | 2021-08-26T08:00:00 | True | 18 |  | True |
| 4.0d | 0 | 2021-09-01T18:00:00 | 0 | Normal | h | 4 | 2021-08-27T08:00:00 | · · · · · · LOSA | 21129 | d | 2021-09-01T18:00:00 | 2021-08-27T08:00:00 | True | 18 | True |  |
| 2.0d | 0 | 2021-08-30T18:00:00 | 0 | FixedDuration | h | 2 | 2021-08-27T08:00:00 | · · · · · · · MOLDAJE | 21130 | d | 2021-08-30T18:00:00 | 2021-08-27T08:00:00 | True | 18 |  | True |
| 2.0d | 0 | 2021-08-31T18:00:00 | 0 | FixedDuration | h | 2 | 2021-08-30T08:00:00 | · · · · · · · FIERRO | 21131 | d | 2021-08-31T18:00:00 | 2021-08-30T08:00:00 | True | 18 |  | True |
| 1.0d | 0 | 2021-09-01T18:00:00 | 0 | FixedDuration | h | 1 | 2021-09-01T08:00:00 | · · · · · · · HORMIGON | 21132 | d | 2021-09-01T18:00:00 | 2021-09-01T08:00:00 | True | 18 |  | True |
| 9.0d | 0 | 2021-09-07T18:00:00 | 0 | Normal | h | 9 | 2021-08-26T08:00:00 | · · · · · CICLO 2 | 21133 | d | 2021-09-07T18:00:00 | 2021-08-26T08:00:00 | True | 18 | True |  |
| 6.0d | 0 | 2021-09-02T18:00:00 | 0 | Normal | h | 6 | 2021-08-26T08:00:00 | · · · · · · ELEVACION | 21134 | d | 2021-09-02T18:00:00 | 2021-08-26T08:00:00 | True | 18 | True |  |
| 2.0d | 0 | 2021-08-27T18:00:00 | 0 | FixedDuration | h | 2 | 2021-08-26T08:00:00 | · · · · · · · FIERRO | 21135 | d | 2021-08-27T18:00:00 | 2021-08-26T08:00:00 | True | 18 |  | True |
| 2.0d | 0 | 2021-08-30T18:00:00 | 0 | FixedDuration | h | 2 | 2021-08-27T08:00:00 | · · · · · · · MOLDAJE | 21136 | d | 2021-08-30T18:00:00 | 2021-08-27T08:00:00 | True | 18 |  | True |
| 2.0d | 0 | 2021-09-01T18:00:00 | 0 | FixedDuration | h | 2 | 2021-08-31T08:00:00 | · · · · · · · HORMIGON | 21137 | d | 2021-09-01T18:00:00 | 2021-08-31T08:00:00 | True | 18 |  | True |
| 2.0d | 0 | 2021-09-02T18:00:00 | 0 | FixedDuration | h | 2 | 2021-09-01T08:00:00 | · · · · · · · DESCIMBRE | 21138 | d | 2021-09-02T18:00:00 | 2021-09-01T08:00:00 | True | 18 |  | True |
| 4.0d | 0 | 2021-09-07T18:00:00 | 0 | Normal | h | 4 | 2021-09-02T08:00:00 | · · · · · · LOSA | 21139 | d | 2021-09-07T18:00:00 | 2021-09-02T08:00:00 | True | 18 | True |  |
| 2.0d | 0 | 2021-09-03T18:00:00 | 0 | FixedDuration | h | 2 | 2021-09-02T08:00:00 | · · · · · · · MOLDAJE | 21140 | d | 2021-09-03T18:00:00 | 2021-09-02T08:00:00 | True | 18 |  | True |
| 2.0d | 0 | 2021-09-06T18:00:00 | 0 | FixedDuration | h | 2 | 2021-09-03T08:00:00 | · · · · · · · FIERRO | 21141 | d | 2021-09-06T18:00:00 | 2021-09-03T08:00:00 | True | 18 |  | True |
| 1.0d | 0 | 2021-09-07T18:00:00 | 0 | FixedDuration | h | 1 | 2021-09-07T08:00:00 | · · · · · · · HORMIGON | 21142 | d | 2021-09-07T18:00:00 | 2021-09-07T08:00:00 | True | 18 |  | True |
| 7.0d | 0 | 2021-09-07T18:00:00 | 0 | Normal | h | 7 | 2021-08-30T08:00:00 | · · · · · CICLO 3 | 21143 | d | 2021-09-07T18:00:00 | 2021-08-30T08:00:00 | True | 18 | True |  |
| 4.0d | 0 | 2021-09-02T18:00:00 | 0 | Normal | h | 4 | 2021-08-30T08:00:00 | · · · · · · ELEVACION | 21144 | d | 2021-09-02T18:00:00 | 2021-08-30T08:00:00 | True | 18 | True |  |
| 2.0d | 0 | 2021-08-31T18:00:00 | 0 | FixedDuration | h | 2 | 2021-08-30T08:00:00 | · · · · · · · FIERRO | 21145 | d | 2021-08-31T18:00:00 | 2021-08-30T08:00:00 | True | 18 |  | True |
| 2.0d | 0 | 2021-09-01T18:00:00 | 0 | FixedDuration | h | 2 | 2021-08-31T08:00:00 | · · · · · · · MOLDAJE | 21146 | d | 2021-09-01T18:00:00 | 2021-08-31T08:00:00 | True | 18 |  | True |
| 2.0d | 0 | 2021-09-01T18:00:00 | 0 | FixedDuration | h | 2 | 2021-08-31T08:00:00 | · · · · · · · HORMIGON | 21147 | d | 2021-09-01T18:00:00 | 2021-08-31T08:00:00 | True | 18 |  | True |
| 2.0d | 0 | 2021-09-02T18:00:00 | 0 | FixedDuration | h | 2 | 2021-09-01T08:00:00 | · · · · · · · DESCIMBRE | 21148 | d | 2021-09-02T18:00:00 | 2021-09-01T08:00:00 | True | 18 |  | True |
| 4.0d | 0 | 2021-09-07T18:00:00 | 0 | Normal | h | 4 | 2021-09-02T08:00:00 | · · · · · · LOSA | 21149 | d | 2021-09-07T18:00:00 | 2021-09-02T08:00:00 | True | 18 | True |  |
| 2.0d | 0 | 2021-09-03T18:00:00 | 0 | FixedDuration | h | 2 | 2021-09-02T08:00:00 | · · · · · · · MOLDAJE | 21150 | d | 2021-09-03T18:00:00 | 2021-09-02T08:00:00 | True | 18 |  | True |
| 2.0d | 0 | 2021-09-06T18:00:00 | 0 | FixedDuration | h | 2 | 2021-09-03T08:00:00 | · · · · · · · FIERRO | 21151 | d | 2021-09-06T18:00:00 | 2021-09-03T08:00:00 | True | 18 |  | True |
| 1.0d | 0 | 2021-09-07T18:00:00 | 0 | FixedDuration | h | 1 | 2021-09-07T08:00:00 | · · · · · · · HORMIGON | 21152 | d | 2021-09-07T18:00:00 | 2021-09-07T08:00:00 | True | 18 |  | True |
| 11.0d | 0 | 2021-09-15T18:00:00 | 0 | Normal | h | 11 | 2021-09-01T08:00:00 | · · · · PISO 15 | 21153 | d | 2021-09-15T18:00:00 | 2021-09-01T08:00:00 | True | 18 | True |  |
| 7.0d | 0 | 2021-09-09T18:00:00 | 0 | Normal | h | 7 | 2021-09-01T08:00:00 | · · · · · CICLO 1 | 21154 | d | 2021-09-09T18:00:00 | 2021-09-01T08:00:00 | True | 18 | True |  |
| 4.0d | 0 | 2021-09-06T18:00:00 | 0 | Normal | h | 4 | 2021-09-01T08:00:00 | · · · · · · ELEVACION | 21155 | d | 2021-09-06T18:00:00 | 2021-09-01T08:00:00 | True | 18 | True |  |
| 2.0d | 0 | 2021-09-02T18:00:00 | 0 | FixedDuration | h | 2 | 2021-09-01T08:00:00 | · · · · · · · FIERRO | 21156 | d | 2021-09-02T18:00:00 | 2021-09-01T08:00:00 | True | 18 |  | True |
| 2.0d | 0 | 2021-09-03T18:00:00 | 0 | FixedDuration | h | 2 | 2021-09-02T08:00:00 | · · · · · · · MOLDAJE | 21157 | d | 2021-09-03T18:00:00 | 2021-09-02T08:00:00 | True | 18 |  | True |
| 2.0d | 0 | 2021-09-03T18:00:00 | 0 | FixedDuration | h | 2 | 2021-09-02T08:00:00 | · · · · · · · HORMIGON | 21158 | d | 2021-09-03T18:00:00 | 2021-09-02T08:00:00 | True | 18 |  | True |
| 2.0d | 0 | 2021-09-06T18:00:00 | 0 | FixedDuration | h | 2 | 2021-09-03T08:00:00 | · · · · · · · DESCIMBRE | 21159 | d | 2021-09-06T18:00:00 | 2021-09-03T08:00:00 | True | 18 |  | True |
| 4.0d | 0 | 2021-09-09T18:00:00 | 0 | Normal | h | 4 | 2021-09-06T08:00:00 | · · · · · · LOSA | 21160 | d | 2021-09-09T18:00:00 | 2021-09-06T08:00:00 | True | 18 | True |  |
| 2.0d | 0 | 2021-09-07T18:00:00 | 0 | FixedDuration | h | 2 | 2021-09-06T08:00:00 | · · · · · · · MOLDAJE | 21161 | d | 2021-09-07T18:00:00 | 2021-09-06T08:00:00 | True | 18 |  | True |
| 2.0d | 0 | 2021-09-08T18:00:00 | 0 | FixedDuration | h | 2 | 2021-09-07T08:00:00 | · · · · · · · FIERRO | 21162 | d | 2021-09-08T18:00:00 | 2021-09-07T08:00:00 | True | 18 |  | True |
| 1.0d | 0 | 2021-09-09T18:00:00 | 0 | FixedDuration | h | 1 | 2021-09-09T08:00:00 | · · · · · · · HORMIGON | 21163 | d | 2021-09-09T18:00:00 | 2021-09-09T08:00:00 | True | 18 |  | True |
| 9.0d | 0 | 2021-09-15T18:00:00 | 0 | Normal | h | 9 | 2021-09-03T08:00:00 | · · · · · CICLO 2 | 21164 | d | 2021-09-15T18:00:00 | 2021-09-03T08:00:00 | True | 18 | True |  |
| 6.0d | 0 | 2021-09-10T18:00:00 | 0 | Normal | h | 6 | 2021-09-03T08:00:00 | · · · · · · ELEVACION | 21165 | d | 2021-09-10T18:00:00 | 2021-09-03T08:00:00 | True | 18 | True |  |
| 2.0d | 0 | 2021-09-06T18:00:00 | 0 | FixedDuration | h | 2 | 2021-09-03T08:00:00 | · · · · · · · FIERRO | 21166 | d | 2021-09-06T18:00:00 | 2021-09-03T08:00:00 | True | 18 |  | True |
| 2.0d | 0 | 2021-09-07T18:00:00 | 0 | FixedDuration | h | 2 | 2021-09-06T08:00:00 | · · · · · · · MOLDAJE | 21167 | d | 2021-09-07T18:00:00 | 2021-09-06T08:00:00 | True | 18 |  | True |
| 2.0d | 0 | 2021-09-09T18:00:00 | 0 | FixedDuration | h | 2 | 2021-09-08T08:00:00 | · · · · · · · HORMIGON | 21168 | d | 2021-09-09T18:00:00 | 2021-09-08T08:00:00 | True | 18 |  | True |

| baselineDuration | percentDone | endDate | effort | schedulingMode | effortUnit | duration | baselineStartDate | name | id | durationUnit | baselineEndDate | startDate | manuallyScheduled | calendar | rollup | leaf |
| --- | --- | --- | --- | --- | --- | --- | --- | --- | --- | --- | --- | --- | --- | --- | --- | --- |
| 2.0d | 0 | 2021-09-10T18:00:00 | 0 | FixedDuration | h | 2 | 2021-09-09T08:00:00 | · · · · · · · DESCIMBRE | 21169 | d | 2021-09-10T18:00:00 | 2021-09-09T08:00:00 | True | 18 |  | True |
| 4.0d | 0 | 2021-09-15T18:00:00 | 0 | Normal | h | 4 | 2021-09-10T08:00:00 | · · · · · · LOSA | 21170 | d | 2021-09-15T18:00:00 | 2021-09-10T08:00:00 | True | 18 | True |  |
| 2.0d | 0 | 2021-09-13T18:00:00 | 0 | FixedDuration | h | 2 | 2021-09-10T08:00:00 | · · · · · · · MOLDAJE | 21171 | d | 2021-09-13T18:00:00 | 2021-09-10T08:00:00 | True | 18 |  | True |
| 2.0d | 0 | 2021-09-14T18:00:00 | 0 | FixedDuration | h | 2 | 2021-09-13T08:00:00 | · · · · · · · FIERRO | 21172 | d | 2021-09-14T18:00:00 | 2021-09-13T08:00:00 | True | 18 |  | True |
| 1.0d | 0 | 2021-09-15T18:00:00 | 0 | FixedDuration | h | 1 | 2021-09-15T08:00:00 | · · · · · · · HORMIGON | 21173 | d | 2021-09-15T18:00:00 | 2021-09-15T08:00:00 | True | 18 |  | True |
| 7.0d | 0 | 2021-09-15T18:00:00 | 0 | Normal | h | 7 | 2021-09-07T08:00:00 | · · · · · CICLO 3 | 21174 | d | 2021-09-15T18:00:00 | 2021-09-07T08:00:00 | True | 18 | True |  |
| 4.0d | 0 | 2021-09-10T18:00:00 | 0 | Normal | h | 4 | 2021-09-07T08:00:00 | · · · · · · ELEVACION | 21175 | d | 2021-09-10T18:00:00 | 2021-09-07T08:00:00 | True | 18 | True |  |
| 2.0d | 0 | 2021-09-08T18:00:00 | 0 | FixedDuration | h | 2 | 2021-09-07T08:00:00 | · · · · · · · FIERRO | 21176 | d | 2021-09-08T18:00:00 | 2021-09-07T08:00:00 | True | 18 |  | True |
| 2.0d | 0 | 2021-09-09T18:00:00 | 0 | FixedDuration | h | 2 | 2021-09-08T08:00:00 | · · · · · · · MOLDAJE | 21177 | d | 2021-09-09T18:00:00 | 2021-09-08T08:00:00 | True | 18 |  | True |
| 2.0d | 0 | 2021-09-09T18:00:00 | 0 | FixedDuration | h | 2 | 2021-09-08T08:00:00 | · · · · · · · HORMIGON | 21178 | d | 2021-09-09T18:00:00 | 2021-09-08T08:00:00 | True | 18 |  | True |
| 2.0d | 0 | 2021-09-10T18:00:00 | 0 | FixedDuration | h | 2 | 2021-09-09T08:00:00 | · · · · · · · DESCIMBRE | 21179 | d | 2021-09-10T18:00:00 | 2021-09-09T08:00:00 | True | 18 |  | True |
| 4.0d | 0 | 2021-09-15T18:00:00 | 0 | Normal | h | 4 | 2021-09-10T08:00:00 | · · · · · · LOSA | 21180 | d | 2021-09-15T18:00:00 | 2021-09-10T08:00:00 | True | 18 | True |  |
| 2.0d | 0 | 2021-09-13T18:00:00 | 0 | FixedDuration | h | 2 | 2021-09-10T08:00:00 | · · · · · · · MOLDAJE | 21181 | d | 2021-09-13T18:00:00 | 2021-09-10T08:00:00 | True | 18 |  | True |
| 2.0d | 0 | 2021-09-14T18:00:00 | 0 | FixedDuration | h | 2 | 2021-09-13T08:00:00 | · · · · · · · FIERRO | 21182 | d | 2021-09-14T18:00:00 | 2021-09-13T08:00:00 | True | 18 |  | True |
| 1.0d | 0 | 2021-09-15T18:00:00 | 0 | FixedDuration | h | 1 | 2021-09-15T08:00:00 | · · · · · · · HORMIGON | 21183 | d | 2021-09-15T18:00:00 | 2021-09-15T08:00:00 | True | 18 |  | True |
| 11.0d | 0 | 2021-09-24T18:00:00 | 0 | Normal | h | 11 | 2021-09-09T08:00:00 | · · · · PISO 16 | 21184 | d | 2021-09-24T18:00:00 | 2021-09-09T08:00:00 | True | 18 | True |  |
| 7.0d | 0 | 2021-09-20T18:00:00 | 0 | Normal | h | 7 | 2021-09-09T08:00:00 | · · · · · CICLO 1 | 21185 | d | 2021-09-20T18:00:00 | 2021-09-09T08:00:00 | True | 18 | True |  |
| 4.0d | 0 | 2021-09-14T18:00:00 | 0 | Normal | h | 4 | 2021-09-09T08:00:00 | · · · · · · ELEVACION | 21186 | d | 2021-09-14T18:00:00 | 2021-09-09T08:00:00 | True | 18 | True |  |
| 2.0d | 0 | 2021-09-10T18:00:00 | 0 | FixedDuration | h | 2 | 2021-09-09T08:00:00 | · · · · · · · FIERRO | 21187 | d | 2021-09-10T18:00:00 | 2021-09-09T08:00:00 | True | 18 |  | True |
| 2.0d | 0 | 2021-09-13T18:00:00 | 0 | FixedDuration | h | 2 | 2021-09-10T08:00:00 | · · · · · · · MOLDAJE | 21188 | d | 2021-09-13T18:00:00 | 2021-09-10T08:00:00 | True | 18 |  | True |
| 2.0d | 0 | 2021-09-13T18:00:00 | 0 | FixedDuration | h | 2 | 2021-09-10T08:00:00 | · · · · · · · HORMIGON | 21189 | d | 2021-09-13T18:00:00 | 2021-09-10T08:00:00 | True | 18 |  | True |
| 2.0d | 0 | 2021-09-14T18:00:00 | 0 | FixedDuration | h | 2 | 2021-09-13T08:00:00 | · · · · · · · DESCIMBRE | 21190 | d | 2021-09-14T18:00:00 | 2021-09-13T08:00:00 | True | 18 |  | True |
| 4.0d | 0 | 2021-09-20T18:00:00 | 0 | Normal | h | 4 | 2021-09-14T08:00:00 | · · · · · · LOSA | 21191 | d | 2021-09-20T18:00:00 | 2021-09-14T08:00:00 | True | 18 | True |  |
| 2.0d | 0 | 2021-09-15T18:00:00 | 0 | FixedDuration | h | 2 | 2021-09-14T08:00:00 | · · · · · · · MOLDAJE | 21192 | d | 2021-09-15T18:00:00 | 2021-09-14T08:00:00 | True | 18 |  | True |
| 2.0d | 0 | 2021-09-16T18:00:00 | 0 | FixedDuration | h | 2 | 2021-09-15T08:00:00 | · · · · · · · FIERRO | 21193 | d | 2021-09-16T18:00:00 | 2021-09-15T08:00:00 | True | 18 |  | True |
| 1.0d | 0 | 2021-09-20T18:00:00 | 0 | FixedDuration | h | 1 | 2021-09-20T08:00:00 | · · · · · · · HORMIGON | 21194 | d | 2021-09-20T18:00:00 | 2021-09-20T08:00:00 | True | 18 |  | True |
| 9.0d | 0 | 2021-09-24T18:00:00 | 0 | Normal | h | 9 | 2021-09-13T08:00:00 | · · · · · CICLO 2 | 21195 | d | 2021-09-24T18:00:00 | 2021-09-13T08:00:00 | True | 18 | True |  |
| 6.0d | 0 | 2021-09-21T18:00:00 | 0 | Normal | h | 6 | 2021-09-13T08:00:00 | · · · · · · ELEVACION | 21196 | d | 2021-09-21T18:00:00 | 2021-09-13T08:00:00 | True | 18 | True |  |
| 2.0d | 0 | 2021-09-14T18:00:00 | 0 | FixedDuration | h | 2 | 2021-09-13T08:00:00 | · · · · · · · FIERRO | 21197 | d | 2021-09-14T18:00:00 | 2021-09-13T08:00:00 | True | 18 |  | True |
| 2.0d | 0 | 2021-09-15T18:00:00 | 0 | FixedDuration | h | 2 | 2021-09-14T08:00:00 | · · · · · · · MOLDAJE | 21198 | d | 2021-09-15T18:00:00 | 2021-09-14T08:00:00 | True | 18 |  | True |
| 2.0d | 0 | 2021-09-20T18:00:00 | 0 | FixedDuration | h | 2 | 2021-09-16T08:00:00 | · · · · · · · HORMIGON | 21199 | d | 2021-09-20T18:00:00 | 2021-09-16T08:00:00 | True | 18 |  | True |
| 2.0d | 0 | 2021-09-21T18:00:00 | 0 | FixedDuration | h | 2 | 2021-09-20T08:00:00 | · · · · · · · DESCIMBRE | 21200 | d | 2021-09-21T18:00:00 | 2021-09-20T08:00:00 | True | 18 |  | True |
| 4.0d | 0 | 2021-09-24T18:00:00 | 0 | Normal | h | 4 | 2021-09-21T08:00:00 | · · · · · · LOSA | 21201 | d | 2021-09-24T18:00:00 | 2021-09-21T08:00:00 | True | 18 | True |  |
| 2.0d | 0 | 2021-09-22T18:00:00 | 0 | FixedDuration | h | 2 | 2021-09-21T08:00:00 | · · · · · · · MOLDAJE | 21202 | d | 2021-09-22T18:00:00 | 2021-09-21T08:00:00 | True | 18 |  | True |
| 2.0d | 0 | 2021-09-23T18:00:00 | 0 | FixedDuration | h | 2 | 2021-09-22T08:00:00 | · · · · · · · FIERRO | 21203 | d | 2021-09-23T18:00:00 | 2021-09-22T08:00:00 | True | 18 |  | True |
| 1.0d | 0 | 2021-09-24T18:00:00 | 0 | FixedDuration | h | 1 | 2021-09-24T08:00:00 | · · · · · · · HORMIGON | 21204 | d | 2021-09-24T18:00:00 | 2021-09-24T08:00:00 | True | 18 |  | True |
| 7.0d | 0 | 2021-09-24T18:00:00 | 0 | Normal | h | 7 | 2021-09-15T08:00:00 | · · · · · CICLO 3 | 21205 | d | 2021-09-24T18:00:00 | 2021-09-15T08:00:00 | True | 18 | True |  |
| 4.0d | 0 | 2021-09-21T18:00:00 | 0 | Normal | h | 4 | 2021-09-15T08:00:00 | · · · · · · ELEVACION | 21206 | d | 2021-09-21T18:00:00 | 2021-09-15T08:00:00 | True | 18 | True |  |
| 2.0d | 0 | 2021-09-16T18:00:00 | 0 | FixedDuration | h | 2 | 2021-09-15T08:00:00 | · · · · · · · FIERRO | 21207 | d | 2021-09-16T18:00:00 | 2021-09-15T08:00:00 | True | 18 |  | True |
| 2.0d | 0 | 2021-09-20T18:00:00 | 0 | FixedDuration | h | 2 | 2021-09-16T08:00:00 | · · · · · · · MOLDAJE | 21208 | d | 2021-09-20T18:00:00 | 2021-09-16T08:00:00 | True | 18 |  | True |
| 2.0d | 0 | 2021-09-20T18:00:00 | 0 | FixedDuration | h | 2 | 2021-09-16T08:00:00 | · · · · · · · HORMIGON | 21209 | d | 2021-09-20T18:00:00 | 2021-09-16T08:00:00 | True | 18 |  | True |
| 2.0d | 0 | 2021-09-21T18:00:00 | 0 | FixedDuration | h | 2 | 2021-09-20T08:00:00 | · · · · · · · DESCIMBRE | 21210 | d | 2021-09-21T18:00:00 | 2021-09-20T08:00:00 | True | 18 |  | True |
| 4.0d | 0 | 2021-09-24T18:00:00 | 0 | Normal | h | 4 | 2021-09-21T08:00:00 | · · · · · · LOSA | 21211 | d | 2021-09-24T18:00:00 | 2021-09-21T08:00:00 | True | 18 | True |  |
| 2.0d | 0 | 2021-09-22T18:00:00 | 0 | FixedDuration | h | 2 | 2021-09-21T08:00:00 | · · · · · · · MOLDAJE | 21212 | d | 2021-09-22T18:00:00 | 2021-09-21T08:00:00 | True | 18 |  | True |
| 2.0d | 0 | 2021-09-23T18:00:00 | 0 | FixedDuration | h | 2 | 2021-09-22T08:00:00 | · · · · · · · FIERRO | 21213 | d | 2021-09-23T18:00:00 | 2021-09-22T08:00:00 | True | 18 |  | True |
| 1.0d | 0 | 2021-09-24T18:00:00 | 0 | FixedDuration | h | 1 | 2021-09-24T08:00:00 | · · · · · · · HORMIGON | 21214 | d | 2021-09-24T18:00:00 | 2021-09-24T08:00:00 | True | 18 |  | True |
| 11.0d | 0 | 2021-10-04T18:00:00 | 0 | Normal | h | 11 | 2021-09-20T08:00:00 | · · · · PISO 17 | 21215 | d | 2021-10-04T18:00:00 | 2021-09-20T08:00:00 | True | 18 | True |  |
| 7.0d | 0 | 2021-09-28T18:00:00 | 0 | Normal | h | 7 | 2021-09-20T08:00:00 | · · · · · CICLO 1 | 21216 | d | 2021-09-28T18:00:00 | 2021-09-20T08:00:00 | True | 18 | True |  |
| 4.0d | 0 | 2021-09-23T18:00:00 | 0 | Normal | h | 4 | 2021-09-20T08:00:00 | · · · · · · ELEVACION | 21217 | d | 2021-09-23T18:00:00 | 2021-09-20T08:00:00 | True | 18 | True |  |
| 2.0d | 0 | 2021-09-21T18:00:00 | 0 | FixedDuration | h | 2 | 2021-09-20T08:00:00 | · · · · · · · FIERRO | 21218 | d | 2021-09-21T18:00:00 | 2021-09-20T08:00:00 | True | 18 |  | True |
| 2.0d | 0 | 2021-09-22T18:00:00 | 0 | FixedDuration | h | 2 | 2021-09-21T08:00:00 | · · · · · · · MOLDAJE | 21219 | d | 2021-09-22T18:00:00 | 2021-09-21T08:00:00 | True | 18 |  | True |
| 2.0d | 0 | 2021-09-22T18:00:00 | 0 | FixedDuration | h | 2 | 2021-09-21T08:00:00 | · · · · · · · HORMIGON | 21220 | d | 2021-09-22T18:00:00 | 2021-09-21T08:00:00 | True | 18 |  | True |
| 2.0d | 0 | 2021-09-23T18:00:00 | 0 | FixedDuration | h | 2 | 2021-09-22T08:00:00 | · · · · · · · DESCIMBRE | 21221 | d | 2021-09-23T18:00:00 | 2021-09-22T08:00:00 | True | 18 |  | True |
| 4.0d | 0 | 2021-09-28T18:00:00 | 0 | Normal | h | 4 | 2021-09-23T08:00:00 | · · · · · · LOSA | 21222 | d | 2021-09-28T18:00:00 | 2021-09-23T08:00:00 | True | 18 | True |  |
| 2.0d | 0 | 2021-09-24T18:00:00 | 0 | FixedDuration | h | 2 | 2021-09-23T08:00:00 | · · · · · · · MOLDAJE | 21223 | d | 2021-09-24T18:00:00 | 2021-09-23T08:00:00 | True | 18 |  | True |
| 2.0d | 0 | 2021-09-27T18:00:00 | 0 | FixedDuration | h | 2 | 2021-09-24T08:00:00 | · · · · · · · FIERRO | 21224 | d | 2021-09-27T18:00:00 | 2021-09-24T08:00:00 | True | 18 |  | True |
| 1.0d | 0 | 2021-09-28T18:00:00 | 0 | FixedDuration | h | 1 | 2021-09-28T08:00:00 | · · · · · · · HORMIGON | 21225 | d | 2021-09-28T18:00:00 | 2021-09-28T08:00:00 | True | 18 |  | True |
| 9.0d | 0 | 2021-10-04T18:00:00 | 0 | Normal | h | 9 | 2021-09-22T08:00:00 | · · · · · CICLO 2 | 21226 | d | 2021-10-04T18:00:00 | 2021-09-22T08:00:00 | True | 18 | True |  |
| 6.0d | 0 | 2021-09-29T18:00:00 | 0 | Normal | h | 6 | 2021-09-22T08:00:00 | · · · · · · ELEVACION | 21227 | d | 2021-09-29T18:00:00 | 2021-09-22T08:00:00 | True | 18 | True |  |
| 2.0d | 0 | 2021-09-23T18:00:00 | 0 | FixedDuration | h | 2 | 2021-09-22T08:00:00 | · · · · · · · FIERRO | 21228 | d | 2021-09-23T18:00:00 | 2021-09-22T08:00:00 | True | 18 |  | True |
| 2.0d | 0 | 2021-09-24T18:00:00 | 0 | FixedDuration | h | 2 | 2021-09-23T08:00:00 | · · · · · · · MOLDAJE | 21229 | d | 2021-09-24T18:00:00 | 2021-09-23T08:00:00 | True | 18 |  | True |
| 2.0d | 0 | 2021-09-28T18:00:00 | 0 | FixedDuration | h | 2 | 2021-09-27T08:00:00 | · · · · · · · HORMIGON | 21230 | d | 2021-09-28T18:00:00 | 2021-09-27T08:00:00 | True | 18 |  | True |
| 2.0d | 0 | 2021-09-29T18:00:00 | 0 | FixedDuration | h | 2 | 2021-09-28T08:00:00 | · · · · · · · DESCIMBRE | 21231 | d | 2021-09-29T18:00:00 | 2021-09-28T08:00:00 | True | 18 |  | True |
| 4.0d | 0 | 2021-10-04T18:00:00 | 0 | Normal | h | 4 | 2021-09-29T08:00:00 | · · · · · · LOSA | 21232 | d | 2021-10-04T18:00:00 | 2021-09-29T08:00:00 | True | 18 | True |  |
| 2.0d | 0 | 2021-09-30T18:00:00 | 0 | FixedDuration | h | 2 | 2021-09-29T08:00:00 | · · · · · · · MOLDAJE | 21233 | d | 2021-09-30T18:00:00 | 2021-09-29T08:00:00 | True | 18 |  | True |
| 2.0d | 0 | 2021-10-01T18:00:00 | 0 | FixedDuration | h | 2 | 2021-09-30T08:00:00 | · · · · · · · FIERRO | 21234 | d | 2021-10-01T18:00:00 | 2021-09-30T08:00:00 | True | 18 |  | True |
| 1.0d | 0 | 2021-10-04T18:00:00 | 0 | FixedDuration | h | 1 | 2021-10-04T08:00:00 | · · · · · · · HORMIGON | 21235 | d | 2021-10-04T18:00:00 | 2021-10-04T08:00:00 | True | 18 |  | True |
| 7.0d | 0 | 2021-10-04T18:00:00 | 0 | Normal | h | 7 | 2021-09-24T08:00:00 | · · · · · CICLO 3 | 21236 | d | 2021-10-04T18:00:00 | 2021-09-24T08:00:00 | True | 18 | True |  |
| 4.0d | 0 | 2021-09-29T18:00:00 | 0 | Normal | h | 4 | 2021-09-24T08:00:00 | · · · · · · ELEVACION | 21237 | d | 2021-09-29T18:00:00 | 2021-09-24T08:00:00 | True | 18 | True |  |
| 2.0d | 0 | 2021-09-27T18:00:00 | 0 | FixedDuration | h | 2 | 2021-09-24T08:00:00 | · · · · · · · FIERRO | 21238 | d | 2021-09-27T18:00:00 | 2021-09-24T08:00:00 | True | 18 |  | True |

| baselineDuration | percentDone | endDate | effort | schedulingMode | effortUnit | duration | baselineStartDate | name | id | durationUnit | baselineEndDate | startDate | manuallyScheduled | calendar | rollup | leaf |
| --- | --- | --- | --- | --- | --- | --- | --- | --- | --- | --- | --- | --- | --- | --- | --- | --- |
| 2.0d | 0 | 2021-09-28T18:00:00 | 0 | FixedDuration | h | 2 | 2021-09-27T08:00:00 | · · · · · · · MOLDAJE | 21239 | d | 2021-09-28T18:00:00 | 2021-09-27T08:00:00 | True | 18 |  | True |
| 2.0d | 0 | 2021-09-28T18:00:00 | 0 | FixedDuration | h | 2 | 2021-09-27T08:00:00 | · · · · · · · HORMIGON | 21240 | d | 2021-09-28T18:00:00 | 2021-09-27T08:00:00 | True | 18 |  | True |
| 2.0d | 0 | 2021-09-29T18:00:00 | 0 | FixedDuration | h | 2 | 2021-09-28T08:00:00 | · · · · · · · DESCIMBRE | 21241 | d | 2021-09-29T18:00:00 | 2021-09-28T08:00:00 | True | 18 |  | True |
| 4.0d | 0 | 2021-10-04T18:00:00 | 0 | Normal | h | 4 | 2021-09-29T08:00:00 | · · · · · · LOSA | 21242 | d | 2021-10-04T18:00:00 | 2021-09-29T08:00:00 | True | 18 | True |  |
| 2.0d | 0 | 2021-09-30T18:00:00 | 0 | FixedDuration | h | 2 | 2021-09-29T08:00:00 | · · · · · · · MOLDAJE | 21243 | d | 2021-09-30T18:00:00 | 2021-09-29T08:00:00 | True | 18 |  | True |
| 2.0d | 0 | 2021-10-01T18:00:00 | 0 | FixedDuration | h | 2 | 2021-09-30T08:00:00 | · · · · · · · FIERRO | 21244 | d | 2021-10-01T18:00:00 | 2021-09-30T08:00:00 | True | 18 |  | True |
| 1.0d | 0 | 2021-10-04T18:00:00 | 0 | FixedDuration | h | 1 | 2021-10-04T08:00:00 | · · · · · · · HORMIGON | 21245 | d | 2021-10-04T18:00:00 | 2021-10-04T08:00:00 | True | 18 |  | True |
| 11.0d | 0 | 2021-10-13T18:00:00 | 0 | Normal | h | 11 | 2021-09-28T08:00:00 | · · · · PISO 18 | 21246 | d | 2021-10-13T18:00:00 | 2021-09-28T08:00:00 | True | 18 | True |  |
| 7.0d | 0 | 2021-10-06T18:00:00 | 0 | Normal | h | 7 | 2021-09-28T08:00:00 | · · · · · CICLO 1 | 21247 | d | 2021-10-06T18:00:00 | 2021-09-28T08:00:00 | True | 18 | True |  |
| 4.0d | 0 | 2021-10-01T18:00:00 | 0 | Normal | h | 4 | 2021-09-28T08:00:00 | · · · · · · ELEVACION | 21248 | d | 2021-10-01T18:00:00 | 2021-09-28T08:00:00 | True | 18 | True |  |
| 2.0d | 0 | 2021-09-29T18:00:00 | 0 | FixedDuration | h | 2 | 2021-09-28T08:00:00 | · · · · · · · FIERRO | 21249 | d | 2021-09-29T18:00:00 | 2021-09-28T08:00:00 | True | 18 |  | True |
| 2.0d | 0 | 2021-09-30T18:00:00 | 0 | FixedDuration | h | 2 | 2021-09-29T08:00:00 | · · · · · · · MOLDAJE | 21250 | d | 2021-09-30T18:00:00 | 2021-09-29T08:00:00 | True | 18 |  | True |
| 2.0d | 0 | 2021-09-30T18:00:00 | 0 | FixedDuration | h | 2 | 2021-09-29T08:00:00 | · · · · · · · HORMIGON | 21251 | d | 2021-09-30T18:00:00 | 2021-09-29T08:00:00 | True | 18 |  | True |
| 2.0d | 0 | 2021-10-01T18:00:00 | 0 | FixedDuration | h | 2 | 2021-09-30T08:00:00 | · · · · · · · DESCIMBRE | 21252 | d | 2021-10-01T18:00:00 | 2021-09-30T08:00:00 | True | 18 |  | True |
| 4.0d | 0 | 2021-10-06T18:00:00 | 0 | Normal | h | 4 | 2021-10-01T08:00:00 | · · · · · · LOSA | 21253 | d | 2021-10-06T18:00:00 | 2021-10-01T08:00:00 | True | 18 | True |  |
| 2.0d | 0 | 2021-10-04T18:00:00 | 0 | FixedDuration | h | 2 | 2021-10-01T08:00:00 | · · · · · · · MOLDAJE | 21254 | d | 2021-10-04T18:00:00 | 2021-10-01T08:00:00 | True | 18 |  | True |
| 2.0d | 0 | 2021-10-05T18:00:00 | 0 | FixedDuration | h | 2 | 2021-10-04T08:00:00 | · · · · · · · FIERRO | 21255 | d | 2021-10-05T18:00:00 | 2021-10-04T08:00:00 | True | 18 |  | True |
| 1.0d | 0 | 2021-10-06T18:00:00 | 0 | FixedDuration | h | 1 | 2021-10-06T08:00:00 | · · · · · · · HORMIGON | 21256 | d | 2021-10-06T18:00:00 | 2021-10-06T08:00:00 | True | 18 |  | True |
| 9.0d | 0 | 2021-10-13T18:00:00 | 0 | Normal | h | 9 | 2021-09-30T08:00:00 | · · · · · CICLO 2 | 21257 | d | 2021-10-13T18:00:00 | 2021-09-30T08:00:00 | True | 18 | True |  |
| 6.0d | 0 | 2021-10-07T18:00:00 | 0 | Normal | h | 6 | 2021-09-30T08:00:00 | · · · · · · ELEVACION | 21258 | d | 2021-10-07T18:00:00 | 2021-09-30T08:00:00 | True | 18 | True |  |
| 2.0d | 0 | 2021-10-01T18:00:00 | 0 | FixedDuration | h | 2 | 2021-09-30T08:00:00 | · · · · · · · FIERRO | 21259 | d | 2021-10-01T18:00:00 | 2021-09-30T08:00:00 | True | 18 |  | True |
| 2.0d | 0 | 2021-10-04T18:00:00 | 0 | FixedDuration | h | 2 | 2021-10-01T08:00:00 | · · · · · · · MOLDAJE | 21260 | d | 2021-10-04T18:00:00 | 2021-10-01T08:00:00 | True | 18 |  | True |
| 2.0d | 0 | 2021-10-06T18:00:00 | 0 | FixedDuration | h | 2 | 2021-10-05T08:00:00 | · · · · · · · HORMIGON | 21261 | d | 2021-10-06T18:00:00 | 2021-10-05T08:00:00 | True | 18 |  | True |
| 2.0d | 0 | 2021-10-07T18:00:00 | 0 | FixedDuration | h | 2 | 2021-10-06T08:00:00 | · · · · · · · DESCIMBRE | 21262 | d | 2021-10-07T18:00:00 | 2021-10-06T08:00:00 | True | 18 |  | True |
| 4.0d | 0 | 2021-10-13T18:00:00 | 0 | Normal | h | 4 | 2021-10-07T08:00:00 | · · · · · · LOSA | 21263 | d | 2021-10-13T18:00:00 | 2021-10-07T08:00:00 | True | 18 | True |  |
| 2.0d | 0 | 2021-10-08T18:00:00 | 0 | FixedDuration | h | 2 | 2021-10-07T08:00:00 | · · · · · · · MOLDAJE | 21264 | d | 2021-10-08T18:00:00 | 2021-10-07T08:00:00 | True | 18 |  | True |
| 2.0d | 0 | 2021-10-12T18:00:00 | 0 | FixedDuration | h | 2 | 2021-10-08T08:00:00 | · · · · · · · FIERRO | 21265 | d | 2021-10-12T18:00:00 | 2021-10-08T08:00:00 | True | 18 |  | True |
| 1.0d | 0 | 2021-10-13T18:00:00 | 0 | FixedDuration | h | 1 | 2021-10-13T08:00:00 | · · · · · · · HORMIGON | 21266 | d | 2021-10-13T18:00:00 | 2021-10-13T08:00:00 | True | 18 |  | True |
| 7.0d | 0 | 2021-10-13T18:00:00 | 0 | Normal | h | 7 | 2021-10-04T08:00:00 | · · · · · CICLO 3 | 21267 | d | 2021-10-13T18:00:00 | 2021-10-04T08:00:00 | True | 18 | True |  |
| 4.0d | 0 | 2021-10-07T18:00:00 | 0 | Normal | h | 4 | 2021-10-04T08:00:00 | · · · · · · ELEVACION | 21268 | d | 2021-10-07T18:00:00 | 2021-10-04T08:00:00 | True | 18 | True |  |
| 2.0d | 0 | 2021-10-05T18:00:00 | 0 | FixedDuration | h | 2 | 2021-10-04T08:00:00 | · · · · · · · FIERRO | 21269 | d | 2021-10-05T18:00:00 | 2021-10-04T08:00:00 | True | 18 |  | True |
| 2.0d | 0 | 2021-10-06T18:00:00 | 0 | FixedDuration | h | 2 | 2021-10-05T08:00:00 | · · · · · · · MOLDAJE | 21270 | d | 2021-10-06T18:00:00 | 2021-10-05T08:00:00 | True | 18 |  | True |
| 2.0d | 0 | 2021-10-06T18:00:00 | 0 | FixedDuration | h | 2 | 2021-10-05T08:00:00 | · · · · · · · HORMIGON | 21271 | d | 2021-10-06T18:00:00 | 2021-10-05T08:00:00 | True | 18 |  | True |
| 2.0d | 0 | 2021-10-07T18:00:00 | 0 | FixedDuration | h | 2 | 2021-10-06T08:00:00 | · · · · · · · DESCIMBRE | 21272 | d | 2021-10-07T18:00:00 | 2021-10-06T08:00:00 | True | 18 |  | True |
| 4.0d | 0 | 2021-10-13T18:00:00 | 0 | Normal | h | 4 | 2021-10-07T08:00:00 | · · · · · · LOSA | 21273 | d | 2021-10-13T18:00:00 | 2021-10-07T08:00:00 | True | 18 | True |  |
| 2.0d | 0 | 2021-10-08T18:00:00 | 0 | FixedDuration | h | 2 | 2021-10-07T08:00:00 | · · · · · · · MOLDAJE | 21274 | d | 2021-10-08T18:00:00 | 2021-10-07T08:00:00 | True | 18 |  | True |
| 2.0d | 0 | 2021-10-12T18:00:00 | 0 | FixedDuration | h | 2 | 2021-10-08T08:00:00 | · · · · · · · FIERRO | 21275 | d | 2021-10-12T18:00:00 | 2021-10-08T08:00:00 | True | 18 |  | True |
| 1.0d | 0 | 2021-10-13T18:00:00 | 0 | FixedDuration | h | 1 | 2021-10-13T08:00:00 | · · · · · · · HORMIGON | 21276 | d | 2021-10-13T18:00:00 | 2021-10-13T08:00:00 | True | 18 |  | True |
| 10.0d | 0 | 2021-10-27T18:00:00 | 0 | Normal | h | 10 | 2021-10-14T08:00:00 | · · · · AZOTEA | 20432 | d | 2021-10-27T18:00:00 | 2021-10-14T08:00:00 | True | 18 | True |  |
| 10.0d | 0 | 2021-10-27T18:00:00 | 0 | Normal | h | 10 | 2021-10-14T08:00:00 | · · · · · CICLO 1 | 20466 | d | 2021-10-27T18:00:00 | 2021-10-14T08:00:00 | True | 18 | True |  |
| 7.0d | 0 | 2021-10-22T18:00:00 | 0 | Normal | h | 7 | 2021-10-14T08:00:00 | · · · · · · ELEVACION | 20467 | d | 2021-10-22T18:00:00 | 2021-10-14T08:00:00 | True | 18 | True |  |
| 5.0d | 0 | 2021-10-20T18:00:00 | 0 | FixedDuration | h | 5 | 2021-10-14T08:00:00 | · · · · · · · FIERRO | 20468 | d | 2021-10-20T18:00:00 | 2021-10-14T08:00:00 | True | 18 |  | True |
| 5.0d | 0 | 2021-10-21T18:00:00 | 0 | FixedDuration | h | 5 | 2021-10-15T08:00:00 | · · · · · · · MOLDAJE | 20469 | d | 2021-10-21T18:00:00 | 2021-10-15T08:00:00 | True | 18 |  | True |
| 5.0d | 0 | 2021-10-21T18:00:00 | 0 | FixedDuration | h | 5 | 2021-10-15T08:00:00 | · · · · · · · HORMIGON | 20470 | d | 2021-10-21T18:00:00 | 2021-10-15T08:00:00 | True | 18 |  | True |
| 5.0d | 0 | 2021-10-22T18:00:00 | 0 | FixedDuration | h | 5 | 2021-10-18T08:00:00 | · · · · · · · DESCIMBRE | 20471 | d | 2021-10-22T18:00:00 | 2021-10-18T08:00:00 | True | 18 |  | True |
| 7.0d | 0 | 2021-10-27T18:00:00 | 0 | Normal | h | 7 | 2021-10-19T08:00:00 | · · · · · · LOSA | 20472 | d | 2021-10-27T18:00:00 | 2021-10-19T08:00:00 | True | 18 | True |  |
| 5.0d | 0 | 2021-10-25T18:00:00 | 0 | FixedDuration | h | 5 | 2021-10-19T08:00:00 | · · · · · · · MOLDAJE | 20473 | d | 2021-10-25T18:00:00 | 2021-10-19T08:00:00 | True | 18 |  | True |
| 5.0d | 0 | 2021-10-26T18:00:00 | 0 | FixedDuration | h | 5 | 2021-10-20T08:00:00 | · · · · · · · FIERRO | 20474 | d | 2021-10-26T18:00:00 | 2021-10-20T08:00:00 | True | 18 |  | True |
| 5.0d | 0 | 2021-10-27T18:00:00 | 0 | FixedDuration | h | 5 | 2021-10-21T08:00:00 | · · · · · · · HORMIGON | 20475 | d | 2021-10-27T18:00:00 | 2021-10-21T08:00:00 | True | 18 |  | True |
| 244.0d | 0 | 2022-06-01T18:00:00 | 0 | Normal | h | 244 | 2021-06-14T08:00:00 | · · TERMINACIONES | 20427 | d | 2022-06-01T18:00:00 | 2021-06-14T08:00:00 | True | 18 | True |  |
| 160.0d | 0 | 2022-02-08T18:00:00 | 0 | Normal | h | 160 | 2021-06-18T08:00:00 | · · · TERMINACIONES BAJO COTA CERO | 18578 | d | 2022-02-08T18:00:00 | 2021-06-18T08:00:00 | True | 18 | True |  |
| 120.0d | 0 | 2021-12-10T18:00:00 | 0 | Normal | h | 120 | 2021-06-18T08:00:00 | · · · · SUBTERR�NEO 4 | 18633 | d | 2021-12-10T18:00:00 | 2021-06-18T08:00:00 | True | 18 | True |  |
| 120.0d | 0 | 2021-12-10T18:00:00 | 0 | FixedDuration | h | 120 | 2021-06-18T08:00:00 | · · · · · AREA ESTACIONAMIENTO | 20319 | d | 2021-12-10T18:00:00 | 2021-06-18T08:00:00 | True | 18 |  | True |
| 120.0d | 0 | 2021-12-10T18:00:00 | 0 | FixedDuration | h | 120 | 2021-06-18T08:00:00 | · · · · · HALL ASCENSOR | 20321 | d | 2021-12-10T18:00:00 | 2021-06-18T08:00:00 | True | 18 |  | True |
| 120.0d | 0 | 2021-12-10T18:00:00 | 0 | FixedDuration | h | 120 | 2021-06-18T08:00:00 | · · · · · BODEGAS | 20322 | d | 2021-12-10T18:00:00 | 2021-06-18T08:00:00 | True | 18 |  | True |
| 120.0d | 0 | 2021-12-10T18:00:00 | 0 | FixedDuration | h | 120 | 2021-06-18T08:00:00 | · · · · · SALA DE BOMBAS Y ESTANQUE | 20323 | d | 2021-12-10T18:00:00 | 2021-06-18T08:00:00 | True | 18 |  | True |
| 120.0d | 0 | 2022-01-07T18:00:00 | 0 | Normal | h | 120 | 2021-07-15T08:00:00 | · · · · SUBTERR�NEO 3 | 18632 | d | 2022-01-07T18:00:00 | 2021-07-15T08:00:00 | True | 18 | True |  |
| 120.0d | 0 | 2022-01-07T18:00:00 | 0 | FixedDuration | h | 120 | 2021-07-15T08:00:00 | · · · · · AREA ESTACIONAMIENTO | 20325 | d | 2022-01-07T18:00:00 | 2021-07-15T08:00:00 | True | 18 |  | True |
| 120.0d | 0 | 2022-01-07T18:00:00 | 0 | FixedDuration | h | 120 | 2021-07-15T08:00:00 | · · · · · HALL ASCENSOR | 20326 | d | 2022-01-07T18:00:00 | 2021-07-15T08:00:00 | True | 18 |  | True |
| 120.0d | 0 | 2022-01-07T18:00:00 | 0 | FixedDuration | h | 120 | 2021-07-15T08:00:00 | · · · · · BODEGAS | 20327 | d | 2022-01-07T18:00:00 | 2021-07-15T08:00:00 | True | 18 |  | True |
| 120.0d | 0 | 2022-02-08T18:00:00 | 0 | Normal | h | 120 | 2021-08-17T08:00:00 | · · · · SUBTERR�NEO 2 | 18579 | d | 2022-02-08T18:00:00 | 2021-08-17T08:00:00 | True | 18 | True |  |
| 120.0d | 0 | 2022-02-08T18:00:00 | 0 | FixedDuration | h | 120 | 2021-08-17T08:00:00 | · · · · · AREA ESTACIONAMIENTO | 20333 | d | 2022-02-08T18:00:00 | 2021-08-17T08:00:00 | True | 18 |  | True |
| 120.0d | 0 | 2022-02-08T18:00:00 | 0 | FixedDuration | h | 120 | 2021-08-17T08:00:00 | · · · · · HALL ASCENSOR | 20330 | d | 2022-02-08T18:00:00 | 2021-08-17T08:00:00 | True | 18 |  | True |
| 120.0d | 0 | 2022-02-08T18:00:00 | 0 | FixedDuration | h | 120 | 2021-08-17T08:00:00 | · · · · · BODEGAS | 20331 | d | 2022-02-08T18:00:00 | 2021-08-17T08:00:00 | True | 18 |  | True |
| 120.0d | 0 | 2021-12-29T18:00:00 | 0 | Normal | h | 120 | 2021-07-07T08:00:00 | · · · · SUBTERR�NEO 1 | 18580 | d | 2021-12-29T18:00:00 | 2021-07-07T08:00:00 | True | 18 | True |  |
| 120.0d | 0 | 2021-12-29T18:00:00 | 0 | FixedDuration | h | 120 | 2021-07-07T08:00:00 | · · · · · AREA ESTACIONAMIENTO | 20337 | d | 2021-12-29T18:00:00 | 2021-07-07T08:00:00 | True | 18 |  | True |
| 120.0d | 0 | 2021-12-29T18:00:00 | 0 | FixedDuration | h | 120 | 2021-07-07T08:00:00 | · · · · · HALL ASCENSOR | 20338 | d | 2021-12-29T18:00:00 | 2021-07-07T08:00:00 | True | 18 |  | True |
| 120.0d | 0 | 2021-12-29T18:00:00 | 0 | FixedDuration | h | 120 | 2021-07-07T08:00:00 | · · · · · BODEGAS | 20334 | d | 2021-12-29T18:00:00 | 2021-07-07T08:00:00 | True | 18 |  | True |
| 120.0d | 0 | 2021-12-29T18:00:00 | 0 | FixedDuration | h | 120 | 2021-07-07T08:00:00 | · · · · · SALA DE BASURA | 20335 | d | 2021-12-29T18:00:00 | 2021-07-07T08:00:00 | True | 18 |  | True |
| 120.0d | 0 | 2021-12-29T18:00:00 | 0 | FixedDuration | h | 120 | 2021-07-07T08:00:00 | · · · · · CAMARIN Y COCINA PERSONAL | 20339 | d | 2021-12-29T18:00:00 | 2021-07-07T08:00:00 | True | 18 |  | True |

| baselineDuration | percentDone | endDate | effort | schedulingMode | effortUnit | duration | baselineStartDate | name | id | durationUnit | baselineEndDate | startDate | manuallyScheduled | calendar | rollup | leaf |
| --- | --- | --- | --- | --- | --- | --- | --- | --- | --- | --- | --- | --- | --- | --- | --- | --- |
| 120.0d | 0 | 2021-12-29T18:00:00 | 0 | FixedDuration | h | 120 | 2021-07-07T08:00:00 | · · · · · SALA ELECTRICA | 20340 | d | 2021-12-29T18:00:00 | 2021-07-07T08:00:00 | True | 18 |  | True |
| 80.0d | 0 | 2021-12-29T18:00:00 | 0 | FixedDuration | h | 80 | 2021-09-02T08:00:00 | · · · · ESCALA Y VESTIBULOS | 20428 | d | 2021-12-29T18:00:00 | 2021-09-02T08:00:00 | True | 18 |  | True |
| 244.0d | 0 | 2022-06-01T18:00:00 | 0 | Normal | h | 244 | 2021-06-14T08:00:00 | · · · TERMINACIONES SOBRE COTA CERO | 18661 | d | 2022-06-01T18:00:00 | 2021-06-14T08:00:00 | True | 18 | True |  |
| 120.0d | 0 | 2022-01-04T18:00:00 | 0 | Normal | h | 120 | 2021-07-12T08:00:00 | · · · · PISO 1 | 18581 | d | 2022-01-04T18:00:00 | 2021-07-12T08:00:00 | True | 18 | True |  |
| 120.0d | 0 | 2022-01-04T18:00:00 | 0 | Normal | h | 120 | 2021-07-12T08:00:00 | · · · · · LOCALES COMERCIALES | 20344 | d | 2022-01-04T18:00:00 | 2021-07-12T08:00:00 | True | 18 | True |  |
| 120.0d | 0 | 2022-01-04T18:00:00 | 0 | FixedDuration | h | 120 | 2021-07-12T08:00:00 | · · · · · · LC 1 | 20345 | d | 2022-01-04T18:00:00 | 2021-07-12T08:00:00 | True | 18 |  | True |
| 120.0d | 0 | 2022-01-04T18:00:00 | 0 | FixedDuration | h | 120 | 2021-07-12T08:00:00 | · · · · · · LC 2 | 20349 | d | 2022-01-04T18:00:00 | 2021-07-12T08:00:00 | True | 18 |  | True |
| 120.0d | 0 | 2022-01-04T18:00:00 | 0 | FixedDuration | h | 120 | 2021-07-12T08:00:00 | · · · · · · LC 3 | 20350 | d | 2022-01-04T18:00:00 | 2021-07-12T08:00:00 | True | 18 |  | True |
| 120.0d | 0 | 2022-01-04T18:00:00 | 0 | FixedDuration | h | 120 | 2021-07-12T08:00:00 | · · · · · · LC 4 | 20351 | d | 2022-01-04T18:00:00 | 2021-07-12T08:00:00 | True | 18 |  | True |
| 120.0d | 0 | 2022-01-04T18:00:00 | 0 | FixedDuration | h | 120 | 2021-07-12T08:00:00 | · · · · · · LC 5 | 20352 | d | 2022-01-04T18:00:00 | 2021-07-12T08:00:00 | True | 18 |  | True |
| 120.0d | 0 | 2022-01-04T18:00:00 | 0 | FixedDuration | h | 120 | 2021-07-12T08:00:00 | · · · · · · LC 6 | 20353 | d | 2022-01-04T18:00:00 | 2021-07-12T08:00:00 | True | 18 |  | True |
| 120.0d | 0 | 2022-01-04T18:00:00 | 0 | FixedDuration | h | 120 | 2021-07-12T08:00:00 | · · · · · · LC 7 | 20354 | d | 2022-01-04T18:00:00 | 2021-07-12T08:00:00 | True | 18 |  | True |
| 120.0d | 0 | 2022-01-04T18:00:00 | 0 | FixedDuration | h | 120 | 2021-07-12T08:00:00 | · · · · · HALL ACCESO | 20356 | d | 2022-01-04T18:00:00 | 2021-07-12T08:00:00 | True | 18 |  | True |
| 120.0d | 0 | 2022-01-04T18:00:00 | 0 | FixedDuration | h | 120 | 2021-07-12T08:00:00 | · · · · · HALL DE ASCENSORES Y PASILLOS | 20362 | d | 2022-01-04T18:00:00 | 2021-07-12T08:00:00 | True | 18 |  | True |
| 120.0d | 0 | 2022-01-04T18:00:00 | 0 | FixedDuration | h | 120 | 2021-07-12T08:00:00 | · · · · · WE WORK | 20346 | d | 2022-01-04T18:00:00 | 2021-07-12T08:00:00 | True | 18 |  | True |
| 120.0d | 0 | 2022-01-04T18:00:00 | 0 | FixedDuration | h | 120 | 2021-07-12T08:00:00 | · · · · · GIMNASIO | 20347 | d | 2022-01-04T18:00:00 | 2021-07-12T08:00:00 | True | 18 |  | True |
| 120.0d | 0 | 2022-01-04T18:00:00 | 0 | FixedDuration | h | 120 | 2021-07-12T08:00:00 | · · · · · BA�O | 20357 | d | 2022-01-04T18:00:00 | 2021-07-12T08:00:00 | True | 18 |  | True |
| 120.0d | 0 | 2022-01-04T18:00:00 | 0 | FixedDuration | h | 120 | 2021-07-12T08:00:00 | · · · · · ENFERMERIA Y BA�O | 20358 | d | 2022-01-04T18:00:00 | 2021-07-12T08:00:00 | True | 18 |  | True |
| 120.0d | 0 | 2022-01-04T18:00:00 | 0 | FixedDuration | h | 120 | 2021-07-12T08:00:00 | · · · · · BA�O DE SERVICIO | 20359 | d | 2022-01-04T18:00:00 | 2021-07-12T08:00:00 | True | 18 |  | True |
| 120.0d | 0 | 2022-01-04T18:00:00 | 0 | FixedDuration | h | 120 | 2021-07-12T08:00:00 | · · · · · SALA DE USO MULTIPLE | 20360 | d | 2022-01-04T18:00:00 | 2021-07-12T08:00:00 | True | 18 |  | True |
| 120.0d | 0 | 2021-12-03T18:00:00 | 0 | Normal | h | 120 | 2021-06-14T08:00:00 | · · · · PISO 2 | 18667 | d | 2021-12-03T18:00:00 | 2021-06-14T08:00:00 | True | 18 | True |  |
| 120.0d | 0 | 2021-12-03T18:00:00 | 0 | Normal | h | 120 | 2021-06-14T08:00:00 | · · · · · DEPARTAMENTOS | 20363 | d | 2021-12-03T18:00:00 | 2021-06-14T08:00:00 | True | 18 | True |  |
| 120.0d | 0 | 2021-12-03T18:00:00 | 0 | FixedDuration | h | 120 | 2021-06-14T08:00:00 | · · · · · · PILOTO | 20407 | d | 2021-12-03T18:00:00 | 2021-06-14T08:00:00 | True | 18 |  | True |
| 120.0d | 0 | 2021-12-03T18:00:00 | 0 | FixedDuration | h | 120 | 2021-06-14T08:00:00 | · · · · · · DEPARTAMENTOS | 20408 | d | 2021-12-03T18:00:00 | 2021-06-14T08:00:00 | True | 18 |  | True |
| 90.0d | 0 | 2021-12-03T18:00:00 | 0 | FixedDuration | h | 90 | 2021-07-28T08:00:00 | · · · · · AREA COMUN | 20364 | d | 2021-12-03T18:00:00 | 2021-07-28T08:00:00 | True | 18 |  | True |
| 120.0d | 0 | 2021-12-16T18:00:00 | 0 | Normal | h | 120 | 2021-06-24T08:00:00 | · · · · PISO 3 | 18673 | d | 2021-12-16T18:00:00 | 2021-06-24T08:00:00 | True | 18 | True |  |
| 120.0d | 0 | 2021-12-16T18:00:00 | 0 | FixedDuration | h | 120 | 2021-06-24T08:00:00 | · · · · · DEPARTAMENTOS | 20393 | d | 2021-12-16T18:00:00 | 2021-06-24T08:00:00 | True | 18 |  | True |
| 90.0d | 0 | 2021-12-16T18:00:00 | 0 | FixedDuration | h | 90 | 2021-08-09T08:00:00 | · · · · · AREA COMUN | 20394 | d | 2021-12-16T18:00:00 | 2021-08-09T08:00:00 | True | 18 |  | True |
| 120.0d | 0 | 2021-12-29T18:00:00 | 0 | Normal | h | 120 | 2021-07-07T08:00:00 | · · · · PISO 4 | 18679 | d | 2021-12-29T18:00:00 | 2021-07-07T08:00:00 | True | 18 | True |  |
| 120.0d | 0 | 2021-12-29T18:00:00 | 0 | FixedDuration | h | 120 | 2021-07-07T08:00:00 | · · · · · DEPARTAMENTOS | 20395 | d | 2021-12-29T18:00:00 | 2021-07-07T08:00:00 | True | 18 |  | True |
| 90.0d | 0 | 2021-12-29T18:00:00 | 0 | FixedDuration | h | 90 | 2021-08-19T08:00:00 | · · · · · AREA COMUN | 20396 | d | 2021-12-29T18:00:00 | 2021-08-19T08:00:00 | True | 18 |  | True |
| 120.0d | 0 | 2022-01-11T18:00:00 | 0 | Normal | h | 120 | 2021-07-20T08:00:00 | · · · · PISO 5 | 18685 | d | 2022-01-11T18:00:00 | 2021-07-20T08:00:00 | True | 18 | True |  |
| 120.0d | 0 | 2022-01-11T18:00:00 | 0 | FixedDuration | h | 120 | 2021-07-20T08:00:00 | · · · · · DEPARTAMENTOS | 20397 | d | 2022-01-11T18:00:00 | 2021-07-20T08:00:00 | True | 18 |  | True |
| 90.0d | 0 | 2022-01-11T18:00:00 | 0 | FixedDuration | h | 90 | 2021-08-31T08:00:00 | · · · · · AREA COMUN | 20398 | d | 2022-01-11T18:00:00 | 2021-08-31T08:00:00 | True | 18 |  | True |
| 120.0d | 0 | 2022-01-19T18:00:00 | 0 | Normal | h | 120 | 2021-07-28T08:00:00 | · · · · PISO 6 | 18691 | d | 2022-01-19T18:00:00 | 2021-07-28T08:00:00 | True | 18 | True |  |
| 120.0d | 0 | 2022-01-19T18:00:00 | 0 | FixedDuration | h | 120 | 2021-07-28T08:00:00 | · · · · · DEPARTAMENTOS | 20399 | d | 2022-01-19T18:00:00 | 2021-07-28T08:00:00 | True | 18 |  | True |
| 90.0d | 0 | 2022-01-19T18:00:00 | 0 | FixedDuration | h | 90 | 2021-09-08T08:00:00 | · · · · · AREA COMUN | 20400 | d | 2022-01-19T18:00:00 | 2021-09-08T08:00:00 | True | 18 |  | True |
| 120.0d | 0 | 2022-01-27T18:00:00 | 0 | Normal | h | 120 | 2021-08-05T08:00:00 | · · · · PISO 7 | 18697 | d | 2022-01-27T18:00:00 | 2021-08-05T08:00:00 | True | 18 | True |  |
| 120.0d | 0 | 2022-01-27T18:00:00 | 0 | FixedDuration | h | 120 | 2021-08-05T08:00:00 | · · · · · DEPARTAMENTOS | 20401 | d | 2022-01-27T18:00:00 | 2021-08-05T08:00:00 | True | 18 |  | True |
| 90.0d | 0 | 2022-01-27T18:00:00 | 0 | FixedDuration | h | 90 | 2021-09-16T08:00:00 | · · · · · AREA COMUN | 20402 | d | 2022-01-27T18:00:00 | 2021-09-16T08:00:00 | True | 18 |  | True |
| 120.0d | 0 | 2022-02-04T18:00:00 | 0 | Normal | h | 120 | 2021-08-13T08:00:00 | · · · · PISO 8 | 18703 | d | 2022-02-04T18:00:00 | 2021-08-13T08:00:00 | True | 18 | True |  |
| 120.0d | 0 | 2022-02-04T18:00:00 | 0 | FixedDuration | h | 120 | 2021-08-13T08:00:00 | · · · · · DEPARTAMENTOS | 20403 | d | 2022-02-04T18:00:00 | 2021-08-13T08:00:00 | True | 18 |  | True |
| 90.0d | 0 | 2022-02-04T18:00:00 | 0 | FixedDuration | h | 90 | 2021-09-27T08:00:00 | · · · · · AREA COMUN | 20404 | d | 2022-02-04T18:00:00 | 2021-09-27T08:00:00 | True | 18 |  | True |
| 120.0d | 0 | 2022-02-14T18:00:00 | 0 | Normal | h | 120 | 2021-08-23T08:00:00 | · · · · PISO 9 | 18709 | d | 2022-02-14T18:00:00 | 2021-08-23T08:00:00 | True | 18 | True |  |
| 120.0d | 0 | 2022-02-14T18:00:00 | 0 | FixedDuration | h | 120 | 2021-08-23T08:00:00 | · · · · · DEPARTAMENTOS | 20405 | d | 2022-02-14T18:00:00 | 2021-08-23T08:00:00 | True | 18 |  | True |
| 90.0d | 0 | 2022-02-14T18:00:00 | 0 | FixedDuration | h | 90 | 2021-10-05T08:00:00 | · · · · · AREA COMUN | 20406 | d | 2022-02-14T18:00:00 | 2021-10-05T08:00:00 | True | 18 |  | True |
| 120.0d | 0 | 2022-02-22T18:00:00 | 0 | Normal | h | 120 | 2021-08-31T08:00:00 | · · · · PISO 10 | 18715 | d | 2022-02-22T18:00:00 | 2021-08-31T08:00:00 | True | 18 | True |  |
| 120.0d | 0 | 2022-02-22T18:00:00 | 0 | FixedDuration | h | 120 | 2021-08-31T08:00:00 | · · · · · DEPARTAMENTOS | 20409 | d | 2022-02-22T18:00:00 | 2021-08-31T08:00:00 | True | 18 |  | True |
| 90.0d | 0 | 2022-02-22T18:00:00 | 0 | FixedDuration | h | 90 | 2021-10-14T08:00:00 | · · · · · AREA COMUN | 20410 | d | 2022-02-22T18:00:00 | 2021-10-14T08:00:00 | True | 18 |  | True |
| 120.0d | 0 | 2022-03-02T18:00:00 | 0 | Normal | h | 120 | 2021-09-08T08:00:00 | · · · · PISO 11 | 18721 | d | 2022-03-02T18:00:00 | 2021-09-08T08:00:00 | True | 18 | True |  |
| 120.0d | 0 | 2022-03-02T18:00:00 | 0 | FixedDuration | h | 120 | 2021-09-08T08:00:00 | · · · · · DEPARTAMENTOS | 20411 | d | 2022-03-02T18:00:00 | 2021-09-08T08:00:00 | True | 18 |  | True |
| 90.0d | 0 | 2022-03-02T18:00:00 | 0 | FixedDuration | h | 90 | 2021-10-22T08:00:00 | · · · · · AREA COMUN | 20412 | d | 2022-03-02T18:00:00 | 2021-10-22T08:00:00 | True | 18 |  | True |
| 120.0d | 0 | 2022-03-10T18:00:00 | 0 | Normal | h | 120 | 2021-09-16T08:00:00 | · · · · PISO 12 | 18727 | d | 2022-03-10T18:00:00 | 2021-09-16T08:00:00 | True | 18 | True |  |
| 120.0d | 0 | 2022-03-10T18:00:00 | 0 | FixedDuration | h | 120 | 2021-09-16T08:00:00 | · · · · · DEPARTAMENTOS | 20413 | d | 2022-03-10T18:00:00 | 2021-09-16T08:00:00 | True | 18 |  | True |
| 90.0d | 0 | 2022-03-10T18:00:00 | 0 | FixedDuration | h | 90 | 2021-11-02T08:00:00 | · · · · · AREA COMUN | 20414 | d | 2022-03-10T18:00:00 | 2021-11-02T08:00:00 | True | 18 |  | True |
| 120.0d | 0 | 2022-03-18T18:00:00 | 0 | Normal | h | 120 | 2021-09-27T08:00:00 | · · · · PISO 13 | 18733 | d | 2022-03-18T18:00:00 | 2021-09-27T08:00:00 | True | 18 | True |  |
| 120.0d | 0 | 2022-03-18T18:00:00 | 0 | FixedDuration | h | 120 | 2021-09-27T08:00:00 | · · · · · DEPARTAMENTOS | 20415 | d | 2022-03-18T18:00:00 | 2021-09-27T08:00:00 | True | 18 |  | True |
| 90.0d | 0 | 2022-03-18T18:00:00 | 0 | FixedDuration | h | 90 | 2021-11-10T08:00:00 | · · · · · AREA COMUN | 20416 | d | 2022-03-18T18:00:00 | 2021-11-10T08:00:00 | True | 18 |  | True |
| 120.0d | 0 | 2022-03-28T18:00:00 | 0 | Normal | h | 120 | 2021-10-05T08:00:00 | · · · · PISO 14 | 18739 | d | 2022-03-28T18:00:00 | 2021-10-05T08:00:00 | True | 18 | True |  |
| 120.0d | 0 | 2022-03-28T18:00:00 | 0 | FixedDuration | h | 120 | 2021-10-05T08:00:00 | · · · · · DEPARTAMENTOS | 20417 | d | 2022-03-28T18:00:00 | 2021-10-05T08:00:00 | True | 18 |  | True |
| 90.0d | 0 | 2022-03-28T18:00:00 | 0 | FixedDuration | h | 90 | 2021-11-18T08:00:00 | · · · · · AREA COMUN | 20418 | d | 2022-03-28T18:00:00 | 2021-11-18T08:00:00 | True | 18 |  | True |
| 120.0d | 0 | 2022-04-05T18:00:00 | 0 | Normal | h | 120 | 2021-10-14T08:00:00 | · · · · PISO 15 | 18745 | d | 2022-04-05T18:00:00 | 2021-10-14T08:00:00 | True | 18 | True |  |
| 120.0d | 0 | 2022-04-05T18:00:00 | 0 | FixedDuration | h | 120 | 2021-10-14T08:00:00 | · · · · · DEPARTAMENTOS | 20419 | d | 2022-04-05T18:00:00 | 2021-10-14T08:00:00 | True | 18 |  | True |
| 90.0d | 0 | 2022-04-05T18:00:00 | 0 | FixedDuration | h | 90 | 2021-11-26T08:00:00 | · · · · · AREA COMUN | 20420 | d | 2022-04-05T18:00:00 | 2021-11-26T08:00:00 | True | 18 |  | True |
| 120.0d | 0 | 2022-04-20T18:00:00 | 0 | Normal | h | 120 | 2021-10-28T08:00:00 | · · · · PISO 16 | 18751 | d | 2022-04-20T18:00:00 | 2021-10-28T08:00:00 | True | 18 | True |  |
| 120.0d | 0 | 2022-04-20T18:00:00 | 0 | FixedDuration | h | 120 | 2021-10-28T08:00:00 | · · · · · DEPARTAMENTOS | 20421 | d | 2022-04-20T18:00:00 | 2021-10-28T08:00:00 | True | 18 |  | True |
| 90.0d | 0 | 2022-04-20T18:00:00 | 0 | FixedDuration | h | 90 | 2021-12-13T08:00:00 | · · · · · AREA COMUN | 20422 | d | 2022-04-20T18:00:00 | 2021-12-13T08:00:00 | True | 18 |  | True |
| 120.0d | 0 | 2022-05-11T18:00:00 | 0 | Normal | h | 120 | 2021-11-19T08:00:00 | · · · · PISO 17 | 18757 | d | 2022-05-11T18:00:00 | 2021-11-19T08:00:00 | True | 18 | True |  |
| 120.0d | 0 | 2022-05-11T18:00:00 | 0 | FixedDuration | h | 120 | 2021-11-19T08:00:00 | · · · · · DEPARTAMENTOS | 20423 | d | 2022-05-11T18:00:00 | 2021-11-19T08:00:00 | True | 18 |  | True |
| 90.0d | 0 | 2022-05-11T18:00:00 | 0 | FixedDuration | h | 90 | 2022-01-05T08:00:00 | · · · · · AREA COMUN | 20424 | d | 2022-05-11T18:00:00 | 2022-01-05T08:00:00 | True | 18 |  | True |

| baselineDuration | percentDone | endDate | effort | schedulingMode | effortUnit | duration | baselineStartDate | name | id | durationUnit | baselineEndDate | startDate | manuallyScheduled | calendar | rollup | milestone | leaf |
| --- | --- | --- | --- | --- | --- | --- | --- | --- | --- | --- | --- | --- | --- | --- | --- | --- | --- |
| 120.0d | 0 | 2022-06-01T18:00:00 | 0 | Normal | h | 120 | 2021-12-13T08:00:00 | · · · · PISO 18 | 18763 | d | 2022-06-01T18:00:00 | 2021-12-13T08:00:00 | True | 18 | True |  |  |
| 120.0d | 0 | 2022-06-01T18:00:00 | 0 | FixedDuration | h | 120 | 2021-12-13T08:00:00 | · · · · · DEPARTAMENTOS | 20425 | d | 2022-06-01T18:00:00 | 2021-12-13T08:00:00 | True | 18 |  |  | True |
| 90.0d | 0 | 2022-06-01T18:00:00 | 0 | FixedDuration | h | 90 | 2022-01-26T08:00:00 | · · · · · AREA COMUN | 20426 | d | 2022-06-01T18:00:00 | 2022-01-26T08:00:00 | True | 18 |  |  | True |
| 120.0d | 0 | 2022-05-18T18:00:00 | 0 | FixedDuration | h | 120 | 2021-11-26T08:00:00 | · · · · TECHUMBRE | 20372 | d | 2022-05-18T18:00:00 | 2021-11-26T08:00:00 | True | 18 |  |  | True |
| 120.0d | 0 | 2022-05-18T18:00:00 | 0 | FixedDuration | h | 120 | 2021-11-26T08:00:00 | · · · · ESCALA Y VESTIBULOS | 20375 | d | 2022-05-18T18:00:00 | 2021-11-26T08:00:00 | True | 18 |  |  | True |
| 381.0d | 0 | 2022-05-18T18:00:00 | 0 | Normal | h | 381 | 2020-10-16T08:00:00 | · · INSTALACIONES | 20429 | d | 2022-05-18T18:00:00 | 2020-10-16T08:00:00 | True | 18 | True |  |  |
| 371.0d | 0 | 2022-05-04T18:00:00 | 0 | Normal | h | 371 | 2020-10-16T08:00:00 | · · · I EL�CTRICAS | 18654 | d | 2022-05-04T18:00:00 | 2020-10-16T08:00:00 | True | 18 | True |  |  |
| 300.0d | 0 | 2022-01-24T18:00:00 | 0 | FixedDuration | h | 300 | 2020-10-16T08:00:00 | · · · · CANALIZACIONES | 20491 | d | 2022-01-24T18:00:00 | 2020-10-16T08:00:00 | True | 18 |  |  | True |
| 200.0d | 0 | 2022-01-24T18:00:00 | 0 | FixedDuration | h | 200 | 2021-04-07T08:00:00 | · · · · ALAMBRADO | 20492 | d | 2022-01-24T18:00:00 | 2021-04-07T08:00:00 | True | 18 |  |  | True |
| 180.0d | 0 | 2022-05-04T18:00:00 | 0 | FixedDuration | h | 180 | 2021-08-17T08:00:00 | · · · · TABLEROS | 20493 | d | 2022-05-04T18:00:00 | 2021-08-17T08:00:00 | True | 18 |  |  | True |
| 60.0d | 0 | 2022-03-08T18:00:00 | 0 | FixedDuration | h | 60 | 2021-12-13T08:00:00 | · · · · EMPALMES | 20478 | d | 2022-03-08T18:00:00 | 2021-12-13T08:00:00 | True | 18 |  |  | True |
| 40.0d | 0 | 2022-02-24T18:00:00 | 0 | FixedDuration | h | 40 | 2021-12-30T08:00:00 | · · · · GRUPO ELECTROGENO | 20483 | d | 2022-02-24T18:00:00 | 2021-12-30T08:00:00 | True | 18 |  |  | True |
| 80.0d | 0 | 2022-02-22T18:00:00 | 0 | FixedDuration | h | 80 | 2021-10-28T08:00:00 | · · · · BPC Y DLP | 20486 | d | 2022-02-22T18:00:00 | 2021-10-28T08:00:00 | True | 18 |  |  | True |
| 200.0d | 0 | 2022-01-31T18:00:00 | 0 | FixedDuration | h | 200 | 2021-04-14T08:00:00 | · · · · ALIMENTADORES Y CONDUCTORES | 20485 | d | 2022-01-31T18:00:00 | 2021-04-14T08:00:00 | True | 18 |  |  | True |
| 100.0d | 0 | 2021-11-05T18:00:00 | 0 | FixedDuration | h | 100 | 2021-06-14T08:00:00 | · · · · ARTEFACTOS | 20480 | d | 2021-11-05T18:00:00 | 2021-06-14T08:00:00 | True | 18 |  |  | True |
| 270.0d | 0 | 2022-02-02T18:00:00 | 0 | FixedDuration | h | 270 | 2021-01-07T08:00:00 | · · · · PUESTA A TIERRA | 20481 | d | 2022-02-02T18:00:00 | 2021-01-07T08:00:00 | True | 18 |  |  | True |
| 80.0d | 0 | 2021-11-25T18:00:00 | 0 | FixedDuration | h | 80 | 2021-08-03T08:00:00 | · · · · EQUIPOS DE ILUMINACION | 20487 | d | 2021-11-25T18:00:00 | 2021-08-03T08:00:00 | True | 18 |  |  | True |
| 350.0d | 0 | 2022-05-18T18:00:00 | 0 | Normal | h | 350 | 2020-12-28T08:00:00 | · · · I SANITARIAS | 18655 | d | 2022-05-18T18:00:00 | 2020-12-28T08:00:00 | True | 18 | True |  |  |
| 350.0d | 0 | 2022-05-18T18:00:00 | 0 | FixedDuration | h | 350 | 2020-12-28T08:00:00 | · · · · AGUA POTABLE | 20494 | d | 2022-05-18T18:00:00 | 2020-12-28T08:00:00 | True | 18 |  |  | True |
| 250.0d | 0 | 2022-02-16T18:00:00 | 0 | FixedDuration | h | 250 | 2021-02-18T08:00:00 | · · · · RED SECA | 20495 | d | 2022-02-16T18:00:00 | 2021-02-18T08:00:00 | True | 18 |  |  | True |
| 250.0d | 0 | 2022-02-16T18:00:00 | 0 | FixedDuration | h | 250 | 2021-02-18T08:00:00 | · · · · RED HUMEDA | 20496 | d | 2022-02-16T18:00:00 | 2021-02-18T08:00:00 | True | 18 |  |  | True |
| 350.0d | 0 | 2022-05-18T18:00:00 | 0 | FixedDuration | h | 350 | 2020-12-28T08:00:00 | · · · · ALCANTARILLADO | 20497 | d | 2022-05-18T18:00:00 | 2020-12-28T08:00:00 | True | 18 |  |  | True |
| 250.0d | 0 | 2022-02-16T18:00:00 | 0 | FixedDuration | h | 250 | 2021-02-18T08:00:00 | · · · · AGUAS LLUVIAS | 20498 | d | 2022-02-16T18:00:00 | 2021-02-18T08:00:00 | True | 18 |  |  | True |
| 210.0d | 0 | 2022-03-30T18:00:00 | 0 | Normal | h | 210 | 2021-05-31T08:00:00 | · · · I BASURA | 18656 | d | 2022-03-30T18:00:00 | 2021-05-31T08:00:00 | True | 18 | True |  |  |
| 210.0d | 0 | 2022-03-30T18:00:00 | 0 | FixedDuration | h | 210 | 2021-05-31T08:00:00 | · · · · DUCTOS | 20513 | d | 2022-03-30T18:00:00 | 2021-05-31T08:00:00 | True | 18 |  |  | True |
| 30.0d | 0 | 2022-03-30T18:00:00 | 0 | FixedDuration | h | 30 | 2022-02-17T08:00:00 | · · · · TOLVAS | 20514 | d | 2022-03-30T18:00:00 | 2022-02-17T08:00:00 | True | 18 |  |  | True |
| 5.0d | 0 | 2022-01-06T18:00:00 | 0 | FixedDuration | h | 5 | 2021-12-30T08:00:00 | · · · · EQUIPAMIENTO SALA | 20515 | d | 2022-01-06T18:00:00 | 2021-12-30T08:00:00 | True | 18 |  |  | True |
| 180.0d | 0 | 2022-05-04T18:00:00 | 0 | Normal | h | 180 | 2021-08-17T08:00:00 | · · · I CLIMA | 18658 | d | 2022-05-04T18:00:00 | 2021-08-17T08:00:00 | True | 18 | True |  |  |
| 120.0d | 0 | 2022-02-08T18:00:00 | 0 | FixedDuration | h | 120 | 2021-08-17T08:00:00 | · · · · DUCTOS | 20519 | d | 2022-02-08T18:00:00 | 2021-08-17T08:00:00 | True | 18 |  |  | True |
| 60.0d | 0 | 2022-05-04T18:00:00 | 0 | FixedDuration | h | 60 | 2022-02-09T08:00:00 | · · · · REJILLAS | 20520 | d | 2022-05-04T18:00:00 | 2022-02-09T08:00:00 | True | 18 |  |  | True |
| 60.0d | 0 | 2022-03-22T18:00:00 | 0 | FixedDuration | h | 60 | 2021-12-28T08:00:00 | · · · · EQUIPOS | 20521 | d | 2022-03-22T18:00:00 | 2021-12-28T08:00:00 | True | 18 |  |  | True |
| 200.0d | 0 | 2022-02-16T18:00:00 | 0 | Normal | h | 200 | 2021-04-30T08:00:00 | · · · I CCDD | 18659 | d | 2022-02-16T18:00:00 | 2021-04-30T08:00:00 | True | 18 | True |  |  |
| 200.0d | 0 | 2022-02-16T18:00:00 | 0 | FixedDuration | h | 200 | 2021-04-30T08:00:00 | · · · · SISTEMA DE CCTV | 20509 | d | 2022-02-16T18:00:00 | 2021-04-30T08:00:00 | True | 18 |  |  | True |
| 200.0d | 0 | 2022-02-16T18:00:00 | 0 | FixedDuration | h | 200 | 2021-04-30T08:00:00 | · · · · SISTEMA DE CITOFONIA | 20510 | d | 2022-02-16T18:00:00 | 2021-04-30T08:00:00 | True | 18 |  |  | True |
| 200.0d | 0 | 2022-02-16T18:00:00 | 0 | FixedDuration | h | 200 | 2021-04-30T08:00:00 | · · · · SISTEMA DE INTRUSION | 20511 | d | 2022-02-16T18:00:00 | 2021-04-30T08:00:00 | True | 18 |  |  | True |
| 200.0d | 0 | 2022-02-16T18:00:00 | 0 | FixedDuration | h | 200 | 2021-04-30T08:00:00 | · · · · SISTEMA DE DETECCION DE INCENDIO | 20512 | d | 2022-02-16T18:00:00 | 2021-04-30T08:00:00 | True | 18 |  |  | True |
| 200.0d | 0 | 2022-02-16T18:00:00 | 0 | FixedDuration | h | 200 | 2021-04-30T08:00:00 | · · · · AUTOMATIZACION | 20529 | d | 2022-02-16T18:00:00 | 2021-04-30T08:00:00 | True | 18 |  |  | True |
| 200.0d | 0 | 2022-02-16T18:00:00 | 0 | FixedDuration | h | 200 | 2021-04-30T08:00:00 | · · · · TELECOMUNICACIONES | 20530 | d | 2022-02-16T18:00:00 | 2021-04-30T08:00:00 | True | 18 |  |  | True |
| 130.0d | 0 | 2022-05-04T18:00:00 | 0 | Normal | h | 130 | 2021-10-28T08:00:00 | · · · ASCENSORES | 18660 | d | 2022-05-04T18:00:00 | 2021-10-28T08:00:00 | True | 18 | True |  |  |
| 20.0d | 0 | 2021-11-25T18:00:00 | 0 | FixedDuration | h | 20 | 2021-10-28T08:00:00 | · · · · OBRAS CIVILES | 20542 | d | 2021-11-25T18:00:00 | 2021-10-28T08:00:00 | True | 18 |  |  | True |
| 20.0d | 0 | 2021-12-27T18:00:00 | 0 | FixedDuration | h | 20 | 2021-11-26T08:00:00 | · · · · ESTRUCTURA METALICA | 20505 | d | 2021-12-27T18:00:00 | 2021-11-26T08:00:00 | True | 18 |  |  | True |
| 30.0d | 0 | 2022-02-08T18:00:00 | 0 | FixedDuration | h | 30 | 2021-12-28T08:00:00 | · · · · RIELES | 20506 | d | 2022-02-08T18:00:00 | 2021-12-28T08:00:00 | True | 18 |  |  | True |
| 30.0d | 0 | 2022-03-22T18:00:00 | 0 | FixedDuration | h | 30 | 2022-02-09T08:00:00 | · · · · MARCOS, PUERTAS Y CABINAS | 20507 | d | 2022-03-22T18:00:00 | 2022-02-09T08:00:00 | True | 18 |  |  | True |
| 30.0d | 0 | 2022-05-04T18:00:00 | 0 | FixedDuration | h | 30 | 2022-03-23T08:00:00 | · · · · TERMINACION CABINA | 20508 | d | 2022-05-04T18:00:00 | 2022-03-23T08:00:00 | True | 18 |  |  | True |
| 100.0d | 0 | 2022-04-05T18:00:00 | 0 | Normal | h | 100 | 2021-11-12T08:00:00 | · · FACHADA | 18597 | d | 2022-04-05T18:00:00 | 2021-11-12T08:00:00 | True | 18 | True |  |  |
| 100.0d | 0 | 2022-04-05T18:00:00 | 0 | FixedDuration | h | 100 | 2021-11-12T08:00:00 | · · · FACHADA | 18598 | d | 2022-04-05T18:00:00 | 2021-11-12T08:00:00 | True | 18 |  |  | True |
| 310.0d | 0 | 2022-06-01T18:00:00 | 0 | Normal | h | 310 | 2021-03-10T08:00:00 | · · OBRAS EXTERIORES | 18599 | d | 2022-06-01T18:00:00 | 2021-03-10T08:00:00 | True | 18 | True |  |  |
| 310.0d | 0 | 2022-06-01T18:00:00 | 0 | FixedDuration | h | 310 | 2021-03-10T08:00:00 | · · · OBRAS EXTERIORES | 18600 | d | 2022-06-01T18:00:00 | 2021-03-10T08:00:00 | True | 18 |  |  | True |
| 100.0d | 0 | 2022-03-22T18:00:00 | 0 | FixedDuration | h | 100 | 2021-10-28T08:00:00 | · · · PISCINA | 20541 | d | 2022-03-22T18:00:00 | 2021-10-28T08:00:00 | True | 18 |  |  | True |
| 80.0d | 0 | 2022-06-01T18:00:00 | 0 | Normal | h | 80 | 2022-02-09T08:00:00 | · REVISI�N Y RECEPCI�N | 18601 | d | 2022-06-01T18:00:00 | 2022-02-09T08:00:00 | True | 18 | True |  |  |
| 14.0d | 0 | 2022-06-01T18:00:00 | 0 | Normal | h | 14 | 2022-05-12T18:00:00 | · · CERTIFICADOS | 18602 | d | 2022-06-01T18:00:00 | 2022-05-12T18:00:00 | True | 18 | True |  |  |
| 0.0d | 0 | 2022-06-01T18:00:00 | 0 | FixedDuration | h | 0 | 2022-06-01T18:00:00 | · · · CERTIFICADOS ELECTRICOS | 18603 | d | 2022-06-01T18:00:00 | 2022-06-01T18:00:00 | True | 18 |  | True | True |
| 0.0d | 0 | 2022-05-25T18:00:00 | 0 | FixedDuration | h | 0 | 2022-05-25T18:00:00 | · · · CERTIFICADOS SANITARIOS | 18769 | d | 2022-05-25T18:00:00 | 2022-05-25T18:00:00 | True | 18 |  | True | True |
| 0.0d | 0 | 2022-06-01T18:00:00 | 0 | FixedDuration | h | 0 | 2022-06-01T18:00:00 | · · · CERTIFICADO ASCENSOR | 18770 | d | 2022-06-01T18:00:00 | 2022-06-01T18:00:00 | True | 18 |  | True | True |
| 0.0d | 0 | 2022-05-12T18:00:00 | 0 | FixedDuration | h | 0 | 2022-05-12T18:00:00 | · · · CERTIFICADO BASURA | 18772 | d | 2022-05-12T18:00:00 | 2022-05-12T18:00:00 | True | 18 |  | True | True |
| 0.0d | 0 | 2022-06-01T18:00:00 | 0 | FixedDuration | h | 0 | 2022-06-01T18:00:00 | · · · CERTIFICADO PISCINA | 18771 | d | 2022-06-01T18:00:00 | 2022-06-01T18:00:00 | True | 18 |  | True | True |
| 80.0d | 0 | 2022-06-01T18:00:00 | 0 | Normal | h | 80 | 2022-02-09T08:00:00 | · · RECEPCIONES (50% SOLICITUD DE RECEPCION) | 20535 | d | 2022-06-01T18:00:00 | 2022-02-09T08:00:00 | True | 18 | True |  |  |
| 80.0d | 0 | 2022-06-01T18:00:00 | 0 | FixedDuration | h | 80 | 2022-02-09T08:00:00 | · · · RECEPCION DEPARTAMENTOS (50% SOLICITUD RECEP.) | 20536 | d | 2022-06-01T18:00:00 | 2022-02-09T08:00:00 | True | 18 |  |  | True |
| 60.0d | 0 | 2022-06-01T18:00:00 | 0 | FixedDuration | h | 60 | 2022-03-09T08:00:00 | · · · RECEPCION AREAS COMUNES (50% SOLICITUD RECEP.) | 20537 | d | 2022-06-01T18:00:00 | 2022-03-09T08:00:00 | True | 18 |  |  | True |
| 60.0d | 0 | 2022-05-25T18:00:00 | 0 | FixedDuration | h | 60 | 2022-03-02T08:00:00 | · · · RECEPCION INSTALACIONES (INSTALACIONES FUNCIONANDO) | 20540 | d | 2022-05-25T18:00:00 | 2022-03-02T08:00:00 | True | 18 |  |  | True |
| 0.0d | 0 | 2022-06-01T18:00:00 | 0 | Normal | h | 0 | 2022-06-01T18:00:00 | · · RECEPCI�N PROVISORIA | 18607 | d | 2022-06-01T18:00:00 | 2022-06-01T18:00:00 | True | 18 | True | True |  |
| 0.0d | 0 | 2022-06-01T18:00:00 | 0 | FixedDuration | h | 0 | 2022-06-01T18:00:00 | · · · SOLICITUD RECEPCION PROVISORIA | 20534 | d | 2022-06-01T18:00:00 | 2022-06-01T18:00:00 | True | 18 |  | True | True |

Links (lag, from, id, to, lagUnit, type):
- 0 20380 1 20381 d 2
- 0 18567 2 20383 d 3
- 0 20407 3 20389 d 3
- 0 20536 4 20390 d 0
- 0 20534 5 18547 d 3
- 20 18546 6 20546 d 2
- 80 18546 7 18551 d 2
- 0 20478 8 21277 d 3
- 80 18546 9 18552 d 2
- 100 18546 10 18549 d 2
- 100 18546 11 18550 d 2
- 100 18546 12 20547 d 2
- 0 18547 13 20545 d 3
- 10 18546 14 20548 d 2
- 0 18546 15 20388 d 0
- 30 18546 16 20550 d 2
- 30 18546 17 20549 d 2
- 90 18546 18 20384 d 0
- 20 18546 19 20385 d 0
- 30 18546 20 20430 d 0
- -120 18547 21 20431 d 3
- 0 20407 22 20538 d 2
- -120 18547 23 20539 d 3
- 0 18546 24 18557 d 2
- 0 18546 25 19128 d 2
- 0 19128 26 19507 d 2
- 0 19471 27 19508 d 2
- 0 19507 28 19508 d 2
- -3 19507 29 19534 d 2
- -3 19507 30 19535 d 2
- 15 19507 31 19511 d 0
- 0 19511 32 19512 d 2
- -1 19512 33 19513 d 2
- 4 19507 34 19519 d 2
- 0 19519 35 19520 d 2
- -2 19522 36 19523 d 0
- 0 19520 37 19522 d 2
- 0 19511 38 19525 d 0
- 0 19525 39 19526 d 2
- 7 19507 40 19133 d 2
- 0 19133 41 19134 d 2
- 0 18546 42 19475 d 2
- 0 19475 43 19476 d 2
- 0 19476 44 19477 d 2
- 0 19477 45 19478 d 2
- 0 19478 46 19479 d 2
- 0 19479 47 19480 d 2
- 0 19480 48 19481 d 2
- 0 19481 49 19482 d 2
- 0 19482 50 19486 d 2
- 0 19486 51 19487 d 2
- 0 19487 52 19488 d 2
- 0 19488 53 19489 d 2
- 0 19489 54 19490 d 2
- 0 19490 55 19491 d 2
- 0 19491 56 19492 d 2
- 0 19492 57 19493 d 2
- 0 19491 58 19494 d 3
- 0 19491 59 19498 d 3
- 0 19498 60 19499 d 2
- 0 19498 61 19500 d 2
- 0 19500 62 19501 d 2
- 0 19500 63 19502 d 2
- 0 19502 64 19503 d 2
- 0 19503 65 19504 d 2
- 0 18546 66 19467 d 2
- 0 19467 67 19147 d 2
- 0 19147 68 19458 d 2
- 0 19458 69 19460 d 2
- 0 19460 70 19461 d 2
- 0 19461 71 19462 d 2
- 0 19462 72 19463 d 2
- 0 19463 73 19464 d 2
- 0 19463 74 19465 d 2
- 0 19465 75 19466 d 2
- 0 19464 76 19466 d 2
- 0 19466 77 19470 d 2
- 0 19470 78 19471 d 2
- 3 19466 79 19471 d 2
- 0 18546 80 19527 d 2
- 0 18546 81 19528 d 2
- 0 18546 82 19529 d 2
- 0 18546 83 19530 d 2
- -15 18557 84 18568 d 2
- 5 19528 85 18568 d 2
- 0 19472 86 18780 d 2
- 0 19144 87 18780 d 2
- -5 18780 88 18781 d 2
- -5 18781 89 18782 d 2
- -5 18782 90 18783 d 2
- 0 18780 91 18799 d 2
- -5 18799 92 18800 d 2
- 0 18781 93 18800 d 2
- -5 18800 94 18801 d 2
- 0 18782 95 18801 d 2
- -5 18801 96 18802 d 2
- 0 18783 97 18802 d 2
- 0 18799 98 18804 d 2
- -5 18804 99 18805 d 2
- 0 18800 100 18805 d 2
- -5 18805 101 18806 d 2
- 0 18801 102 18806 d 2
- -5 18806 103 18807 d 2
- 0 18802 104 18807 d 2
- 0 18804 105 18809 d 2
- -5 18809 106 18810 d 2
- 0 18805 107 18810 d 2
- -5 18810 108 18811 d 2
- 0 18806 109 18811 d 2
- -5 18811 110 18812 d 2
- 0 18807 111 18812 d 2
- 0 18809 112 18814 d 2
- -5 18814 113 18815 d 2
- 0 18810 114 18815 d 2
- -5 18815 115 18816 d 2
- 0 18811 116 18816 d 2
- -5 18816 117 18817 d 2
- 0 18812 118 18817 d 2
- 0 18814 119 18819 d 2
- -5 18819 120 18820 d 2
- 0 18815 121 18820 d 2
- -5 18820 122 18821 d 2
- 0 18816 123 18821 d 2
- -5 18821 124 18822 d 2
- 0 18817 125 18822 d 2
- 0 18827 126 18902 d 2
- 0 18902 127 18903 d 2
- 0 18903 128 18904 d 2
- 0 18904 129 19153 d 2
- 0 19153 130 19154 d 2
- 0 18859 131 19167 d 2
- 0 19167 132 19168 d 2
- 0 19168 133 19169 d 2
- 0 19169 134 19170 d 2
- 0 19170 135 19171 d 2
- 0 18869 136 19173 d 2
- 0 19173 137 19174 d 2
- 0 19174 138 19175 d 2
- 0 19175 139 19176 d 2
- 0 19176 140 19177 d 2
- 0 18878 141 19179 d 2
- 0 19179 142 19180 d 2
- 0 19180 143 19181 d 2
- 0 19181 144 19182 d 2
- 0 19182 145 19183 d 2
- 0 18887 146 19185 d 2
- 0 19185 147 19186 d 2
- 0 19186 148 19187 d 2
- 0 19187 149 19188 d 2
- 0 19188 150 19189 d 2
- 0 18896 151 19191 d 2
- 0 19191 152 19192 d 2
- 0 19192 153 19193 d 2
- 0 19193 154 19194 d 2
- 0 19194 155 19195 d 2
- -15 18568 156 18614 d 2
- 0 18807 157 18825 d 2
- -2 18825 158 18826 d 2
- -2 18826 159 18827 d 2
- 0 18827 160 19196 d 2
- 0 19154 161 19196 d 2
- -2 19196 162 19197 d 2
- -2 19197 163 19198 d 2
- -2 19198 164 18829 d 2
- -2 18829 165 18830 d 2
- 0 18825 166 18857 d 2
- -2 18857 167 18858 d 2
- 0 18826 168 18858 d 2
- -2 18858 169 18859 d 2
- 0 18827 170 18859 d 2
- 0 18859 171 19200 d 2
- 0 19171 172 19200 d 2
- 0 19196 173 19200 d 2
- -2 19200 174 19201 d 2
- 0 19197 175 19201 d 2
- -2 19201 176 19202 d 2
- 0 19198 177 19202 d 2
- -2 19202 178 19203 d 2
- 0 18829 179 19203 d 2
- -2 19203 180 19204 d 2
- 0 18830 181 19204 d 2
- 0 18857 182 18867 d 2
- -2 18867 183 18868 d 2
- 0 18858 184 18868 d 2
- -2 18868 185 18869 d 2
- 0 18859 186 18869 d 2
- 0 19177 187 19207 d 2
- 0 18869 188 19207 d 2
- 0 19200 189 19207 d 2
- -2 19207 190 19208 d 2
- 0 19201 191 19208 d 2
- -2 19208 192 19209 d 2
- 0 19202 193 19209 d 2
- -2 19209 194 19210 d 2
- 0 19203 195 19210 d 2
- -2 19210 196 19211 d 2
- 0 19204 197 19211 d 2
- 0 18867 198 18876 d 2
- -2 18876 199 18877 d 2
- 0 18868 200 18877 d 2
- -2 18877 201 18878 d 2
- 0 18869 202 18878 d 2
- 0 19183 203 19214 d 2
- 0 18878 204 19214 d 2
- 0 19207 205 19214 d 2
- -2 19214 206 19215 d 2
- 0 19208 207 19215 d 2
- -2 19215 208 19216 d 2
- 0 19209 209 19216 d 2
- -2 19216 210 19217 d 2
- 0 19210 211 19217 d 2
- -2 19217 212 19218 d 2
- 0 19211 213 19218 d 2
- 0 18876 214 18885 d 2
- -2 18885 215 18886 d 2
- 0 18877 216 18886 d 2
- -2 18886 217 18887 d 2
- 0 18878 218 18887 d 2
- 0 19189 219 19221 d 2
- 0 18887 220 19221 d 2
- 0 19214 221 19221 d 2
- -2 19221 222 19222 d 2
- 0 19215 223 19222 d 2
- -2 19222 224 19223 d 2
- 0 19216 225 19223 d 2
- -2 19223 226 19224 d 2
- 0 19217 227 19224 d 2
- -2 19224 228 19225 d 2
- 0 19218 229 19225 d 2
- 0 18885 230 18894 d 2
- -2 18894 231 18895 d 2
- 0 18886 232 18895 d 2
- -2 18895 233 18896 d 2
- 0 18887 234 18896 d 2
- 0 18896 235 19228 d 2
- 0 19195 236 19228 d 2
- 0 19221 237 19228 d 2
- -2 19228 238 19229 d 2
- 0 19222 239 19229 d 2
- -2 19229 240 19230 d 2
- 0 19223 241 19230 d 2
- -2 19230 242 19231 d 2
- 0 19224 243 19231 d 2
- -2 19231 244 19232 d 2
- 0 19225 245 19232 d 2
- 0 18894 246 19240 d 2
- 0 18830 247 19240 d 2
- -2 19240 248 19241 d 2
- 0 18895 249 19241 d 2
- -2 19241 250 19242 d 2
- 0 18896 251 19242 d 2
- 0 19242 252 19244 d 2
- 0 19228 253 19244 d 2
- -2 19244 254 19245 d 2
- 0 19229 255 19245 d 2
- -2 19245 256 19246 d 2
- 0 19230 257 19246 d 2
- -2 19246 258 19247 d 2
- 0 19231 259 19247 d 2
- -2 19247 260 19248 d 2
- 0 19232 261 19248 d 2
- 0 19240 262 19252 d 2
- 0 19204 263 19252 d 2
- -2 19252 264 19253 d 2
- 0 19241 265 19253 d 2
- -2 19253 266 19254 d 2
- 0 19242 267 19254 d 2
- 0 19254 268 19256 d 2
- 0 19244 269 19256 d 2
- -2 19256 270 19257 d 2
- 0 19245 271 19257 d 2
- -2 19257 272 19258 d 2
- 0 19246 273 19258 d 2
- -2 19258 274 19259 d 2
- 0 19247 275 19259 d 2
- -2 19259 276 19260 d 2
- 0 19248 277 19260 d 2
- 0 19252 278 19264 d 2
- 0 19211 279 19264 d 2
- -2 19264 280 19265 d 2
- 0 19253 281 19265 d 2
- -2 19265 282 19266 d 2
- 0 19254 283 19266 d 2
- 0 19266 284 19268 d 2
- 0 19256 285 19268 d 2
- -2 19268 286 19269 d 2
- 0 19257 287 19269 d 2
- -2 19269 288 19270 d 2
- 0 19258 289 19270 d 2
- -2 19270 290 19271 d 2
- 0 19259 291 19271 d 2
- -3 19271 292 19272 d 2
- 0 19260 293 19272 d 2
- 0 19264 294 19276 d 2
- 0 19218 295 19276 d 2
- -2 19276 296 19277 d 2
- 0 19265 297 19277 d 2
- -2 19277 298 19278 d 2
- 0 19266 299 19278 d 2
- 0 19278 300 19280 d 2
- 0 19268 301 19280 d 2
- -2 19280 302 19281 d 2
- 0 19269 303 19281 d 2
- -2 19281 304 19282 d 2
- 0 19270 305 19282 d 2
- -2 19282 306 19283 d 2
- 0 19271 307 19283 d 2
- -2 19283 308 19284 d 2
- 0 19272 309 19284 d 2
- 0 19276 310 19288 d 2
- 0 19225 311 19288 d 2
- -2 19288 312 19289 d 2
- 0 19277 313 19289 d 2
- -2 19289 314 19290 d 2
- 0 19278 315 19290 d 2
- 0 19290 316 19292 d 2
- 0 19280 317 19292 d 2
- -2 19292 318 19293 d 2
- 0 19281 319 19293 d 2
- -2 19293 320 19294 d 2
- 0 19282 321 19294 d 2
- -2 19294 322 19295 d 2
- 0 19283 323 19295 d 2
- -2 19295 324 19296 d 2
- 0 19284 325 19296 d 2
- 0 19288 326 19300 d 2
- 0 19232 327 19300 d 2
- -2 19300 328 19301 d 2
- 0 19289 329 19301 d 2
- -2 19301 330 19302 d 2
- 0 19290 331 19302 d 2
- 0 19302 332 19304 d 2
- 0 19292 333 19304 d 2
- -2 19304 334 19305 d 2
- 0 19293 335 19305 d 2
- -2 19305 336 19306 d 2
- 0 19294 337 19306 d 2
- -2 19306 338 19307 d 2
- 0 19295 339 19307 d 2
- -2 19307 340 19308 d 2
- 0 19296 341 19308 d 2
- 0 19248 342 20621 d 2
- 0 19300 343 20621 d 2
- -2 20621 344 20622 d 2
- 0 19301 345 20622 d 2
- -2 20622 346 20623 d 2
- 0 19302 347 20623 d 2
- 0 20623 348 20625 d 2
- 0 19304 349 20625 d 2
- -2 20625 350 20626 d 2
- 0 19305 351 20626 d 2
- -2 20626 352 20627 d 2
- 0 19306 353 20627 d 2
- -2 20627 354 20628 d 2
- 0 19307 355 20628 d 2
- -2 20628 356 20629 d 2
- 0 19308 357 20629 d 2
- 0 20621 358 20632 d 2
- 0 19260 359 20632 d 2
- 0 20622 360 20633 d 2
- -2 20632 361 20633 d 2
- 0 20623 362 20634 d 2
- -2 20633 363 20634 d 2
- 0 20625 364 20636 d 2
- 0 20634 365 20636 d 2
- 0 20626 366 20637 d 2
- -2 20636 367 20637 d 2
- 0 20627 368 20638 d 2
- -2 20637 369 20638 d 2
- 0 20628 370 20639 d 2
- -2 20638 371 20639 d 2
- 0 20629 372 20640 d 2
- -2 20639 373 20640 d 2
- 0 20632 374 20643 d 2
- 0 19272 375 20643 d 2
- 0 20633 376 20644 d 2
- -2 20643 377 20644 d 2
- 0 20634 378 20645 d 2
- -2 20644 379 20645 d 2
- 0 20636 380 20647 d 2
- 0 20645 381 20647 d 2
- 0 20637 382 20648 d 2
- -2 20647 383 20648 d 2
- 0 20638 384 20649 d 2
- -2 20648 385 20649 d 2
- 0 20639 386 20650 d 2
- -2 20649 387 20650 d 2
- 0 20640 388 20651 d 2
- -3 20650 389 20651 d 2
- 0 20643 390 20654 d 2
- 0 19284 391 20654 d 2
- 0 20644 392 20655 d 2
- -2 20654 393 20655 d 2
- 0 20645 394 20656 d 2
- -2 20655 395 20656 d 2
- 0 20647 396 20658 d 2
- 0 20656 397 20658 d 2
- 0 20648 398 20659 d 2
- -2 20658 399 20659 d 2
- 0 20649 400 20660 d 2
- -2 20659 401 20660 d 2
- 0 20650 402 20661 d 2
- -2 20660 403 20661 d 2
- 0 20651 404 20662 d 2
- -2 20661 405 20662 d 2
- 0 20654 406 20665 d 2
- 0 19296 407 20665 d 2
- 0 20655 408 20666 d 2
- -2 20665 409 20666 d 2
- 0 20656 410 20667 d 2
- -2 20666 411 20667 d 2
- 0 20658 412 20669 d 2
- 0 20667 413 20669 d 2
- 0 20659 414 20670 d 2
- -2 20669 415 20670 d 2
- 0 20660 416 20671 d 2
- -2 20670 417 20671 d 2
- 0 20661 418 20672 d 2
- -2 20671 419 20672 d 2
- 0 20662 420 20673 d 2
- -2 20672 421 20673 d 2
- 0 20665 422 20676 d 2
- 0 19308 423 20676 d 2
- 0 20666 424 20677 d 2
- -2 20676 425 20677 d 2
- 0 20667 426 20678 d 2
- -2 20677 427 20678 d 2
- 0 20669 428 20680 d 2
- 0 20678 429 20680 d 2
- 0 20670 430 20681 d 2
- -2 20680 431 20681 d 2
- 0 20671 432 20682 d 2
- -2 20681 433 20682 d 2
- 0 20672 434 20683 d 2
- -2 20682 435 20683 d 2
- 0 20673 436 20684 d 2
- -2 20683 437 20684 d 2
- 0 20676 438 20688 d 2
- 0 20629 439 20688 d 2
- -2 20688 440 20689 d 2
- 0 20677 441 20689 d 2
- -2 20689 442 20690 d 2
- 0 20678 443 20690 d 2
- 0 20690 444 20692 d 2
- 0 20680 445 20692 d 2
- -2 20692 446 20693 d 2
- 0 20681 447 20693 d 2
- -2 20693 448 20694 d 2
- 0 20682 449 20694 d 2
- -2 20694 450 20695 d 2
- 0 20683 451 20695 d 2
- -2 20695 452 20696 d 2
- 0 20684 453 20696 d 2
- 0 20688 454 20699 d 2
- 0 20640 455 20699 d 2
- 0 20689 456 20700 d 2
- -2 20699 457 20700 d 2
- 0 20690 458 20701 d 2
- -2 20700 459 20701 d 2
- 0 20692 460 20703 d 2
- 0 20701 461 20703 d 2
- 0 20693 462 20704 d 2
- -2 20703 463 20704 d 2
- 0 20694 464 20705 d 2
- -2 20704 465 20705 d 2
- 0 20695 466 20706 d 2
- -2 20705 467 20706 d 2
- 0 20696 468 20707 d 2
- -2 20706 469 20707 d 2
- 0 20699 470 20710 d 2
- 0 20651 471 20710 d 2
- 0 20700 472 20711 d 2
- -2 20710 473 20711 d 2
- 0 20701 474 20712 d 2
- -2 20711 475 20712 d 2
- 0 20703 476 20714 d 2
- 0 20712 477 20714 d 2
- 0 20704 478 20715 d 2
- -2 20714 479 20715 d 2
- 0 20705 480 20716 d 2
- -2 20715 481 20716 d 2
- 0 20706 482 20717 d 2
- -2 20716 483 20717 d 2
- 0 20707 484 20718 d 2
- -3 20717 485 20718 d 2
- 0 20710 486 20721 d 2
- 0 20662 487 20721 d 2
- 0 20711 488 20722 d 2
- -2 20721 489 20722 d 2
- 0 20712 490 20723 d 2
- -2 20722 491 20723 d 2
- 0 20714 492 20725 d 2
- 0 20723 493 20725 d 2
- 0 20715 494 20726 d 2
- -2 20725 495 20726 d 2
- 0 20716 496 20727 d 2
- -2 20726 497 20727 d 2
- 0 20717 498 20728 d 2
- -2 20727 499 20728 d 2
- 0 20718 500 20729 d 2
- -2 20728 501 20729 d 2
- 0 20721 502 20732 d 2
- 0 20673 503 20732 d 2
- 0 20722 504 20733 d 2
- -2 20732 505 20733 d 2
- 0 20723 506 20734 d 2
- -2 20733 507 20734 d 2
- 0 20725 508 20736 d 2
- 0 20734 509 20736 d 2
- 0 20726 510 20737 d 2
- -2 20736 511 20737 d 2
- 0 20727 512 20738 d 2
- -2 20737 513 20738 d 2
- 0 20728 514 20739 d 2
- -2 20738 515 20739 d 2
- 0 20729 516 20740 d 2
- -2 20739 517 20740 d 2
- 0 20732 518 20743 d 2
- 0 20684 519 20743 d 2
- 0 20733 520 20744 d 2
- -2 20743 521 20744 d 2
- 0 20734 522 20745 d 2
- -2 20744 523 20745 d 2
- 0 20736 524 20747 d 2
- 0 20745 525 20747 d 2
- 0 20737 526 20748 d 2
- -2 20747 527 20748 d 2
- 0 20738 528 20749 d 2
- -2 20748 529 20749 d 2
- 0 20739 530 20750 d 2
- -2 20749 531 20750 d 2
- 0 20740 532 20751 d 2
- -2 20750 533 20751 d 2
- 0 20743 534 19537 d 2
- 0 20708 535 19537 d 2
- -2 19537 536 19538 d 2
- -3 19538 537 19539 d 2
- -2 19539 538 19548 d 2
- -2 19548 539 19543 d 2
- -2 19543 540 19544 d 2
- 0 19544 541 19545 d 2
- 0 19537 542 19552 d 2
- -2 19552 543 19553 d 2
- -3 19553 544 19554 d 2
- -2 19554 545 19555 d 2
- -2 19555 546 19557 d 2
- -2 19557 547 19558 d 2
- 0 19558 548 19559 d 2
- 0 19552 549 19562 d 2
- -2 19562 550 19563 d 2
- -3 19563 551 19564 d 2
- -2 19564 552 19565 d 2
- -2 19565 553 19567 d 2
- -2 19567 554 19568 d 2
- 0 19568 555 19569 d 2
- 0 19562 556 19572 d 2
- -2 19572 557 19573 d 2
- -3 19573 558 19574 d 2
- -2 19574 559 19575 d 2
- -2 19575 560 19577 d 2
- -2 19577 561 19578 d 2
- 0 19578 562 19579 d 2
- 0 19572 563 20755 d 2
- -2 20755 564 20756 d 2
- -3 20756 565 20757 d 2
- -2 20757 566 20758 d 2
- -2 20758 567 20760 d 2
- -2 20760 568 20761 d 2
- 0 20761 569 20762 d 2
- 0 20755 570 20765 d 2
- -2 20765 571 20766 d 2
- -3 20766 572 20767 d 2
- -2 20767 573 20768 d 2
- -2 20768 574 20770 d 2
- -2 20770 575 20771 d 2
- 0 20771 576 20772 d 2
- 0 20765 577 20775 d 2
- -2 20775 578 20776 d 2
- -3 20776 579 20777 d 2
- -2 20777 580 20778 d 2
- -2 20778 581 20780 d 2
- -2 20780 582 20781 d 2
- 0 20781 583 20782 d 2
- 0 20775 584 20785 d 2
- -2 20785 585 20786 d 2
- -3 20786 586 20787 d 2
- -2 20787 587 20788 d 2
- -2 20788 588 20790 d 2
- -2 20790 589 20791 d 2
- 0 20791 590 20792 d 2
- 0 20785 591 20796 d 2
- -2 20796 592 20797 d 2
- -3 20797 593 20798 d 2
- -2 20798 594 20799 d 2
- -2 20799 595 20801 d 2
- -2 20801 596 20802 d 2
- 0 20802 597 20803 d 2
- 0 20796 598 20806 d 2
- -2 20806 599 20807 d 2
- -3 20807 600 20808 d 2
- -2 20808 601 20809 d 2
- -2 20809 602 20811 d 2
- -2 20811 603 20812 d 2
- 0 20812 604 20813 d 2
- 0 20806 605 20816 d 2
- -2 20816 606 20817 d 2
- -3 20817 607 20818 d 2
- -2 20818 608 20819 d 2
- -2 20819 609 20821 d 2
- -2 20821 610 20822 d 2
- 0 20822 611 20823 d 2
- 0 20816 612 20826 d 2
- -2 20826 613 20827 d 2
- -3 20827 614 20828 d 2
- -2 20828 615 20829 d 2
- -2 20829 616 20831 d 2
- -2 20831 617 20832 d 2
- 0 20832 618 20833 d 2
- 0 20826 619 20837 d 2
- -2 20837 620 20838 d 2
- -3 20838 621 20839 d 2
- -2 20839 622 20840 d 2
- -2 20840 623 20842 d 2
- -2 20842 624 20843 d 2
- 0 20843 625 20844 d 2
- 0 20837 626 20847 d 2
- -2 20847 627 20848 d 2
- -3 20848 628 20849 d 2
- -2 20849 629 20850 d 2
- -2 20850 630 20852 d 2
- -2 20852 631 20853 d 2
- 0 20853 632 20854 d 2
- 0 20847 633 20857 d 2
- -2 20857 634 20858 d 2
- -3 20858 635 20859 d 2
- -2 20859 636 20860 d 2
- -2 20860 637 20862 d 2
- -2 20862 638 20863 d 2
- 0 20863 639 20864 d 2
- 0 20857 640 20867 d 2
- -2 20867 641 20868 d 2
- -3 20868 642 20869 d 2
- -2 20869 643 20870 d 2
- -2 20870 644 20872 d 2
- -2 20872 645 20873 d 2
- 0 20873 646 20874 d 2
- 0 20867 647 20878 d 2
- -2 20878 648 20879 d 2
- -3 20879 649 20880 d 2
- -2 20880 650 20881 d 2
- -2 20881 651 20883 d 2
- -2 20883 652 20884 d 2
- 0 20884 653 20885 d 2
- 0 20878 654 20888 d 2
- -2 20888 655 20889 d 2
- -3 20889 656 20890 d 2
- -2 20890 657 20891 d 2
- -2 20891 658 20893 d 2
- -2 20893 659 20894 d 2
- 0 20894 660 20895 d 2
- 0 20888 661 20898 d 2
- -2 20898 662 20899 d 2
- -3 20899 663 20900 d 2
- -2 20900 664 20901 d 2
- -2 20901 665 20903 d 2
- -2 20903 666 20904 d 2
- 0 20904 667 20905 d 2
- 0 20898 668 20908 d 2
- -2 20908 669 20909 d 2
- -3 20909 670 20910 d 2
- -2 20910 671 20911 d 2
- -2 20911 672 20913 d 2
- -2 20913 673 20914 d 2
- 0 20914 674 20915 d 2
- 0 20908 675 19748 d 2
- -1 19748 676 19749 d 2
- -2 19749 677 19750 d 2
- -1 19750 678 19751 d 2
- -1 19751 679 19753 d 2
- -1 19753 680 19754 d 2
- 0 19754 681 19755 d 2
- 0 19748 682 19758 d 2
- -1 19758 683 19759 d 2
- -2 19759 684 19760 d 2
- -1 19760 685 19761 d 2
- -1 19761 686 19763 d 2
- -1 19763 687 19764 d 2
- 0 19764 688 19765 d 2
- 0 19758 689 19768 d 2
- -1 19768 690 19769 d 2
- -2 19769 691 19770 d 2
- -1 19770 692 19771 d 2
- -1 19771 693 19773 d 2
- -1 19773 694 19774 d 2
- 0 19774 695 19775 d 2
- 0 19768 696 19778 d 2
- -1 19778 697 19779 d 2
- -2 19779 698 19780 d 2
- -1 19780 699 19781 d 2
- -1 19781 700 19783 d 2
- -1 19783 701 19784 d 2
- 0 19784 702 19785 d 2
- 0 19778 703 20919 d 2
- -1 20919 704 20920 d 2
- -2 20920 705 20921 d 2
- -1 20921 706 20922 d 2
- -1 20922 707 20924 d 2
- -1 20924 708 20925 d 2
- 0 20925 709 20926 d 2
- 0 20919 710 20929 d 2
- -1 20929 711 20930 d 2
- -2 20930 712 20931 d 2
- -1 20931 713 20932 d 2
- -1 20932 714 20934 d 2
- -1 20934 715 20935 d 2
- 0 20935 716 20936 d 2
- 0 20929 717 20939 d 2
- -1 20939 718 20940 d 2
- -2 20940 719 20941 d 2
- -1 20941 720 20942 d 2
- -1 20942 721 20944 d 2
- -1 20944 722 20945 d 2
- 0 20945 723 20946 d 2
- 0 20939 724 20949 d 2
- -1 20949 725 20950 d 2
- -2 20950 726 20951 d 2
- -1 20951 727 20952 d 2
- -1 20952 728 20954 d 2
- -1 20954 729 20955 d 2
- 0 20955 730 20956 d 2
- 0 20949 731 20960 d 2
- -1 20960 732 20961 d 2
- -2 20961 733 20962 d 2
- -1 20962 734 20963 d 2
- -1 20963 735 20965 d 2
- -1 20965 736 20966 d 2
- 0 20966 737 20967 d 2
- 0 20960 738 20970 d 2
- -1 20970 739 20971 d 2
- -2 20971 740 20972 d 2
- -1 20972 741 20973 d 2
- -1 20973 742 20975 d 2
- -1 20975 743 20976 d 2
- 0 20976 744 20977 d 2
- 0 20970 745 20980 d 2
- -1 20980 746 20981 d 2
- -2 20981 747 20982 d 2
- -1 20982 748 20983 d 2
- -1 20983 749 20985 d 2
- -1 20985 750 20986 d 2
- 0 20986 751 20987 d 2
- 0 20980 752 20990 d 2
- -1 20990 753 20991 d 2
- -2 20991 754 20992 d 2
- -1 20992 755 20993 d 2
- -1 20993 756 20995 d 2
- -1 20995 757 20996 d 2
- 0 20996 758 20997 d 2
- 0 20990 759 19871 d 2
- -1 19871 760 19872 d 2
- -2 19872 761 19873 d 2
- -1 19873 762 19874 d 2
- -1 19874 763 19876 d 2
- -1 19876 764 19877 d 2
- 0 19877 765 19878 d 2
- 0 19871 766 19881 d 2
- -1 19881 767 19882 d 2
- 0 19882 768 19883 d 2
- -1 19883 769 19884 d 2
- -1 19884 770 19886 d 2
- -1 19886 771 19887 d 2
- 0 19887 772 19888 d 2
- 0 19881 773 19891 d 2
- -1 19891 774 19892 d 2
- -2 19892 775 19893 d 2
- -1 19893 776 19894 d 2
- -1 19894 777 19896 d 2
- -1 19896 778 19897 d 2
- 0 19897 779 19898 d 2
- 0 19891 780 21001 d 2
- -1 21001 781 21002 d 2
- -2 21002 782 21003 d 2
- -1 21003 783 21004 d 2
- -1 21004 784 21006 d 2
- -1 21006 785 21007 d 2
- 0 21007 786 21008 d 2
- 0 21001 787 21011 d 2
- -1 21011 788 21012 d 2
- 0 21012 789 21013 d 2
- -1 21013 790 21014 d 2
- -1 21014 791 21016 d 2
- -1 21016 792 21017 d 2
- 0 21017 793 21018 d 2
- 0 21011 794 21021 d 2
- -1 21021 795 21022 d 2
- -2 21022 796 21023 d 2
- -1 21023 797 21024 d 2
- -1 21024 798 21026 d 2
- -1 21026 799 21027 d 2
- 0 21027 800 21028 d 2
- 0 21021 801 21032 d 2
- -1 21032 802 21033 d 2
- -2 21033 803 21034 d 2
- -1 21034 804 21035 d 2
- -1 21035 805 21037 d 2
- -1 21037 806 21038 d 2
- 0 21038 807 21039 d 2
- 0 21032 808 21042 d 2
- -1 21042 809 21043 d 2
- 0 21043 810 21044 d 2
- -1 21044 811 21045 d 2
- -1 21045 812 21047 d 2
- -1 21047 813 21048 d 2
- 0 21048 814 21049 d 2
- 0 21042 815 21052 d 2
- -1 21052 816 21053 d 2
- -2 21053 817 21054 d 2
- -1 21054 818 21055 d 2
- -1 21055 819 21057 d 2
- -1 21057 820 21058 d 2
- 0 21058 821 21059 d 2
- 0 21052 822 21063 d 2
- -1 21063 823 21064 d 2
- -2 21064 824 21065 d 2
- -1 21065 825 21066 d 2
- -1 21066 826 21068 d 2
- -1 21068 827 21069 d 2
- 0 21069 828 21070 d 2
- 0 21063 829 21073 d 2
- -1 21073 830 21074 d 2
- 0 21074 831 21075 d 2
- -1 21075 832 21076 d 2
- -1 21076 833 21078 d 2
- -1 21078 834 21079 d 2
- 0 21079 835 21080 d 2
- 0 21073 836 21083 d 2
- -1 21083 837 21084 d 2
- -2 21084 838 21085 d 2
- -1 21085 839 21086 d 2
- -1 21086 840 21088 d 2
- -1 21088 841 21089 d 2
- 0 21089 842 21090 d 2
- 0 21083 843 21094 d 2
- -1 21094 844 21095 d 2
- -2 21095 845 21096 d 2
- -1 21096 846 21097 d 2
- -1 21097 847 21099 d 2
- -1 21099 848 21100 d 2
- 0 21100 849 21101 d 2
- 0 21094 850 21104 d 2
- -1 21104 851 21105 d 2
- 0 21105 852 21106 d 2
- -1 21106 853 21107 d 2
- -1 21107 854 21109 d 2
- -1 21109 855 21110 d 2
- 0 21110 856 21111 d 2
- 0 21104 857 21114 d 2
- -1 21114 858 21115 d 2
- -2 21115 859 21116 d 2
- -1 21116 860 21117 d 2
- -1 21117 861 21119 d 2
- -1 21119 862 21120 d 2
- 0 21120 863 21121 d 2
- 0 21114 864 21125 d 2
- -1 21125 865 21126 d 2
- -2 21126 866 21127 d 2
- -1 21127 867 21128 d 2
- -1 21128 868 21130 d 2
- -1 21130 869 21131 d 2
- 0 21131 870 21132 d 2
- 0 21125 871 21135 d 2
- -1 21135 872 21136 d 2
- 0 21136 873 21137 d 2
- -1 21137 874 21138 d 2
- -1 21138 875 21140 d 2
- -1 21140 876 21141 d 2
- 0 21141 877 21142 d 2
- 0 21135 878 21145 d 2
- -1 21145 879 21146 d 2
- -2 21146 880 21147 d 2
- -1 21147 881 21148 d 2
- -1 21148 882 21150 d 2
- -1 21150 883 21151 d 2
- 0 21151 884 21152 d 2
- 0 21145 885 21156 d 2
- -1 21156 886 21157 d 2
- -2 21157 887 21158 d 2
- -1 21158 888 21159 d 2
- -1 21159 889 21161 d 2
- -1 21161 890 21162 d 2
- 0 21162 891 21163 d 2
- 0 21156 892 21166 d 2
- -1 21166 893 21167 d 2
- 0 21167 894 21168 d 2
- -1 21168 895 21169 d 2
- -1 21169 896 21171 d 2
- -1 21171 897 21172 d 2
- 0 21172 898 21173 d 2
- 0 21166 899 21176 d 2
- -1 21176 900 21177 d 2
- -2 21177 901 21178 d 2
- -1 21178 902 21179 d 2
- -1 21179 903 21181 d 2
- -1 21181 904 21182 d 2
- 0 21182 905 21183 d 2
- 0 21176 906 21187 d 2
- -1 21187 907 21188 d 2
- -2 21188 908 21189 d 2
- -1 21189 909 21190 d 2
- -1 21190 910 21192 d 2
- -1 21192 911 21193 d 2
- 0 21193 912 21194 d 2
- 0 21187 913 21197 d 2
- -1 21197 914 21198 d 2
- 0 21198 915 21199 d 2
- -1 21199 916 21200 d 2
- -1 21200 917 21202 d 2
- -1 21202 918 21203 d 2
- 0 21203 919 21204 d 2
- 0 21197 920 21207 d 2
- -1 21207 921 21208 d 2
- -2 21208 922 21209 d 2
- -1 21209 923 21210 d 2
- -1 21210 924 21212 d 2
- -1 21212 925 21213 d 2
- 0 21213 926 21214 d 2
- 0 21207 927 21218 d 2
- -1 21218 928 21219 d 2
- -2 21219 929 21220 d 2
- -1 21220 930 21221 d 2
- -1 21221 931 21223 d 2
- -1 21223 932 21224 d 2
- 0 21224 933 21225 d 2
- 0 21218 934 21228 d 2
- -1 21228 935 21229 d 2
- 0 21229 936 21230 d 2
- -1 21230 937 21231 d 2
- -1 21231 938 21233 d 2
- -1 21233 939 21234 d 2
- 0 21234 940 21235 d 2
- 0 21228 941 21238 d 2
- -1 21238 942 21239 d 2
- -2 21239 943 21240 d 2
- -1 21240 944 21241 d 2
- -1 21241 945 21243 d 2
- -1 21243 946 21244 d 2
- 0 21244 947 21245 d 2
- 0 21238 948 21249 d 2
- -1 21249 949 21250 d 2
- -2 21250 950 21251 d 2
- -1 21251 951 21252 d 2
- -1 21252 952 21254 d 2
- -1 21254 953 21255 d 2
- 0 21255 954 21256 d 2
- 0 21249 955 21259 d 2
- -1 21259 956 21260 d 2
- 0 21260 957 21261 d 2
- -1 21261 958 21262 d 2
- -1 21262 959 21264 d 2
- -1 21264 960 21265 d 2
- 0 21265 961 21266 d 2
- 0 21259 962 21269 d 2
- -1 21269 963 21270 d 2
- -2 21270 964 21271 d 2
- -1 21271 965 21272 d 2
- -1 21272 966 21274 d 2
- -1 21274 967 21275 d 2
- 0 21275 968 21276 d 2
- 0 21269 969 20468 d 2
- 0 21246 970 20468 d 2
- -4 20468 971 20469 d 2
- -5 20469 972 20470 d 2
- -4 20470 973 20471 d 2
- -4 20471 974 20473 d 2
- -4 20473 975 20474 d 2
- -4 20474 976 20475 d 2
- 60 20685 977 20319 d 2
- 60 20685 978 20321 d 2
- 60 20685 979 20322 d 2
- 60 20685 980 20323 d 2
- 70 18571 981 20325 d 2
- 70 18571 982 20326 d 2
- 70 18571 983 20327 d 2
- 80 20752 984 20333 d 2
- 80 20752 985 20330 d 2
- 80 20752 986 20331 d 2
- 40 20793 987 20337 d 2
- 40 20793 988 20338 d 2
- 40 20793 989 20334 d 2
- 40 20793 990 20335 d 2
- 40 20793 991 20339 d 2
- 40 20793 992 20340 d 2
- -80 18580 993 20428 d 2
- 40 20846 994 20345 d 2
- 40 20846 995 20349 d 2
- 40 20846 996 20350 d 2
- 40 20846 997 20351 d 2
- 40 20846 998 20352 d 2
- 40 20846 999 20353 d 2
- 40 20846 1000 20354 d 2
- 40 20846 1001 20356 d 2
- 40 20846 1002 20362 d 2
- 40 20846 1003 20346 d 2
- 40 20846 1004 20347 d 2
- 40 20846 1005 20357 d 2
- 40 20846 1006 20358 d 2
- 40 20846 1007 20359 d 2
- 40 20846 1008 20360 d 2
- 0 20875 1009 20407 d 2
- 0 20875 1010 20408 d 2
- 0 20408 1011 20364 d 3
- 0 19745 1012 20393 d 2
- 8 20408 1013 20393 d 3
- 0 20393 1014 20394 d 3
- 0 20916 1015 20395 d 2
- 8 20393 1016 20395 d 3
- 0 20395 1017 20396 d 3
- 0 20957 1018 20397 d 2
- 8 20395 1019 20397 d 3
- 0 20397 1020 20398 d 3
- 0 19868 1021 20399 d 2
- 6 20397 1022 20399 d 3
- 0 20399 1023 20400 d 3
- 0 20998 1024 20401 d 2
- 6 20399 1025 20401 d 3
- 0 20401 1026 20402 d 3
- 0 21029 1027 20403 d 2
- 6 20401 1028 20403 d 3
- 0 20403 1029 20404 d 3
- 0 21060 1030 20405 d 2
- 6 20403 1031 20405 d 3
- 0 20405 1032 20406 d 3
- 0 21091 1033 20409 d 2
- 6 20405 1034 20409 d 3
- 0 20409 1035 20410 d 3
- 0 21122 1036 20411 d 2
- 6 20409 1037 20411 d 3
- 0 20411 1038 20412 d 3
- 0 21153 1039 20413 d 2
- 6 20411 1040 20413 d 3
- 0 20413 1041 20414 d 3
- 0 21184 1042 20415 d 2
- 6 20413 1043 20415 d 3
- 0 20415 1044 20416 d 3
- 0 21215 1045 20417 d 2
- 6 20415 1046 20417 d 3
- 0 20417 1047 20418 d 3
- 0 21246 1048 20419 d 2
- 6 20417 1049 20419 d 3
- 0 20419 1050 20420 d 3
- 10 20419 1051 20421 d 0
- 0 20421 1052 20422 d 3
- 15 20421 1053 20423 d 0
- 0 20423 1054 20424 d 3
- 15 20423 1055 20425 d 0
- 0 20425 1056 20426 d 3
- 20 20432 1057 20372 d 2
- 20 20432 1058 20375 d 2
- 0 18825 1059 20491 d 0
- -200 20491 1060 20492 d 2
- -200 20425 1061 20493 d 2
- -120 18763 1062 20478 d 2
- 0 18551 1063 20478 d 2
- 0 20340 1064 20483 d 2
- 0 18631 1065 20486 d 2
- -195 20492 1066 20485 d 2
- -120 18667 1067 20480 d 2
- 0 19236 1068 20481 d 2
- -90 18633 1069 20487 d 2
- 0 19213 1070 20494 d 2
- -15 18631 1071 20495 d 0
- -15 18631 1072 20496 d 0
- 0 19213 1073 20497 d 2
- -15 18631 1074 20498 d 0
- -10 18661 1075 20513 d 0
- -30 20513 1076 20514 d 2
- 0 20335 1077 20515 d 2
- 70 18631 1078 20519 d 3
- 0 20519 1079 20520 d 2
- -40 20372 1080 20521 d 3
- -30 18661 1081 20509 d 0
- -30 18661 1082 20510 d 0
- -30 18661 1083 20511 d 0
- -30 18661 1084 20512 d 0
- -30 18661 1085 20529 d 0
- -30 18661 1086 20530 d 0
- 0 18631 1087 20542 d 2
- 0 19545 1088 20505 d 2
- 0 20542 1089 20505 d 2
- 0 20505 1090 20506 d 2
- 0 20506 1091 20507 d 2
- 0 20507 1092 20508 d 2
- 10 20432 1093 18598 d 2
- -270 18598 1094 18600 d 2
- 0 18631 1095 20541 d 2
- 0 18550 1096 20541 d 2
- 20 18654 1097 18603 d 3
- 5 18655 1098 18769 d 3
- 20 18660 1099 18770 d 3
- 30 18656 1100 18772 d 3
- 50 20541 1101 18771 d 2
- 0 20426 1102 20536 d 3
- 0 18599 1103 20537 d 3
- 0 20427 1104 20537 d 3
- 5 20429 1105 20540 d 3
- 0 18602 1106 20534 d 2
- 0 18599 1107 20534 d 2
- 0 18597 1108 20534 d 2
- 0 20429 1109 20534 d 2
- 0 20427 1110 20534 d 2
- 0 18567 1111 20534 d 2
- 0 20535 1112 20534 d 2
